# 29561_10193_3312021105942AM813182-v2013

How a schedule from MS Project changed from version to version. A marks actual dates.

## Version 1 (saved 2021-03-31, file blank.mpp)

| ID | WBS | Task | Duration | Start | Finish | Predecessors | Total float |
| --- | --- | --- | --- | --- | --- | --- | --- |
| 1 | 1 | **Market Assessment** | 51d? | 2021-03-31 | 2021-06-10 |  | 0d |
| 2 |  | Evaluate market | 12d? | 2021-03-31 | 2021-04-16 |  | 0d |
| 3 |  | Develop Business opportunity | 14d? | 2021-04-16 | 2021-05-06 | 2 | 0d |
| 4 |  | Customer preference study | 21d? | 2021-05-06 | 2021-06-04 | 3 | 0d |
| 5 |  | Business evaluation (NPV, etc.) | 4d? | 2021-06-04 | 2021-06-10 | 4 | 0d |
| 6 | 2 | **Procurement** | 80d? | 2021-10-15 | 2022-02-04 |  | 3.5d |
| 7 |  | Identify vendors | 7d? | 2021-10-15 | 2021-10-26 | 26, 73 | 11d |
| 8 |  | Develop and Issue RFQ | 6d? | 2021-10-15 | 2021-10-25 | 73, 26 | 12d |
| 9 |  | Issue sample (production equivalent) | 5d? | 2021-11-10 | 2021-11-17 | 26, 7, 8, 74 | 0d |
| 10 |  | Assess RFQ responses and select vendors | 10d? | 2022-01-21 | 2022-02-04 | 78, 14 | 3.5d |
| 11 | 3 | **Supplier Quality** | 47d? | 2021-11-17 | 2022-01-21 |  | 0d |
| 12 |  | Perform supplier process capability | 14d? | 2021-11-17 | 2021-12-07 | 9 | 0d |
| 13 |  | Approve sample parts | 8d? | 2021-12-07 | 2021-12-17 | 12, 75 | 7d |
| 14 |  | Qualify Supplier | 10d? | 2022-01-07 | 2022-01-21 | 77, 13 | 0d |
| 15 | 4 | **Design** | 65d? | 2021-06-10 | 2021-09-09 |  | 0d |
| 16 |  | Design and development plan | 6d? | 2021-06-10 | 2021-06-18 | 5, 69 | 0d |
| 17 |  | Design specs. | 22d? | 2021-06-18 | 2021-07-20 | 16 | 0d |
| 18 |  | Identify testing requirements | 10d? | 2021-07-20 | 2021-08-03 | 17, 70, 50 | 8d |
| 19 |  | Risk analysis | 10d? | 2021-08-03 | 2021-08-17 | 18 | 8d |
| 20 |  | Design labeling | 5d? | 2021-08-27 | 2021-09-03 | 19, 71 | 0d |
| 21 |  | Approve design | 4d? | 2021-09-03 | 2021-09-09 | 20 | 0d |
| 22 | 5 | **Engineering** | 93d? | 2021-09-09 | 2022-01-18 |  | 0d |
| 23 |  | Initial engineering specs. | 5d? | 2021-09-09 | 2021-09-16 | 21 | 0d |
| 24 |  | Design verification activities | 7d? | 2021-09-16 | 2021-09-27 | 23, 72 | 0d |
| 25 |  | Verification design review | 4d? | 2021-09-27 | 2021-10-01 | 24 | 0d |
| 26 |  | Release pre-production specifications | 10d? | 2021-10-01 | 2021-10-15 | 25 | 0d |
| 27 |  | Build functional model | 18d? | 2021-10-15 | 2021-11-10 | 26, 73 | 0d |
| 28 |  | Design validation activities | 5d? | 2021-12-07 | 2021-12-14 | 75, 27, 12 | 10d |
| 29 |  | Validation design review | 4d? | 2021-12-28 | 2022-01-03 | 28, 76 | 0d |
| 30 |  | Approve model design | 4d? | 2022-01-03 | 2022-01-07 | 29 | 0d |
| 31 |  | Design transfer activities | 7d? | 2022-01-07 | 2022-01-18 | 30, 36, 77 | 0d |
| 32 | 6 | **Engineering Quality** | 70d? | 2021-10-15 | 2022-01-21 |  | 0d |
| 33 |  | Evaluate design specifications | 10d? | 2021-10-15 | 2021-10-29 | 73, 26 | 8d |
| 34 |  | Develop testing protocol for prototype | 8d? | 2021-11-10 | 2021-11-22 | 26, 33, 74 | 11d |
| 35 |  | Test prototype | 10d? | 2021-12-07 | 2021-12-21 | 75, 34, 27, 12 | 5d |
| 36 |  | Evaluate results of tests and identify weaknesses | 6d? | 2021-12-28 | 2022-01-05 | 76, 35 | 2d |
| 37 |  | Product release meetings | 3d? | 2022-01-18 | 2022-01-21 | 31, 36, 30 | 0d |
| 38 | 7 | **Manufacturing** | 68.5d? | 2021-12-07 | 2022-03-11 |  | 0d |
| 39 |  | Process engineering plan | 15d? | 2021-12-07 | 2021-12-28 | 27, 12, 75 | 0d |
| 40 |  | Develop production plan | 6d? | 2022-01-07 | 2022-01-17 | 77, 36, 29, 39 | 4d |
| 41 |  | Develop production control plan | 8.5d? | 2022-01-21 | 2022-02-02 | 40, 14, 78 | 0d |
| 42 |  | Approve production parts | 5d? | 2022-02-02 | 2022-02-09 | 41 | 0d |
| 43 |  | Contracting for deliveries | 8d? | 2022-02-09 | 2022-02-21 | 42, 10 | 0d |
| 44 |  | Submit production purchase order | 2d? | 2022-02-21 | 2022-02-23 | 43, 79 | 0d |
| 45 |  | Production pilot test | 5d? | 2022-02-23 | 2022-03-02 | 44, 37 | 0d |
| 46 |  | Debugging production system | 4d? | 2022-03-02 | 2022-03-08 | 45 | 0d |
| 47 |  | Production release | 3d? | 2022-03-08 | 2022-03-11 | 46 | 0d |
| 48 | 8 | **Commercialization** | 199.5d? | 2021-06-10 | 2022-03-16 |  | 0d |
| 49 |  | Develop preliminary marketing plan | 5d? | 2021-06-10 | 2021-06-17 | 5, 69 | 8d |
| 50 |  | Develop marketing program | 15d? | 2021-06-17 | 2021-07-08 | 49 | 8d |
| 51 |  | Train sales team | 22d? | 2021-07-20 | 2021-08-19 | 50, 70 | 6d |
| 52 |  | Advertising campaign | 28d? | 2021-07-20 | 2021-08-27 | 70, 50 | 0d |
| 53 |  | Show functional model at trade show | 3d? | 2021-12-07 | 2021-12-10 | 50, 75, 12, 27 | 12d |
| 54 |  | Product launch | 3d? | 2022-03-11 | 2022-03-16 | 47, 51, 52, 53 | 0d |
| 55 | 9 | **Project Management** | 243.5d? | 2021-03-31 | 2022-03-07 |  | 7d |
| 56 |  | Project Management Period 1 | 25d? | 2021-03-31 | 2021-05-05 |  | 26d |
| 57 |  | Project Management Period 2 | 14d? | 2021-06-10 | 2021-06-30 | 56, 69 | 14d |
| 58 |  | Project Management Period 3 | 14d? | 2021-07-20 | 2021-08-09 | 70, 57 | 14d |
| 59 |  | Project Management Period 4 | 13d? | 2021-08-27 | 2021-09-15 | 58, 71 | 1d |
| 60 |  | Project Management Period 5 | 15d? | 2021-09-16 | 2021-10-07 | 72, 59 | 6d |
| 61 |  | Project Management Period 6 | 9d? | 2021-10-15 | 2021-10-28 | 60, 73 | 9d |
| 62 |  | Project Management Period 7 | 11d? | 2021-11-10 | 2021-11-25 | 74, 61 | 8d |
| 63 |  | Project Management Period 8 | 3d? | 2021-12-07 | 2021-12-10 | 62, 75 | 12d |
| 64 |  | Project Management Period 9 | 4d? | 2021-12-28 | 2022-01-03 | 76, 63 | 4d |
| 65 |  | Project Management Period 10 | 5d? | 2022-01-07 | 2022-01-14 | 64, 77 | 5d |
| 66 |  | Project Management Period 11 | 13d? | 2022-01-21 | 2022-02-09 | 78, 65 | 8.5d |
| 67 |  | Project Management Period 12 | 10d? | 2022-02-21 | 2022-03-07 | 66, 79 | 7d |
| 68 | 10 | **Milestones** | 199.5d? | 2021-06-10 | 2022-03-16 |  | 0d |
| 69 |  | Milestone 1 | 0d? | 2021-06-10 | 2021-06-10 | 56, 5 | 0d |
| 70 |  | Milestone 2 | 0d? | 2021-07-20 | 2021-07-20 | 17, 50, 57 | 0d |

| ID | Task | Duration | Start | Finish | Predecessors | Total float |
| --- | --- | --- | --- | --- | --- | --- |
| 71 | Milestone 3 | 0d? | 2021-08-27 | 2021-08-27 | 58, 52, 51, 19 | 0d |
| 72 | Milestone 4 | 0d? | 2021-09-16 | 2021-09-16 | 23, 59 | 0d |
| 73 | Milestone 5 | 0d? | 2021-10-15 | 2021-10-15 | 60, 26 | 0d |
| 74 | Milestone 6 | 0d? | 2021-11-10 | 2021-11-10 | 27, 33, 8, 7, 61 | 0d |
| 75 | Milestone 7 | 0d? | 2021-12-07 | 2021-12-07 | 62, 12, 34 | 0d |
| 76 | Milestone 8 | 0d? | 2021-12-28 | 2021-12-28 | 28, 39, 13, 63, 53, 35 | 0d |
| 77 | Milestone 9 | 0d? | 2022-01-07 | 2022-01-07 | 64, 36, 30 | 0d |
| 78 | Milestone 10 | 0d? | 2022-01-21 | 2022-01-21 | 40, 37, 14, 65 | 0d |
| 79 | Milestone 11 | 0d? | 2022-02-21 | 2022-02-21 | 66, 43 | 0d |
| 80 | Milestone 12 | 0d? | 2022-03-16 | 2022-03-16 | 67, 54 | 0d |

## Version 2 (saved 2021-04-11, file Main.mpp)

Note of the change: Update Main.mpp

Last finish 2022-03-16 → 2022-02-07 (-37d).

Changed:

| ID | Task | Start | Finish | Duration | Total float | Other |
| --- | --- | --- | --- | --- | --- | --- |
| 1 | **Market Assessment** |  | 2021-06-10 → 2021-05-05 (-36d) | 51d? → 25.5d? | 0d → 12d | baseline finish 2021-06-10 → 2021-05-05 |
| 2 | Evaluate market |  | 2021-04-16 → 2021-04-08 (-8d) | 12d? → 6d? | 0d → 12d | resources none → Junior Marketing Specialist; Marketing Manager; baseline finish 2021-04-16 → 2021-04-08 |
| 3 | Develop Business opportunity | 2021-04-16 → 2021-04-08 (-8d) | 2021-05-06 → 2021-04-19 (-17d) | 14d? → 7d? | 0d → 12d | resources none → Junior Marketing Specialist; Marketing Manager; baseline start 2021-04-16 → 2021-04-08; baseline finish 2021-05-06 → 2021-04-19 |
| 4 | Customer preference study | 2021-05-06 → 2021-04-19 (-17d) | 2021-06-04 → 2021-05-03 (-32d) | 21d? → 10.5d? | 0d → 12d | resources none → Junior Marketing Specialist; Marketing Manager; baseline start 2021-05-06 → 2021-04-19; baseline finish 2021-06-04 → 2021-05-03 |
| 5 | Business evaluation (NPV, etc.) | 2021-06-04 → 2021-05-03 (-32d) | 2021-06-10 → 2021-05-05 (-36d) | 4d? → 2d? | 0d → 12d | resources none → Junior Marketing Specialist; Marketing Manager; baseline start 2021-06-04 → 2021-05-03; baseline finish 2021-06-10 → 2021-05-05 |
| 6 | **Procurement** | 2021-10-15 → 2021-08-20 (-56d) | 2022-02-04 → 2021-12-28 (-38d) | 80d? → 92d? |  | baseline start 2021-10-15 → 2021-08-20; baseline finish 2022-02-04 → 2021-12-28 |
| 7 | Identify vendors | 2021-10-15 → 2021-08-20 (-56d) | 2021-10-26 → 2021-08-31 (-56d) |  | 11d → 23d | resources none → Junior Marketing Specialist; baseline start 2021-10-15 → 2021-08-20; baseline finish 2021-10-26 → 2021-08-31 |
| 8 | Develop and Issue RFQ | 2021-10-15 → 2021-08-20 (-56d) | 2021-10-25 → 2021-09-08 (-47d) |  | 12d → 17.38d | resources none → Junior Marketing Specialist; baseline start 2021-10-15 → 2021-08-20; baseline finish 2021-10-25 → 2021-09-08 |
| 9 | Issue sample (production equivalent) | 2021-11-10 → 2021-09-15 (-56d) | 2021-11-17 → 2021-09-22 (-56d) |  | 0d → 12d | resources none → Quality Engineer; baseline start 2021-11-10 → 2021-09-15; baseline finish 2021-11-17 → 2021-09-22 |
| 10 | Assess RFQ responses and select vendors | 2022-01-21 → 2021-12-14 (-38d) | 2022-02-04 → 2021-12-28 (-38d) |  |  | resources none → Quality Engineer; baseline start 2022-01-21 → 2021-12-14; baseline finish 2022-02-04 → 2021-12-28 |
| 11 | **Supplier Quality** | 2021-11-17 → 2021-09-22 (-56d) | 2022-01-21 → 2021-11-26 (-56d) |  | 0d → 12d | baseline start 2021-11-17 → 2021-09-22; baseline finish 2022-01-21 → 2021-11-26 |
| 12 | Perform supplier process capability | 2021-11-17 → 2021-09-22 (-56d) | 2021-12-07 → 2021-10-12 (-56d) |  | 0d → 12d | resources none → Quality Engineer; baseline start 2021-11-17 → 2021-09-22; baseline finish 2021-12-07 → 2021-10-12 |
| 13 | Approve sample parts | 2021-12-07 → 2021-10-12 (-56d) | 2021-12-17 → 2021-10-22 (-56d) |  | 7d → 19d | resources none → Quality Engineer; baseline start 2021-12-07 → 2021-10-12; baseline finish 2021-12-17 → 2021-10-22 |
| 14 | Qualify Supplier | 2022-01-07 → 2021-11-12 (-56d) | 2022-01-21 → 2021-11-26 (-56d) |  | 0d → 12d | resources none → Quality Engineer; baseline start 2022-01-07 → 2021-11-12; baseline finish 2022-01-21 → 2021-11-26 |
| 15 | **Design** | 2021-06-10 → 2021-05-05 (-36d) | 2021-09-09 → 2021-07-15 (-56d) | 65d? → 51d? | 0d → 12d | baseline start 2021-06-10 → 2021-05-05; baseline finish 2021-09-09 → 2021-07-15 |
| 16 | Design and development plan | 2021-06-10 → 2021-05-05 (-36d) | 2021-06-18 → 2021-05-10 (-39d) | 6d? → 3d? | 0d → 12d | resources none → Junior Product Designer; Senior Product Designer; baseline start 2021-06-10 → 2021-05-05; baseline finish 2021-06-18 → 2021-05-10 |
| 17 | Design specs. | 2021-06-18 → 2021-05-10 (-39d) | 2021-07-20 → 2021-05-25 (-56d) | 22d? → 11d? | 0d → 12d | resources none → Junior Product Designer; Senior Product Designer; baseline start 2021-06-18 → 2021-05-10; baseline finish 2021-07-20 → 2021-05-25 |
| 18 | Identify testing requirements | 2021-07-20 → 2021-05-25 (-56d) | 2021-08-03 → 2021-06-08 (-56d) |  | 8d → 20d | resources none → Junior Product Designer; baseline start 2021-07-20 → 2021-05-25; baseline finish 2021-08-03 → 2021-06-08 |
| 19 | Risk analysis | 2021-08-03 → 2021-06-08 (-56d) | 2021-08-17 → 2021-06-22 (-56d) |  | 8d → 20d | resources none → Junior Product Designer; baseline start 2021-08-03 → 2021-06-08; baseline finish 2021-08-17 → 2021-06-22 |
| 20 | Design labeling | 2021-08-27 → 2021-07-02 (-56d) | 2021-09-03 → 2021-07-09 (-56d) |  | 0d → 12d | resources none → Junior Product Designer; baseline start 2021-08-27 → 2021-07-02; baseline finish 2021-09-03 → 2021-07-09 |
| 21 | Approve design | 2021-09-03 → 2021-07-09 (-56d) | 2021-09-09 → 2021-07-15 (-56d) |  | 0d → 12d | resources none → Junior Product Designer; baseline start 2021-09-03 → 2021-07-09; baseline finish 2021-09-09 → 2021-07-15 |
| 22 | **Engineering** | 2021-09-09 → 2021-07-15 (-56d) | 2022-01-18 → 2021-11-23 (-56d) |  | 0d → 12d | baseline start 2021-09-09 → 2021-07-15; baseline finish 2022-01-18 → 2021-11-23 |
| 23 | Initial engineering specs. | 2021-09-09 → 2021-07-15 (-56d) | 2021-09-16 → 2021-07-22 (-56d) |  | 0d → 12d | resources none → Engineer; baseline start 2021-09-09 → 2021-07-15; baseline finish 2021-09-16 → 2021-07-22 |
| 24 | Design verification activities | 2021-09-16 → 2021-07-22 (-56d) | 2021-09-27 → 2021-08-02 (-56d) |  | 0d → 12d | resources none → Engineer; baseline start 2021-09-16 → 2021-07-22; baseline finish 2021-09-27 → 2021-08-02 |
| 25 | Verification design review | 2021-09-27 → 2021-08-02 (-56d) | 2021-10-01 → 2021-08-06 (-56d) |  | 0d → 12d | resources none → Engineer; baseline start 2021-09-27 → 2021-08-02; baseline finish 2021-10-01 → 2021-08-06 |
| 26 | Release pre-production specifications | 2021-10-01 → 2021-08-06 (-56d) | 2021-10-15 → 2021-08-20 (-56d) |  | 0d → 12d | resources none → Engineer; baseline start 2021-10-01 → 2021-08-06; baseline finish 2021-10-15 → 2021-08-20 |
| 27 | Build functional model | 2021-10-15 → 2021-08-20 (-56d) | 2021-11-10 → 2021-09-15 (-56d) |  | 0d → 12d | resources none → Engineer; baseline start 2021-10-15 → 2021-08-20; baseline finish 2021-11-10 → 2021-09-15 |
| 28 | Design validation activities | 2021-12-07 → 2021-10-12 (-56d) | 2021-12-14 → 2021-10-19 (-56d) |  | 10d → 22d | resources none → Engineer; baseline start 2021-12-07 → 2021-10-12; baseline finish 2021-12-14 → 2021-10-19 |
| 29 | Validation design review | 2021-12-28 → 2021-11-02 (-56d) | 2022-01-03 → 2021-11-08 (-56d) |  | 0d → 12d | resources none → Engineer; baseline start 2021-12-28 → 2021-11-02; baseline finish 2022-01-03 → 2021-11-08 |
| 30 | Approve model design | 2022-01-03 → 2021-11-08 (-56d) | 2022-01-07 → 2021-11-12 (-56d) |  | 0d → 12d | resources none → Engineer; baseline start 2022-01-03 → 2021-11-08; baseline finish 2022-01-07 → 2021-11-12 |
| 31 | Design transfer activities | 2022-01-07 → 2021-11-12 (-56d) | 2022-01-18 → 2021-11-23 (-56d) |  | 0d → 12d | resources none → Engineer; baseline start 2022-01-07 → 2021-11-12; baseline finish 2022-01-18 → 2021-11-23 |
| 32 | **Engineering Quality** | 2021-10-15 → 2021-08-20 (-56d) | 2022-01-21 → 2021-12-14 (-38d) | 70d? → 82d? |  | baseline start 2021-10-15 → 2021-08-20; baseline finish 2022-01-21 → 2021-12-14 |
| 33 | Evaluate design specifications | 2021-10-15 → 2021-08-20 (-56d) | 2021-10-29 → 2021-09-03 (-56d) |  | 8d → 20d | resources none → Quality Engineer; baseline start 2021-10-15 → 2021-08-20; baseline finish 2021-10-29 → 2021-09-03 |
| 34 | Develop testing protocol for prototype | 2021-11-10 → 2021-09-15 (-56d) | 2021-11-22 → 2021-09-27 (-56d) |  | 11d → 23d | resources none → Engineer; baseline start 2021-11-10 → 2021-09-15; baseline finish 2021-11-22 → 2021-09-27 |
| 35 | Test prototype | 2021-12-07 → 2021-10-12 (-56d) | 2021-12-21 → 2021-10-26 (-56d) |  | 5d → 17d | resources none → Quality Engineer; baseline start 2021-12-07 → 2021-10-12; baseline finish 2021-12-21 → 2021-10-26 |
| 36 | Evaluate results of tests and identify weaknesses | 2021-12-28 → 2021-11-02 (-56d) | 2022-01-05 → 2021-11-10 (-56d) |  | 2d → 14d | resources none → Quality Engineer; baseline start 2021-12-28 → 2021-11-02; baseline finish 2022-01-05 → 2021-11-10 |
| 37 | Product release meetings | 2022-01-18 → 2021-12-09 (-40d) | 2022-01-21 → 2021-12-14 (-38d) |  |  | constraint none → start no earlier than 2021-12-09; resources none → Project Manager; baseline start 2022-01-18 → 2021-12-09; baseline finish 2022-01-21 → 2021-12-14 |
| 38 | **Manufacturing** | 2021-12-07 → 2021-10-12 (-56d) | 2022-03-11 → 2022-02-02 (-37d) | 68.5d? → 80.5d? |  | baseline start 2021-12-07 → 2021-10-12; baseline finish 2022-03-11 → 2022-02-02 |
| 39 | Process engineering plan | 2021-12-07 → 2021-10-12 (-56d) | 2021-12-28 → 2021-11-02 (-56d) |  | 0d → 12d | resources none → Operations Specialist; baseline start 2021-12-07 → 2021-10-12; baseline finish 2021-12-28 → 2021-11-02 |
| 40 | Develop production plan | 2022-01-07 → 2021-11-12 (-56d) | 2022-01-17 → 2021-11-22 (-56d) |  | 4d → 16d | resources none → Operations Specialist; baseline start 2022-01-07 → 2021-11-12; baseline finish 2022-01-17 → 2021-11-22 |
| 41 | Develop production control plan | 2022-01-21 → 2021-12-14 (-38d) | 2022-02-02 → 2021-12-27 (-37d) |  |  | resources none → Operations Specialist; baseline start 2022-01-21 → 2021-12-14; baseline finish 2022-02-02 → 2021-12-27 |
| 42 | Approve production parts | 2022-02-02 → 2021-12-27 (-37d) | 2022-02-09 → 2022-01-03 (-37d) |  |  | resources none → Operations Specialist; baseline start 2022-02-02 → 2021-12-27; baseline finish 2022-02-09 → 2022-01-03 |
| 43 | Contracting for deliveries | 2022-02-09 → 2022-01-03 (-37d) | 2022-02-21 → 2022-01-13 (-39d) |  |  | resources none → Operations Specialist; baseline start 2022-02-09 → 2022-01-03; baseline finish 2022-02-21 → 2022-01-13 |
| 44 | Submit production purchase order | 2022-02-21 → 2022-01-13 (-39d) | 2022-02-23 → 2022-01-17 (-37d) |  |  | resources none → Operations Specialist; baseline start 2022-02-21 → 2022-01-13; baseline finish 2022-02-23 → 2022-01-17 |
| 45 | Production pilot test | 2022-02-23 → 2022-01-17 (-37d) | 2022-03-02 → 2022-01-24 (-37d) |  |  | resources none → Operations Specialist; baseline start 2022-02-23 → 2022-01-17; baseline finish 2022-03-02 → 2022-01-24 |
| 46 | Debugging production system | 2022-03-02 → 2022-01-24 (-37d) | 2022-03-08 → 2022-01-28 (-39d) |  |  | resources none → Operations Specialist; baseline start 2022-03-02 → 2022-01-24; baseline finish 2022-03-08 → 2022-01-28 |
| 47 | Production release | 2022-03-08 → 2022-01-28 (-39d) | 2022-03-11 → 2022-02-02 (-37d) |  |  | resources none → Operations Specialist; baseline start 2022-03-08 → 2022-01-28; baseline finish 2022-03-11 → 2022-02-02 |
| 48 | **Commercialization** | 2021-06-10 → 2021-05-05 (-36d) | 2022-03-16 → 2022-02-07 (-37d) | 199.5d? → 197.5d? |  | baseline start 2021-06-10 → 2021-05-05; baseline finish 2022-03-16 → 2022-02-07 |
| 49 | Develop preliminary marketing plan | 2021-06-10 → 2021-05-05 (-36d) | 2021-06-17 → 2021-05-10 (-38d) | 5d? → 2.5d? | 8d → 16d | resources none → Junior Marketing Specialist; Marketing Manager; baseline start 2021-06-10 → 2021-05-05; baseline finish 2021-06-17 → 2021-05-10 |
| 50 | Develop marketing program | 2021-06-17 → 2021-05-10 (-38d) | 2021-07-08 → 2021-05-19 (-50d) | 15d? → 7.5d? | 8d → 16d | resources none → Junior Marketing Specialist; Marketing Manager; baseline start 2021-06-17 → 2021-05-10; baseline finish 2021-07-08 → 2021-05-19 |
| 51 | Train sales team | 2021-07-20 → 2021-05-25 (-56d) | 2021-08-19 → 2021-06-24 (-56d) |  | 6d → 18d | resources none → Junior Marketing Specialist; baseline start 2021-07-20 → 2021-05-25; baseline finish 2021-08-19 → 2021-06-24 |
| 52 | Advertising campaign | 2021-07-20 → 2021-05-25 (-56d) | 2021-08-27 → 2021-07-02 (-56d) |  | 0d → 12d | resources none → Marketing Manager; baseline start 2021-07-20 → 2021-05-25; baseline finish 2021-08-27 → 2021-07-02 |
| 53 | Show functional model at trade show | 2021-12-07 → 2021-10-12 (-56d) | 2021-12-10 → 2021-10-15 (-56d) |  | 12d → 24d | resources none → Junior Marketing Specialist; baseline start 2021-12-07 → 2021-10-12; baseline finish 2021-12-10 → 2021-10-15 |
| 54 | Product launch | 2022-03-11 → 2022-02-02 (-37d) | 2022-03-16 → 2022-02-07 (-37d) |  |  | resources none → Junior Marketing Specialist; baseline start 2022-03-11 → 2022-02-02; baseline finish 2022-03-16 → 2022-02-07 |
| 55 | **Project Management** |  | 2022-03-07 → 2022-01-27 (-39d) | 243.5d? → 216d? |  | baseline finish 2022-03-07 → 2022-01-27 |
| 56 | Project Management Period 1 |  |  |  | 26d → 12.5d | resources none → Project Manager |
| 57 | Project Management Period 2 | 2021-06-10 → 2021-05-05 (-36d) | 2021-06-30 → 2021-05-25 (-36d) |  | 14d → 12d | resources none → Project Manager; baseline start 2021-06-10 → 2021-05-05; baseline finish 2021-06-30 → 2021-05-25 |
| 58 | Project Management Period 3 | 2021-07-20 → 2021-05-25 (-56d) | 2021-08-09 → 2021-06-14 (-56d) |  | 14d → 26d | resources none → Project Manager; baseline start 2021-07-20 → 2021-05-25; baseline finish 2021-08-09 → 2021-06-14 |
| 59 | Project Management Period 4 | 2021-08-27 → 2021-07-02 (-56d) | 2021-09-15 → 2021-07-21 (-56d) |  | 1d → 13d | resources none → Project Manager; baseline start 2021-08-27 → 2021-07-02; baseline finish 2021-09-15 → 2021-07-21 |
| 60 | Project Management Period 5 | 2021-09-16 → 2021-07-22 (-56d) | 2021-10-07 → 2021-08-12 (-56d) |  | 6d → 18d | resources none → Project Manager; baseline start 2021-09-16 → 2021-07-22; baseline finish 2021-10-07 → 2021-08-12 |
| 61 | Project Management Period 6 | 2021-10-15 → 2021-08-20 (-56d) | 2021-10-28 → 2021-09-02 (-56d) |  | 9d → 21d | resources none → Project Manager; baseline start 2021-10-15 → 2021-08-20; baseline finish 2021-10-28 → 2021-09-02 |
| 62 | Project Management Period 7 | 2021-11-10 → 2021-09-15 (-56d) | 2021-11-25 → 2021-09-30 (-56d) |  | 8d → 20d | resources none → Project Manager; baseline start 2021-11-10 → 2021-09-15; baseline finish 2021-11-25 → 2021-09-30 |
| 63 | Project Management Period 8 | 2021-12-07 → 2021-10-12 (-56d) | 2021-12-10 → 2021-10-15 (-56d) |  | 12d → 24d | resources none → Project Manager; baseline start 2021-12-07 → 2021-10-12; baseline finish 2021-12-10 → 2021-10-15 |
| 64 | Project Management Period 9 | 2021-12-28 → 2021-11-02 (-56d) | 2022-01-03 → 2021-11-08 (-56d) |  | 4d → 16d | resources none → Project Manager; baseline start 2021-12-28 → 2021-11-02; baseline finish 2022-01-03 → 2021-11-08 |
| 65 | Project Management Period 10 | 2022-01-07 → 2021-11-12 (-56d) | 2022-01-14 → 2021-11-19 (-56d) |  | 5d → 17d | resources none → Project Manager; baseline start 2022-01-07 → 2021-11-12; baseline finish 2022-01-14 → 2021-11-19 |
| 66 | Project Management Period 11 | 2022-01-21 → 2021-12-14 (-38d) | 2022-02-09 → 2021-12-31 (-40d) |  |  | resources none → Project Manager; baseline start 2022-01-21 → 2021-12-14; baseline finish 2022-02-09 → 2021-12-31 |
| 67 | Project Management Period 12 | 2022-02-21 → 2022-01-13 (-39d) | 2022-03-07 → 2022-01-27 (-39d) |  |  | resources none → Project Manager; baseline start 2022-02-21 → 2022-01-13; baseline finish 2022-03-07 → 2022-01-27 |
| 68 | **Milestones** | 2021-06-10 → 2021-05-05 (-36d) | 2022-03-16 → 2022-02-07 (-37d) | 199.5d? → 197.5d? |  | baseline start 2021-06-10 → 2021-05-05; baseline finish 2022-03-16 → 2022-02-07 |
| 69 | Milestone 1 | 2021-06-10 → 2021-05-05 (-36d) | 2021-06-10 → 2021-05-05 (-36d) |  | 0d → 12d | baseline start 2021-06-10 → 2021-05-05; baseline finish 2021-06-10 → 2021-05-05 |
| 70 | Milestone 2 | 2021-07-20 → 2021-05-25 (-56d) | 2021-07-20 → 2021-05-25 (-56d) |  | 0d → 12d | baseline start 2021-07-20 → 2021-05-25; baseline finish 2021-07-20 → 2021-05-25 |

| ID | Task | Start | Finish | Total float | Other |
| --- | --- | --- | --- | --- | --- |
| 71 | Milestone 3 | 2021-08-27 → 2021-07-02 (-56d) | 2021-08-27 → 2021-07-02 (-56d) | 0d → 12d | baseline start 2021-08-27 → 2021-07-02; baseline finish 2021-08-27 → 2021-07-02 |
| 72 | Milestone 4 | 2021-09-16 → 2021-07-22 (-56d) | 2021-09-16 → 2021-07-22 (-56d) | 0d → 12d | baseline start 2021-09-16 → 2021-07-22; baseline finish 2021-09-16 → 2021-07-22 |
| 73 | Milestone 5 | 2021-10-15 → 2021-08-20 (-56d) | 2021-10-15 → 2021-08-20 (-56d) | 0d → 12d | baseline start 2021-10-15 → 2021-08-20; baseline finish 2021-10-15 → 2021-08-20 |
| 74 | Milestone 6 | 2021-11-10 → 2021-09-15 (-56d) | 2021-11-10 → 2021-09-15 (-56d) | 0d → 12d | baseline start 2021-11-10 → 2021-09-15; baseline finish 2021-11-10 → 2021-09-15 |
| 75 | Milestone 7 | 2021-12-07 → 2021-10-12 (-56d) | 2021-12-07 → 2021-10-12 (-56d) | 0d → 12d | baseline start 2021-12-07 → 2021-10-12; baseline finish 2021-12-07 → 2021-10-12 |
| 76 | Milestone 8 | 2021-12-28 → 2021-11-02 (-56d) | 2021-12-28 → 2021-11-02 (-56d) | 0d → 12d | baseline start 2021-12-28 → 2021-11-02; baseline finish 2021-12-28 → 2021-11-02 |
| 77 | Milestone 9 | 2022-01-07 → 2021-11-12 (-56d) | 2022-01-07 → 2021-11-12 (-56d) | 0d → 12d | baseline start 2022-01-07 → 2021-11-12; baseline finish 2022-01-07 → 2021-11-12 |
| 78 | Milestone 10 | 2022-01-21 → 2021-12-14 (-38d) | 2022-01-21 → 2021-12-14 (-38d) |  | baseline start 2022-01-21 → 2021-12-14; baseline finish 2022-01-21 → 2021-12-14 |
| 79 | Milestone 11 | 2022-02-21 → 2022-01-13 (-39d) | 2022-02-21 → 2022-01-13 (-39d) |  | baseline start 2022-02-21 → 2022-01-13; baseline finish 2022-02-21 → 2022-01-13 |
| 80 | Milestone 12 | 2022-03-16 → 2022-02-07 (-37d) | 2022-03-16 → 2022-02-07 (-37d) |  | baseline start 2022-03-16 → 2022-02-07; baseline finish 2022-03-16 → 2022-02-07 |

## Version 3 (saved 2021-04-14, file Main.mpp)

Note of the change: Update Main.mpp

Last finish 2022-02-07 → 2022-01-17 (-21d).

Changed:

| ID | Task | Start | Finish | Duration | Total float | Other |
| --- | --- | --- | --- | --- | --- | --- |
| 6 | **Procurement** | 2021-08-20 → 2021-08-11 (-9d) | 2021-12-28 → 2021-12-07 (-21d) | 92d? → 84.12d? | 3.5d → 0d | baseline start 2021-08-20 → 2021-08-11; baseline finish 2021-12-28 → 2021-12-07 |
| 7 | Identify vendors | 2021-08-20 → 2021-08-11 (-9d) | 2021-08-31 → 2021-08-20 (-11d) |  | 23d → 5.62d | baseline start 2021-08-20 → 2021-08-11; baseline finish 2021-08-31 → 2021-08-20 |
| 8 | Develop and Issue RFQ | 2021-08-20 → 2021-08-11 (-9d) | 2021-09-08 → 2021-08-30 (-9d) |  | 17.38d → 0d | baseline start 2021-08-20 → 2021-08-11; baseline finish 2021-09-08 → 2021-08-30 |
| 9 | Issue sample (production equivalent) | 2021-09-15 → 2021-08-30 (-16d) | 2021-09-22 → 2021-09-06 (-16d) |  | 12d → 0d | baseline start 2021-09-15 → 2021-08-30; baseline finish 2021-09-22 → 2021-09-06 |
| 10 | Assess RFQ responses and select vendors | 2021-12-14 → 2021-11-23 (-21d) | 2021-12-28 → 2021-12-07 (-21d) |  |  | baseline start 2021-12-14 → 2021-11-23; baseline finish 2021-12-28 → 2021-12-07 |
| 11 | **Supplier Quality** | 2021-09-22 → 2021-09-06 (-16d) | 2021-11-26 → 2021-11-08 (-18d) | 47d? → 45d? | 12d → 0d | baseline start 2021-09-22 → 2021-09-06; baseline finish 2021-11-26 → 2021-11-08 |
| 12 | Perform supplier process capability | 2021-09-22 → 2021-09-06 (-16d) | 2021-10-12 → 2021-09-24 (-18d) |  | 12d → 0d | resources Quality Engineer → Operations Specialist; baseline start 2021-09-22 → 2021-09-06; baseline finish 2021-10-12 → 2021-09-24 |
| 13 | Approve sample parts | 2021-10-12 → 2021-09-24 (-18d) | 2021-10-22 → 2021-10-06 (-16d) |  | 19d → 6.62d | resources Quality Engineer → Engineer; baseline start 2021-10-12 → 2021-09-24; baseline finish 2021-10-22 → 2021-10-06 |
| 14 | Qualify Supplier | 2021-11-12 → 2021-10-25 (-18d) | 2021-11-26 → 2021-11-08 (-18d) |  | 12d → 11.5d | baseline start 2021-11-12 → 2021-10-25; baseline finish 2021-11-26 → 2021-11-08 |
| 15 | **Design** |  | 2021-07-15 → 2021-07-09 (-6d) | 51d? → 46.5d? | 12d → 0d | baseline finish 2021-07-15 → 2021-07-09 |
| 16 | Design and development plan |  |  |  | 12d → 0d | resources Junior Product Designer; Senior Product Designer → Junior Product Designer; Junior Product Designer 2 |
| 17 | Design specs. |  |  |  | 12d → 0d | resources Junior Product Designer; Senior Product Designer → Junior Product Designer; Junior Product Designer 2 |
| 18 | Identify testing requirements |  | 2021-06-08 → 2021-06-01 (-7d) | 10d? → 5d? | 20d → 18d | resources Junior Product Designer → Junior Product Designer; Junior Product Designer 2; baseline finish 2021-06-08 → 2021-06-01 |
| 19 | Risk analysis | 2021-06-08 → 2021-06-01 (-7d) | 2021-06-22 → 2021-06-08 (-14d) | 10d? → 5d? | 20d → 18d | resources Junior Product Designer → Junior Product Designer; Junior Product Designer 2; baseline start 2021-06-08 → 2021-06-01; baseline finish 2021-06-22 → 2021-06-08 |
| 20 | Design labeling |  | 2021-07-09 → 2021-07-07 (-2d) | 5d? → 2.5d? | 12d → 6d | resources Junior Product Designer → Junior Product Designer; Junior Product Designer 2; baseline finish 2021-07-09 → 2021-07-07 |
| 21 | Approve design | 2021-07-09 → 2021-07-07 (-2d) | 2021-07-15 → 2021-07-09 (-6d) | 4d? → 2d? | 12d → 6d | resources Junior Product Designer → Junior Product Designer; Junior Product Designer 2; baseline start 2021-07-09 → 2021-07-07; baseline finish 2021-07-15 → 2021-07-09 |
| 22 | **Engineering** | 2021-07-15 → 2021-07-09 (-6d) | 2021-11-23 → 2021-11-18 (-5d) | 93d? → 94.62d? | 12d → 0d | baseline start 2021-07-15 → 2021-07-09; baseline finish 2021-11-23 → 2021-11-18 |
| 23 | Initial engineering specs. | 2021-07-15 → 2021-07-09 (-6d) | 2021-07-22 → 2021-07-13 (-9d) | 5d? → 2.5d? | 12d → 6d | resources Engineer → Engineer; Enigneer 2; baseline start 2021-07-15 → 2021-07-09; baseline finish 2021-07-22 → 2021-07-13 |
| 24 | Design verification activities | 2021-07-22 → 2021-07-21 (-1d) | 2021-08-02 → 2021-07-27 (-6d) | 7d? → 3.5d? | 12d → 4.5d | resources Engineer → Engineer; Enigneer 2; baseline start 2021-07-22 → 2021-07-21; baseline finish 2021-08-02 → 2021-07-27 |
| 25 | Verification design review | 2021-08-02 → 2021-07-27 (-6d) | 2021-08-06 → 2021-07-29 (-8d) | 4d? → 2d? | 12d → 4.5d | resources Engineer → Engineer; Enigneer 2; baseline start 2021-08-02 → 2021-07-27; baseline finish 2021-08-06 → 2021-07-29 |
| 26 | Release pre-production specifications | 2021-08-06 → 2021-07-29 (-8d) | 2021-08-20 → 2021-08-05 (-15d) | 10d? → 5d? | 12d → 4.5d | resources Engineer → Engineer; Enigneer 2; baseline start 2021-08-06 → 2021-07-29; baseline finish 2021-08-20 → 2021-08-05 |
| 27 | Build functional model | 2021-08-20 → 2021-08-11 (-9d) | 2021-09-15 → 2021-08-24 (-22d) | 18d? → 9d? | 12d → 3.62d | resources Engineer → Engineer; Enigneer 2; baseline start 2021-08-20 → 2021-08-11; baseline finish 2021-09-15 → 2021-08-24 |
| 28 | Design validation activities | 2021-10-12 → 2021-09-24 (-18d) | 2021-10-19 → 2021-10-01 (-18d) |  | 22d → 10d | resources Engineer → Enigneer 2; baseline start 2021-10-12 → 2021-09-24; baseline finish 2021-10-19 → 2021-10-01 |
| 29 | Validation design review | 2021-11-02 → 2021-10-15 (-18d) | 2021-11-08 → 2021-10-19 (-20d) | 4d? → 2d? | 12d → 2d | resources Engineer → Engineer; Enigneer 2; baseline start 2021-11-02 → 2021-10-15; baseline finish 2021-11-08 → 2021-10-19 |
| 30 | Approve model design | 2021-11-08 → 2021-10-19 (-20d) | 2021-11-12 → 2021-10-21 (-22d) | 4d? → 2d? | 12d → 2d | resources Engineer → Engineer; Enigneer 2; baseline start 2021-11-08 → 2021-10-19; baseline finish 2021-11-12 → 2021-10-21 |
| 31 | Design transfer activities | 2021-11-12 → 2021-10-25 (-18d) | 2021-11-23 → 2021-11-18 (-5d) | 7d? → 18.5d? | 12d → 0d | resources Engineer → Engineer; Enigneer 2; baseline start 2021-11-12 → 2021-10-25; baseline finish 2021-11-23 → 2021-11-18 |
| 32 | **Engineering Quality** | 2021-08-20 → 2021-08-11 (-9d) | 2021-12-14 → 2021-11-23 (-21d) | 82d? → 74.12d? |  | baseline start 2021-08-20 → 2021-08-11; baseline finish 2021-12-14 → 2021-11-23 |
| 33 | Evaluate design specifications | 2021-08-20 → 2021-08-11 (-9d) | 2021-09-03 → 2021-08-25 (-9d) |  | 20d → 2.62d | baseline start 2021-08-20 → 2021-08-11; baseline finish 2021-09-03 → 2021-08-25 |
| 34 | Develop testing protocol for prototype | 2021-09-15 → 2021-08-30 (-16d) | 2021-09-27 → 2021-09-03 (-24d) | 8d? → 4d? | 23d → 15d | resources Engineer → Engineer; Enigneer 2; baseline start 2021-09-15 → 2021-08-30; baseline finish 2021-09-27 → 2021-09-09 |
| 35 | Test prototype | 2021-10-12 → 2021-09-24 (-18d) | 2021-10-26 → 2021-10-08 (-18d) |  | 17d → 5d | baseline start 2021-10-12 → 2021-09-24; baseline finish 2021-10-26 → 2021-10-08 |
| 36 | Evaluate results of tests and identify weaknesses | 2021-11-02 → 2021-10-15 (-18d) | 2021-11-10 → 2021-10-25 (-16d) |  | 14d → 0d | baseline start 2021-11-02 → 2021-10-15; baseline finish 2021-11-10 → 2021-10-25 |
| 37 | Product release meetings | 2021-12-09 → 2021-11-18 (-21d) | 2021-12-14 → 2021-11-23 (-21d) |  |  | constraint start no earlier than 2021-12-09 → none; resources Project Manager → Junior Marketing Specialist; baseline start 2021-12-09 → 2021-11-18; baseline finish 2021-12-14 → 2021-11-23 |
| 38 | **Manufacturing** | 2021-10-12 → 2021-09-24 (-18d) | 2022-02-02 → 2022-01-12 (-21d) | 80.5d? → 78d? |  | baseline start 2021-10-12 → 2021-09-24; baseline finish 2022-02-02 → 2022-01-12 |
| 39 | Process engineering plan | 2021-10-12 → 2021-09-24 (-18d) | 2021-11-02 → 2021-10-15 (-18d) |  | 12d → 0d | baseline start 2021-10-12 → 2021-09-24; baseline finish 2021-11-02 → 2021-10-15 |
| 40 | Develop production plan | 2021-11-12 → 2021-10-25 (-18d) | 2021-11-22 → 2021-11-02 (-20d) |  | 16d → 15.5d | baseline start 2021-11-12 → 2021-10-25; baseline finish 2021-11-22 → 2021-11-02 |
| 41 | Develop production control plan | 2021-12-14 → 2021-11-23 (-21d) | 2021-12-27 → 2021-12-06 (-21d) |  |  | baseline start 2021-12-14 → 2021-11-23; baseline finish 2021-12-27 → 2021-12-06 |
| 42 | Approve production parts | 2021-12-27 → 2021-12-06 (-21d) | 2022-01-03 → 2021-12-13 (-21d) |  |  | baseline start 2021-12-27 → 2021-12-06; baseline finish 2022-01-03 → 2021-12-13 |
| 43 | Contracting for deliveries | 2022-01-03 → 2021-12-13 (-21d) | 2022-01-13 → 2021-12-23 (-21d) |  |  | baseline start 2022-01-03 → 2021-12-13; baseline finish 2022-01-13 → 2021-12-23 |
| 44 | Submit production purchase order | 2022-01-13 → 2021-12-23 (-21d) | 2022-01-17 → 2021-12-27 (-21d) |  |  | baseline start 2022-01-13 → 2021-12-23; baseline finish 2022-01-17 → 2021-12-27 |
| 45 | Production pilot test | 2022-01-17 → 2021-12-27 (-21d) | 2022-01-24 → 2022-01-03 (-21d) |  |  | baseline start 2022-01-17 → 2021-12-27; baseline finish 2022-01-24 → 2022-01-03 |
| 46 | Debugging production system | 2022-01-24 → 2022-01-03 (-21d) | 2022-01-28 → 2022-01-07 (-21d) |  |  | baseline start 2022-01-24 → 2022-01-03; baseline finish 2022-01-28 → 2022-01-07 |
| 47 | Production release | 2022-01-28 → 2022-01-07 (-21d) | 2022-02-02 → 2022-01-12 (-21d) |  |  | baseline start 2022-01-28 → 2022-01-07; baseline finish 2022-02-02 → 2022-01-12 |
| 48 | **Commercialization** |  | 2022-02-07 → 2022-01-17 (-21d) | 197.5d? → 182.62d? |  | baseline finish 2022-02-07 → 2022-01-17 |
| 53 | Show functional model at trade show | 2021-10-12 → 2021-09-24 (-18d) | 2021-10-15 → 2021-09-29 (-16d) |  | 24d → 12d | baseline start 2021-10-12 → 2021-09-24; baseline finish 2021-10-15 → 2021-09-29 |
| 54 | Product launch | 2022-02-02 → 2022-01-12 (-21d) | 2022-02-07 → 2022-01-17 (-21d) |  |  | baseline start 2022-02-02 → 2022-01-12; baseline finish 2022-02-07 → 2022-01-17 |
| 55 | **Project Management** |  | 2022-01-27 → 2022-01-06 (-21d) | 216d? → 201.12d? |  | baseline finish 2022-01-27 → 2022-01-06 |
| 56 | Project Management Period 1 |  | 2021-05-05 → 2021-04-16 (-19d) | 25d? → 12.5d? | 12.5d → 13d | resources Project Manager → Engineer; Enigneer 2; baseline finish 2021-05-05 → 2021-04-16 |
| 57 | Project Management Period 2 |  | 2021-05-25 → 2021-05-14 (-11d) | 14d? → 7d? | 12d → 7d | resources Project Manager → Engineer; Enigneer 2; baseline finish 2021-05-25 → 2021-05-14 |
| 58 | Project Management Period 3 |  | 2021-06-14 → 2021-06-03 (-11d) | 14d? → 7d? | 26d → 21d | resources Project Manager → Engineer; Enigneer 2; baseline finish 2021-06-14 → 2021-06-03 |
| 59 | Project Management Period 4 |  |  |  | 13d → 0d | resources Project Manager → Marketing Manager |
| 60 | Project Management Period 5 | 2021-07-22 → 2021-07-21 (-1d) | 2021-08-12 → 2021-08-11 (-1d) |  | 18d → 0d | resources Project Manager → Marketing Manager; baseline start 2021-07-22 → 2021-07-21; baseline finish 2021-08-12 → 2021-08-11 |
| 61 | Project Management Period 6 | 2021-08-20 → 2021-08-11 (-9d) | 2021-09-02 → 2021-08-24 (-9d) |  | 21d → 3.62d | resources Project Manager → Marketing Manager; baseline start 2021-08-20 → 2021-08-11; baseline finish 2021-09-02 → 2021-08-24 |
| 62 | Project Management Period 7 | 2021-09-15 → 2021-08-30 (-16d) | 2021-09-30 → 2021-09-14 (-16d) |  | 20d → 8d | resources Project Manager → Marketing Manager; baseline start 2021-09-15 → 2021-08-30; baseline finish 2021-09-30 → 2021-09-14 |
| 63 | Project Management Period 8 | 2021-10-12 → 2021-09-24 (-18d) | 2021-10-15 → 2021-09-29 (-16d) |  | 24d → 12d | resources Project Manager → Marketing Manager; baseline start 2021-10-12 → 2021-09-24; baseline finish 2021-10-15 → 2021-09-29 |
| 64 | Project Management Period 9 | 2021-11-02 → 2021-10-15 (-18d) | 2021-11-08 → 2021-10-21 (-18d) |  | 16d → 2d | resources Project Manager → Marketing Manager; baseline start 2021-11-02 → 2021-10-15; baseline finish 2021-11-08 → 2021-10-21 |
| 65 | Project Management Period 10 | 2021-11-12 → 2021-10-25 (-18d) | 2021-11-19 → 2021-11-01 (-18d) |  | 17d → 16.5d | resources Project Manager → Marketing Manager; baseline start 2021-11-12 → 2021-10-25; baseline finish 2021-11-19 → 2021-11-01 |
| 66 | Project Management Period 11 | 2021-12-14 → 2021-11-23 (-21d) | 2021-12-31 → 2021-12-10 (-21d) |  |  | resources Project Manager → Marketing Manager; baseline start 2021-12-14 → 2021-11-23; baseline finish 2021-12-31 → 2021-12-10 |
| 67 | Project Management Period 12 | 2022-01-13 → 2021-12-23 (-21d) | 2022-01-27 → 2022-01-06 (-21d) |  |  | resources Project Manager → Marketing Manager; baseline start 2022-01-13 → 2021-12-23; baseline finish 2022-01-27 → 2022-01-06 |
| 68 | **Milestones** |  | 2022-02-07 → 2022-01-17 (-21d) | 197.5d? → 182.62d? |  | baseline finish 2022-02-07 → 2022-01-17 |
| 72 | Milestone 4 | 2021-07-22 → 2021-07-21 (-1d) | 2021-07-22 → 2021-07-21 (-1d) |  | 12d → 0d | baseline start 2021-07-22 → 2021-07-21; baseline finish 2021-07-22 → 2021-07-21 |
| 73 | Milestone 5 | 2021-08-20 → 2021-08-11 (-9d) | 2021-08-20 → 2021-08-11 (-9d) |  | 12d → 0d | baseline start 2021-08-20 → 2021-08-11; baseline finish 2021-08-20 → 2021-08-11 |
| 74 | Milestone 6 | 2021-09-15 → 2021-08-30 (-16d) | 2021-09-15 → 2021-08-30 (-16d) |  | 12d → 0d | baseline start 2021-09-15 → 2021-08-30; baseline finish 2021-09-15 → 2021-08-30 |
| 75 | Milestone 7 | 2021-10-12 → 2021-09-24 (-18d) | 2021-10-12 → 2021-09-24 (-18d) |  | 12d → 0d | baseline start 2021-10-12 → 2021-09-24; baseline finish 2021-10-12 → 2021-09-24 |
| 76 | Milestone 8 | 2021-11-02 → 2021-10-15 (-18d) | 2021-11-02 → 2021-10-15 (-18d) |  | 12d → 0d | baseline start 2021-11-02 → 2021-10-15; baseline finish 2021-11-02 → 2021-10-15 |
| 77 | Milestone 9 | 2021-11-12 → 2021-10-25 (-18d) | 2021-11-12 → 2021-10-25 (-18d) |  | 12d → 0d | baseline start 2021-11-12 → 2021-10-25; baseline finish 2021-11-12 → 2021-10-25 |
| 78 | Milestone 10 | 2021-12-14 → 2021-11-23 (-21d) | 2021-12-14 → 2021-11-23 (-21d) |  |  | baseline start 2021-12-14 → 2021-11-23; baseline finish 2021-12-14 → 2021-11-23 |
| 79 | Milestone 11 | 2022-01-13 → 2021-12-23 (-21d) | 2022-01-13 → 2021-12-23 (-21d) |  |  | baseline start 2022-01-13 → 2021-12-23; baseline finish 2022-01-13 → 2021-12-23 |
| 80 | Milestone 12 | 2022-02-07 → 2022-01-17 (-21d) | 2022-02-07 → 2022-01-17 (-21d) |  |  | baseline start 2022-02-07 → 2022-01-17; baseline finish 2022-02-07 → 2022-01-17 |

## Version 4 (saved 2021-04-15, file Main.mpp)

Note of the change: Update Main.mpp

Last finish 2022-01-17 → 2022-01-06 (-11d).

Changed:

| ID | Task | Start | Finish | Duration | Total float | Other |
| --- | --- | --- | --- | --- | --- | --- |
| 2 | Evaluate market |  |  |  |  | resources Junior Marketing Specialist; Marketing Manager → Kurt Zollinger; Yukio Ashida |
| 3 | Develop Business opportunity |  |  |  |  | resources Junior Marketing Specialist; Marketing Manager → Kurt Zollinger; Yukio Ashida |
| 4 | Customer preference study |  |  |  |  | resources Junior Marketing Specialist; Marketing Manager → Kurt Zollinger; Yukio Ashida |
| 5 | Business evaluation (NPV, etc.) |  |  |  |  | resources Junior Marketing Specialist; Marketing Manager → Kurt Zollinger; Yukio Ashida |
| 6 | **Procurement** |  | 2021-12-07 → 2021-11-26 (-11d) | 84.12d? → 77.12d? |  | baseline finish 2021-12-07 → 2021-11-26 |
| 7 | Identify vendors |  |  |  |  | resources Junior Marketing Specialist → Operations Specialist |
| 8 | Develop and Issue RFQ |  |  |  |  | resources Junior Marketing Specialist → Operations Specialist |
| 10 | Assess RFQ responses and select vendors | 2021-11-23 → 2021-11-12 (-11d) | 2021-12-07 → 2021-11-26 (-11d) |  |  | baseline start 2021-11-23 → 2021-11-12; baseline finish 2021-12-07 → 2021-11-26 |
| 11 | **Supplier Quality** |  | 2021-11-08 → 2021-10-28 (-11d) | 45d? → 38d? |  | baseline finish 2021-11-08 → 2021-10-28 |
| 12 | Perform supplier process capability |  | 2021-09-24 → 2021-09-15 (-9d) | 14d? → 7d? |  | resources Operations Specialist → Operations Specialist; Tom Bechur; baseline finish 2021-09-24 → 2021-09-15 |
| 13 | Approve sample parts | 2021-09-24 → 2021-09-15 (-9d) | 2021-10-06 → 2021-09-27 (-9d) |  |  | resources Engineer → Tom Bechur; baseline start 2021-09-24 → 2021-09-15; baseline finish 2021-10-06 → 2021-09-27 |
| 14 | Qualify Supplier | 2021-10-25 → 2021-10-14 (-11d) | 2021-11-08 → 2021-10-28 (-11d) |  |  | baseline start 2021-10-25 → 2021-10-14; baseline finish 2021-11-08 → 2021-10-28 |
| 15 | **Design** |  | 2021-07-09 → 2021-07-15 (+6d) | 46.5d? → 51d? |  |  |
| 18 | Identify testing requirements |  | 2021-06-01 → 2021-06-08 (+7d) | 5d? → 10d? | 18d → 8d | resources Junior Product Designer; Junior Product Designer 2 → Junior Product Designer |
| 19 | Risk analysis | 2021-06-01 → 2021-06-08 (+7d) | 2021-06-08 → 2021-06-22 (+14d) | 5d? → 10d? | 18d → 8d | resources Junior Product Designer; Junior Product Designer 2 → Junior Product Designer |
| 20 | Design labeling |  | 2021-07-07 → 2021-07-09 (+2d) | 2.5d? → 5d? | 6d → 1.5d | resources Junior Product Designer; Junior Product Designer 2 → Junior Product Designer |
| 21 | Approve design | 2021-07-07 → 2021-07-09 (+2d) | 2021-07-09 → 2021-07-15 (+6d) | 2d? → 4d? | 6d → 1.5d | resources Junior Product Designer; Junior Product Designer 2 → Junior Product Designer |
| 22 | **Engineering** | 2021-07-09 → 2021-07-15 (+6d) | 2021-11-18 → 2021-11-09 (-9d) | 94.62d? → 83.12d? |  | baseline finish 2021-11-18 → 2021-11-09 |
| 23 | Initial engineering specs. | 2021-07-09 → 2021-07-15 (+6d) | 2021-07-13 → 2021-07-20 (+7d) |  | 6d → 1.5d | resources Engineer; Enigneer 2 → Tom Bechur; Darryl Sandefur |
| 24 | Design verification activities |  |  |  |  | resources Engineer; Enigneer 2 → Tom Bechur; Darryl Sandefur |
| 25 | Verification design review |  |  |  |  | resources Engineer; Enigneer 2 → Tom Bechur; Darryl Sandefur |
| 26 | Release pre-production specifications |  |  |  |  | resources Engineer; Enigneer 2 → Tom Bechur; Darryl Sandefur |
| 27 | Build functional model |  |  |  |  | resources Engineer; Enigneer 2 → Tom Bechur; Darryl Sandefur |
| 28 | Design validation activities | 2021-09-24 → 2021-09-15 (-9d) | 2021-10-01 → 2021-09-22 (-9d) |  |  | resources Enigneer 2 → Darryl Sandefur; baseline start 2021-09-24 → 2021-09-15; baseline finish 2021-10-01 → 2021-09-22 |
| 29 | Validation design review | 2021-10-15 → 2021-10-06 (-9d) | 2021-10-19 → 2021-10-08 (-11d) |  |  | resources Engineer; Enigneer 2 → Tom Bechur; Darryl Sandefur; baseline start 2021-10-15 → 2021-10-06; baseline finish 2021-10-19 → 2021-10-08 |
| 30 | Approve model design | 2021-10-19 → 2021-10-08 (-11d) | 2021-10-21 → 2021-10-12 (-9d) |  |  | resources Engineer; Enigneer 2 → Tom Bechur; Darryl Sandefur; baseline start 2021-10-19 → 2021-10-08; baseline finish 2021-10-21 → 2021-10-12 |
| 31 | Design transfer activities | 2021-10-25 → 2021-10-14 (-11d) | 2021-11-18 → 2021-11-09 (-9d) |  |  | resources Engineer; Enigneer 2 → Tom Bechur; Darryl Sandefur; baseline start 2021-10-25 → 2021-10-14; baseline finish 2021-11-18 → 2021-11-09 |
| 32 | **Engineering Quality** |  | 2021-11-23 → 2021-11-12 (-11d) | 74.12d? → 67.12d? |  | baseline finish 2021-11-23 → 2021-11-12 |
| 34 | Develop testing protocol for prototype |  | 2021-09-03 → 2021-09-09 (+6d) | 4d? → 8d? | 15d → 4d | resources Engineer; Enigneer 2 → Darryl Sandefur |
| 35 | Test prototype | 2021-09-24 → 2021-09-15 (-9d) | 2021-10-08 → 2021-09-29 (-9d) |  |  | baseline start 2021-09-24 → 2021-09-15; baseline finish 2021-10-08 → 2021-09-29 |
| 36 | Evaluate results of tests and identify weaknesses | 2021-10-15 → 2021-10-06 (-9d) | 2021-10-25 → 2021-10-14 (-11d) |  |  | baseline start 2021-10-15 → 2021-10-06; baseline finish 2021-10-25 → 2021-10-14 |
| 37 | Product release meetings | 2021-11-18 → 2021-11-09 (-9d) | 2021-11-23 → 2021-11-12 (-11d) |  |  | resources Junior Marketing Specialist → Yukio Ashida; baseline start 2021-11-18 → 2021-11-09; baseline finish 2021-11-23 → 2021-11-12 |
| 38 | **Manufacturing** | 2021-09-24 → 2021-09-15 (-9d) | 2022-01-12 → 2022-01-03 (-9d) |  |  | baseline start 2021-09-24 → 2021-09-15; baseline finish 2022-01-12 → 2022-01-03 |
| 39 | Process engineering plan | 2021-09-24 → 2021-09-15 (-9d) | 2021-10-15 → 2021-10-06 (-9d) |  |  | baseline start 2021-09-24 → 2021-09-15; baseline finish 2021-10-15 → 2021-10-06 |
| 40 | Develop production plan | 2021-10-25 → 2021-10-14 (-11d) | 2021-11-02 → 2021-10-22 (-11d) |  |  | baseline start 2021-10-25 → 2021-10-14; baseline finish 2021-11-02 → 2021-10-22 |
| 41 | Develop production control plan | 2021-11-23 → 2021-11-12 (-11d) | 2021-12-06 → 2021-11-25 (-11d) |  |  | baseline start 2021-11-23 → 2021-11-12; baseline finish 2021-12-06 → 2021-11-25 |
| 42 | Approve production parts | 2021-12-06 → 2021-11-25 (-11d) | 2021-12-13 → 2021-12-02 (-11d) |  |  | baseline start 2021-12-06 → 2021-11-25; baseline finish 2021-12-13 → 2021-12-02 |
| 43 | Contracting for deliveries | 2021-12-13 → 2021-12-02 (-11d) | 2021-12-23 → 2021-12-14 (-9d) |  |  | baseline start 2021-12-13 → 2021-12-02; baseline finish 2021-12-23 → 2021-12-14 |
| 44 | Submit production purchase order | 2021-12-23 → 2021-12-14 (-9d) | 2021-12-27 → 2021-12-16 (-11d) |  |  | baseline start 2021-12-23 → 2021-12-14; baseline finish 2021-12-27 → 2021-12-16 |
| 45 | Production pilot test | 2021-12-27 → 2021-12-16 (-11d) | 2022-01-03 → 2021-12-23 (-11d) |  |  | baseline start 2021-12-27 → 2021-12-16; baseline finish 2022-01-03 → 2021-12-23 |
| 46 | Debugging production system | 2022-01-03 → 2021-12-23 (-11d) | 2022-01-07 → 2021-12-29 (-9d) |  |  | baseline start 2022-01-03 → 2021-12-23; baseline finish 2022-01-07 → 2021-12-29 |
| 47 | Production release | 2022-01-07 → 2021-12-29 (-9d) | 2022-01-12 → 2022-01-03 (-9d) |  |  | baseline start 2022-01-07 → 2021-12-29; baseline finish 2022-01-12 → 2022-01-03 |
| 48 | **Commercialization** |  | 2022-01-17 → 2022-01-06 (-11d) | 182.62d? → 175.62d? |  | baseline finish 2022-01-17 → 2022-01-06 |
| 49 | Develop preliminary marketing plan |  |  |  |  | resources Junior Marketing Specialist; Marketing Manager → Kurt Zollinger; Yukio Ashida |
| 50 | Develop marketing program |  |  |  |  | resources Junior Marketing Specialist; Marketing Manager → Kurt Zollinger; Yukio Ashida |
| 51 | Train sales team |  |  |  |  | resources Junior Marketing Specialist → Kurt Zollinger |
| 52 | Advertising campaign |  |  |  |  | resources Marketing Manager → Yukio Ashida |
| 53 | Show functional model at trade show | 2021-09-24 → 2021-09-20 (-4d) | 2021-09-29 → 2021-09-23 (-6d) |  | 12d → 9d | resources Junior Marketing Specialist → Yukio Ashida; baseline start 2021-09-24 → 2021-09-20; baseline finish 2021-09-29 → 2021-09-23 |
| 54 | Product launch | 2022-01-12 → 2022-01-03 (-9d) | 2022-01-17 → 2022-01-06 (-11d) |  |  | resources Junior Marketing Specialist → Kurt Zollinger; baseline start 2022-01-12 → 2022-01-03; baseline finish 2022-01-17 → 2022-01-06 |
| 55 | **Project Management** |  | 2022-01-06 → 2021-12-28 (-9d) | 201.12d? → 194.12d? |  | baseline finish 2022-01-06 → 2021-12-28 |
| 56 | Project Management Period 1 |  |  |  |  | resources Engineer; Enigneer 2 → Tom Bechur; Darryl Sandefur |
| 57 | Project Management Period 2 |  |  |  |  | resources Engineer; Enigneer 2 → Tom Bechur; Darryl Sandefur |
| 58 | Project Management Period 3 |  |  |  |  | resources Engineer; Enigneer 2 → Tom Bechur; Darryl Sandefur |
| 59 | Project Management Period 4 |  |  |  |  | resources Marketing Manager → Yukio Ashida |
| 60 | Project Management Period 5 |  |  |  |  | resources Marketing Manager → Yukio Ashida |
| 61 | Project Management Period 6 |  |  |  |  | resources Marketing Manager → Yukio Ashida |
| 62 | Project Management Period 7 |  |  |  | 8d → 1d | resources Marketing Manager → Yukio Ashida |
| 63 | Project Management Period 8 | 2021-09-24 → 2021-09-15 (-9d) | 2021-09-29 → 2021-09-20 (-9d) |  |  | resources Marketing Manager → Yukio Ashida; baseline start 2021-09-24 → 2021-09-15; baseline finish 2021-09-29 → 2021-09-20 |
| 64 | Project Management Period 9 | 2021-10-15 → 2021-10-06 (-9d) | 2021-10-21 → 2021-10-12 (-9d) |  |  | resources Marketing Manager → Yukio Ashida; baseline start 2021-10-15 → 2021-10-06; baseline finish 2021-10-21 → 2021-10-12 |
| 65 | Project Management Period 10 | 2021-10-25 → 2021-10-14 (-11d) | 2021-11-01 → 2021-10-21 (-11d) |  |  | resources Marketing Manager → Yukio Ashida; baseline start 2021-10-25 → 2021-10-14; baseline finish 2021-11-01 → 2021-10-21 |
| 66 | Project Management Period 11 | 2021-11-23 → 2021-11-12 (-11d) | 2021-12-10 → 2021-12-01 (-9d) |  |  | resources Marketing Manager → Darryl Sandefur; baseline start 2021-11-23 → 2021-11-12; baseline finish 2021-12-10 → 2021-12-01 |
| 67 | Project Management Period 12 | 2021-12-23 → 2021-12-14 (-9d) | 2022-01-06 → 2021-12-28 (-9d) |  |  | resources Marketing Manager → Darryl Sandefur; baseline start 2021-12-23 → 2021-12-14; baseline finish 2022-01-06 → 2021-12-28 |
| 68 | **Milestones** |  | 2022-01-17 → 2022-01-06 (-11d) | 182.62d? → 175.62d? |  | baseline finish 2022-01-17 → 2022-01-06 |
| 75 | Milestone 7 | 2021-09-24 → 2021-09-15 (-9d) | 2021-09-24 → 2021-09-15 (-9d) |  |  | baseline start 2021-09-24 → 2021-09-15; baseline finish 2021-09-24 → 2021-09-15 |
| 76 | Milestone 8 | 2021-10-15 → 2021-10-06 (-9d) | 2021-10-15 → 2021-10-06 (-9d) |  |  | baseline start 2021-10-15 → 2021-10-06; baseline finish 2021-10-15 → 2021-10-06 |
| 77 | Milestone 9 | 2021-10-25 → 2021-10-14 (-11d) | 2021-10-25 → 2021-10-14 (-11d) |  |  | baseline start 2021-10-25 → 2021-10-14; baseline finish 2021-10-25 → 2021-10-14 |
| 78 | Milestone 10 | 2021-11-23 → 2021-11-12 (-11d) | 2021-11-23 → 2021-11-12 (-11d) |  |  | baseline start 2021-11-23 → 2021-11-12; baseline finish 2021-11-23 → 2021-11-12 |
| 79 | Milestone 11 | 2021-12-23 → 2021-12-14 (-9d) | 2021-12-23 → 2021-12-14 (-9d) |  |  | baseline start 2021-12-23 → 2021-12-14; baseline finish 2021-12-23 → 2021-12-14 |
| 80 | Milestone 12 | 2022-01-17 → 2022-01-06 (-11d) | 2022-01-17 → 2022-01-06 (-11d) |  |  | baseline start 2022-01-17 → 2022-01-06; baseline finish 2022-01-17 → 2022-01-06 |

## Version 5 (saved 2021-04-15, file Main_backup.mpp)

Last finish stays 2022-01-06.

Changed:

| ID | Task | Start | Finish | Duration | Total float | Other |
| --- | --- | --- | --- | --- | --- | --- |
| 15 | **Design** |  | 2021-07-15 → 2021-07-09 (-6d) | 51d? → 46.5d? |  |  |
| 18 | Identify testing requirements |  | 2021-06-08 → 2021-06-01 (-7d) | 10d? → 5d? | 8d → 18d | resources Junior Product Designer → Junior Product Designer; Junior Product Designer 2 |
| 19 | Risk analysis | 2021-06-08 → 2021-06-01 (-7d) | 2021-06-22 → 2021-06-08 (-14d) | 10d? → 5d? | 8d → 18d | resources Junior Product Designer → Junior Product Designer; Junior Product Designer 2 |
| 20 | Design labeling |  | 2021-07-09 → 2021-07-07 (-2d) | 5d? → 2.5d? | 1.5d → 6d | resources Junior Product Designer → Junior Product Designer; Junior Product Designer 2 |
| 21 | Approve design | 2021-07-09 → 2021-07-07 (-2d) | 2021-07-15 → 2021-07-09 (-6d) | 4d? → 2d? | 1.5d → 6d | resources Junior Product Designer → Junior Product Designer; Junior Product Designer 2 |
| 22 | **Engineering** | 2021-07-15 → 2021-07-09 (-6d) |  | 83.12d? → 87.62d? |  |  |
| 23 | Initial engineering specs. | 2021-07-15 → 2021-07-09 (-6d) | 2021-07-20 → 2021-07-13 (-7d) |  | 1.5d → 6d |  |

## Version 6 (saved 2021-04-15, file Master.mpp)

Last finish 2022-01-06 → 2022-01-12 (+6d). Complete tasks 0 → 5.

Changed:

| ID | Task | Start | Finish | Duration | Complete | Total float |
| --- | --- | --- | --- | --- | --- | --- |
| 1 | **Market Assessment** | 2021-03-31 A | 2021-05-05 → 2021-05-11 A (+6d) | 25.5d? → 29.26d | 0% → 100% | 0d → none |
| 2 | Evaluate market | 2021-03-31 A | 2021-04-08 A | 6d? → 6.69d | 0% → 100% | 0d → none |
| 3 | Develop Business opportunity | 2021-04-08 A | 2021-04-19 → 2021-04-20 A (+1d) | 7d? → 8.06d | 0% → 100% | 0d → none |
| 4 | Customer preference study | 2021-04-19 → 2021-04-20 A (+1d) | 2021-05-03 → 2021-05-07 A (+4d) | 10.5d? → 12.13d | 0% → 100% | 0d → none |
| 5 | Business evaluation (NPV, etc.) | 2021-05-03 → 2021-05-07 A (+4d) | 2021-05-05 → 2021-05-11 A (+6d) | 2d? → 2.38d | 0% → 100% | 0d → none |
| 6 | **Procurement** | 2021-08-11 → 2021-08-17 (+6d) | 2021-11-26 → 2021-12-02 (+6d) |  |  |  |
| 7 | Identify vendors | 2021-08-11 → 2021-08-17 (+6d) | 2021-08-20 → 2021-08-26 (+6d) |  |  |  |
| 8 | Develop and Issue RFQ | 2021-08-11 → 2021-08-17 (+6d) | 2021-08-30 → 2021-09-03 (+4d) |  |  |  |
| 9 | Issue sample (production equivalent) | 2021-08-30 → 2021-09-03 (+4d) | 2021-09-06 → 2021-09-10 (+4d) |  |  |  |
| 10 | Assess RFQ responses and select vendors | 2021-11-12 → 2021-11-18 (+6d) | 2021-11-26 → 2021-12-02 (+6d) |  |  |  |
| 11 | **Supplier Quality** | 2021-09-06 → 2021-09-10 (+4d) | 2021-10-28 → 2021-11-03 (+6d) |  |  |  |
| 12 | Perform supplier process capability | 2021-09-06 → 2021-09-10 (+4d) | 2021-09-15 → 2021-09-21 (+6d) |  |  |  |
| 13 | Approve sample parts | 2021-09-15 → 2021-09-21 (+6d) | 2021-09-27 → 2021-10-01 (+4d) |  |  | 6.62d → 6.51d |
| 14 | Qualify Supplier | 2021-10-14 → 2021-10-20 (+6d) | 2021-10-28 → 2021-11-03 (+6d) |  |  |  |
| 15 | **Design** | 2021-05-05 → 2021-05-11 (+6d) | 2021-07-09 → 2021-07-14 (+5d) |  |  |  |
| 16 | Design and development plan | 2021-05-05 → 2021-05-11 (+6d) | 2021-05-10 → 2021-05-14 (+4d) |  |  |  |
| 17 | Design specs. | 2021-05-10 → 2021-05-14 (+4d) | 2021-05-25 → 2021-05-31 (+6d) |  |  |  |
| 18 | Identify testing requirements | 2021-05-25 → 2021-05-31 (+6d) | 2021-06-01 → 2021-06-07 (+6d) |  |  |  |
| 19 | Risk analysis | 2021-06-01 → 2021-06-07 (+6d) | 2021-06-08 → 2021-06-14 (+6d) |  |  |  |
| 20 | Design labeling | 2021-07-02 → 2021-07-08 (+6d) | 2021-07-07 → 2021-07-12 (+5d) |  |  |  |
| 21 | Approve design | 2021-07-07 → 2021-07-12 (+5d) | 2021-07-09 → 2021-07-14 (+5d) |  |  |  |
| 22 | **Engineering** | 2021-07-09 → 2021-07-14 (+5d) | 2021-11-09 → 2021-11-15 (+6d) |  |  |  |
| 23 | Initial engineering specs. | 2021-07-09 → 2021-07-14 (+5d) | 2021-07-13 → 2021-07-19 (+6d) |  |  |  |
| 24 | Design verification activities | 2021-07-21 → 2021-07-27 (+6d) | 2021-07-27 → 2021-07-30 (+3d) |  |  |  |
| 25 | Verification design review | 2021-07-27 → 2021-07-30 (+3d) | 2021-07-29 → 2021-08-03 (+5d) |  |  |  |
| 26 | Release pre-production specifications | 2021-07-29 → 2021-08-03 (+5d) | 2021-08-05 → 2021-08-10 (+5d) |  |  |  |
| 27 | Build functional model | 2021-08-11 → 2021-08-17 (+6d) | 2021-08-24 → 2021-08-30 (+6d) |  |  |  |
| 28 | Design validation activities | 2021-09-15 → 2021-09-21 (+6d) | 2021-09-22 → 2021-09-28 (+6d) |  |  |  |
| 29 | Validation design review | 2021-10-06 → 2021-10-12 (+6d) | 2021-10-08 → 2021-10-14 (+6d) |  |  |  |
| 30 | Approve model design | 2021-10-08 → 2021-10-14 (+6d) | 2021-10-12 → 2021-10-18 (+6d) |  |  |  |
| 31 | Design transfer activities | 2021-10-14 → 2021-10-20 (+6d) | 2021-11-09 → 2021-11-15 (+6d) |  |  |  |
| 32 | **Engineering Quality** | 2021-08-11 → 2021-08-17 (+6d) | 2021-11-12 → 2021-11-18 (+6d) |  |  |  |
| 33 | Evaluate design specifications | 2021-08-11 → 2021-08-17 (+6d) | 2021-08-25 → 2021-08-31 (+6d) |  |  |  |
| 34 | Develop testing protocol for prototype | 2021-08-30 → 2021-09-03 (+4d) | 2021-09-09 → 2021-09-15 (+6d) |  |  |  |
| 35 | Test prototype | 2021-09-15 → 2021-09-21 (+6d) | 2021-09-29 → 2021-10-05 (+6d) |  |  |  |
| 36 | Evaluate results of tests and identify weaknesses | 2021-10-06 → 2021-10-12 (+6d) | 2021-10-14 → 2021-10-20 (+6d) |  |  |  |
| 37 | Product release meetings | 2021-11-09 → 2021-11-15 (+6d) | 2021-11-12 → 2021-11-18 (+6d) |  |  |  |
| 38 | **Manufacturing** | 2021-09-15 → 2021-09-21 (+6d) | 2022-01-03 → 2022-01-07 (+4d) |  |  |  |
| 39 | Process engineering plan | 2021-09-15 → 2021-09-21 (+6d) | 2021-10-06 → 2021-10-12 (+6d) |  |  |  |
| 40 | Develop production plan | 2021-10-14 → 2021-10-20 (+6d) | 2021-10-22 → 2021-10-28 (+6d) |  |  |  |
| 41 | Develop production control plan | 2021-11-12 → 2021-11-18 (+6d) | 2021-11-25 → 2021-12-01 (+6d) |  |  |  |
| 42 | Approve production parts | 2021-11-25 → 2021-12-01 (+6d) | 2021-12-02 → 2021-12-08 (+6d) |  |  |  |
| 43 | Contracting for deliveries | 2021-12-02 → 2021-12-08 (+6d) | 2021-12-14 → 2021-12-20 (+6d) |  |  |  |
| 44 | Submit production purchase order | 2021-12-14 → 2021-12-20 (+6d) | 2021-12-16 → 2021-12-22 (+6d) |  |  |  |
| 45 | Production pilot test | 2021-12-16 → 2021-12-22 (+6d) | 2021-12-23 → 2021-12-29 (+6d) |  |  |  |
| 46 | Debugging production system | 2021-12-23 → 2021-12-29 (+6d) | 2021-12-29 → 2022-01-04 (+6d) |  |  |  |
| 47 | Production release | 2021-12-29 → 2022-01-04 (+6d) | 2022-01-03 → 2022-01-07 (+4d) |  |  |  |
| 48 | **Commercialization** | 2021-05-05 → 2021-05-11 (+6d) | 2022-01-06 → 2022-01-12 (+6d) |  |  |  |
| 49 | Develop preliminary marketing plan | 2021-05-05 → 2021-05-11 (+6d) | 2021-05-10 → 2021-05-13 (+3d) |  |  |  |
| 50 | Develop marketing program | 2021-05-10 → 2021-05-13 (+3d) | 2021-05-19 → 2021-05-25 (+6d) |  |  |  |
| 51 | Train sales team | 2021-05-25 → 2021-05-31 (+6d) | 2021-06-24 → 2021-06-30 (+6d) |  |  |  |
| 52 | Advertising campaign | 2021-05-25 → 2021-05-31 (+6d) | 2021-07-02 → 2021-07-08 (+6d) |  |  |  |
| 53 | Show functional model at trade show | 2021-09-20 → 2021-09-27 (+7d) | 2021-09-23 → 2021-09-29 (+6d) |  |  | 9d → 8.01d |
| 54 | Product launch | 2022-01-03 → 2022-01-07 (+4d) | 2022-01-06 → 2022-01-12 (+6d) |  |  |  |
| 55 | **Project Management** | 2021-03-31 A | 2021-12-28 → 2022-01-03 (+6d) | 194.12d? → 197.88d? | 0% → 16% |  |
| 56 | Project Management Period 1 | 2021-03-31 A | 2021-04-16 → 2021-04-26 A (+10d) | 12.5d? → 18.06d? | 0% → 100% | 13d → none |
| 57 | Project Management Period 2 | 2021-05-05 → 2021-05-11 (+6d) | 2021-05-14 → 2021-05-20 (+6d) |  |  |  |
| 58 | Project Management Period 3 | 2021-05-25 → 2021-05-31 (+6d) | 2021-06-03 → 2021-06-09 (+6d) |  |  |  |
| 59 | Project Management Period 4 | 2021-07-02 → 2021-07-08 (+6d) | 2021-07-21 → 2021-07-27 (+6d) |  |  |  |
| 60 | Project Management Period 5 | 2021-07-21 → 2021-07-27 (+6d) | 2021-08-11 → 2021-08-17 (+6d) |  |  |  |
| 61 | Project Management Period 6 | 2021-08-11 → 2021-08-17 (+6d) | 2021-08-24 → 2021-08-30 (+6d) |  |  |  |
| 62 | Project Management Period 7 | 2021-08-30 → 2021-09-03 (+4d) | 2021-09-14 → 2021-09-20 (+6d) |  |  |  |
| 63 | Project Management Period 8 | 2021-09-15 → 2021-09-21 (+6d) | 2021-09-20 → 2021-09-24 (+4d) |  |  |  |
| 64 | Project Management Period 9 | 2021-10-06 → 2021-10-12 (+6d) | 2021-10-12 → 2021-10-18 (+6d) |  |  |  |
| 65 | Project Management Period 10 | 2021-10-14 → 2021-10-20 (+6d) | 2021-10-21 → 2021-10-27 (+6d) |  |  |  |
| 66 | Project Management Period 11 | 2021-11-12 → 2021-11-18 (+6d) | 2021-12-01 → 2021-12-07 (+6d) |  |  |  |
| 67 | Project Management Period 12 | 2021-12-14 → 2021-12-20 (+6d) | 2021-12-28 → 2022-01-03 (+6d) |  |  |  |
| 68 | **Milestones** | 2021-05-05 → 2021-05-11 (+6d) | 2022-01-06 → 2022-01-12 (+6d) |  |  |  |
| 69 | Milestone 1 | 2021-05-05 → 2021-05-11 (+6d) | 2021-05-05 → 2021-05-11 (+6d) |  |  |  |
| 70 | Milestone 2 | 2021-05-25 → 2021-05-31 (+6d) | 2021-05-25 → 2021-05-31 (+6d) |  |  |  |

| ID | Task | Start | Finish |
| --- | --- | --- | --- |
| 71 | Milestone 3 | 2021-07-02 → 2021-07-08 (+6d) | 2021-07-02 → 2021-07-08 (+6d) |
| 72 | Milestone 4 | 2021-07-21 → 2021-07-27 (+6d) | 2021-07-21 → 2021-07-27 (+6d) |
| 73 | Milestone 5 | 2021-08-11 → 2021-08-17 (+6d) | 2021-08-11 → 2021-08-17 (+6d) |
| 74 | Milestone 6 | 2021-08-30 → 2021-09-03 (+4d) | 2021-08-30 → 2021-09-03 (+4d) |
| 75 | Milestone 7 | 2021-09-15 → 2021-09-21 (+6d) | 2021-09-15 → 2021-09-21 (+6d) |
| 76 | Milestone 8 | 2021-10-06 → 2021-10-12 (+6d) | 2021-10-06 → 2021-10-12 (+6d) |
| 77 | Milestone 9 | 2021-10-14 → 2021-10-20 (+6d) | 2021-10-14 → 2021-10-20 (+6d) |
| 78 | Milestone 10 | 2021-11-12 → 2021-11-18 (+6d) | 2021-11-12 → 2021-11-18 (+6d) |
| 79 | Milestone 11 | 2021-12-14 → 2021-12-20 (+6d) | 2021-12-14 → 2021-12-20 (+6d) |
| 80 | Milestone 12 | 2022-01-06 → 2022-01-12 (+6d) | 2022-01-06 → 2022-01-12 (+6d) |

## Version 7 (saved 2021-04-16, file Main_backup.mpp)

Last finish 2022-01-12 → 2022-01-06 (-6d). Complete tasks 5 → 0.

Changed:

| ID | Task | Start | Finish | Duration | Complete | Total float |
| --- | --- | --- | --- | --- | --- | --- |
| 1 | **Market Assessment** | 2021-03-31 A → 2021-03-31 | 2021-05-11 A → 2021-05-05 (-6d) | 29.26d → 25.5d? | 100% → 0% | none → 0d |
| 2 | Evaluate market | 2021-03-31 A → 2021-03-31 | 2021-04-08 A → 2021-04-08 | 6.69d → 6d? | 100% → 0% | none → 0d |
| 3 | Develop Business opportunity | 2021-04-08 A → 2021-04-08 | 2021-04-20 A → 2021-04-19 (-1d) | 8.06d → 7d? | 100% → 0% | none → 0d |
| 4 | Customer preference study | 2021-04-20 A → 2021-04-19 (-1d) | 2021-05-07 A → 2021-05-03 (-4d) | 12.13d → 10.5d? | 100% → 0% | none → 0d |
| 5 | Business evaluation (NPV, etc.) | 2021-05-07 A → 2021-05-03 (-4d) | 2021-05-11 A → 2021-05-05 (-6d) | 2.38d → 2d? | 100% → 0% | none → 0d |
| 6 | **Procurement** | 2021-08-17 → 2021-08-11 (-6d) | 2021-12-02 → 2021-11-26 (-6d) |  |  |  |
| 7 | Identify vendors | 2021-08-17 → 2021-08-11 (-6d) | 2021-08-26 → 2021-08-20 (-6d) |  |  |  |
| 8 | Develop and Issue RFQ | 2021-08-17 → 2021-08-11 (-6d) | 2021-09-03 → 2021-08-30 (-4d) |  |  |  |
| 9 | Issue sample (production equivalent) | 2021-09-03 → 2021-08-30 (-4d) | 2021-09-10 → 2021-09-06 (-4d) |  |  |  |
| 10 | Assess RFQ responses and select vendors | 2021-11-18 → 2021-11-12 (-6d) | 2021-12-02 → 2021-11-26 (-6d) |  |  |  |
| 11 | **Supplier Quality** | 2021-09-10 → 2021-09-06 (-4d) | 2021-11-03 → 2021-10-28 (-6d) |  |  |  |
| 12 | Perform supplier process capability | 2021-09-10 → 2021-09-06 (-4d) | 2021-09-21 → 2021-09-15 (-6d) |  |  |  |
| 13 | Approve sample parts | 2021-09-21 → 2021-09-15 (-6d) | 2021-10-01 → 2021-09-27 (-4d) |  |  | 6.51d → 6.62d |
| 14 | Qualify Supplier | 2021-10-20 → 2021-10-14 (-6d) | 2021-11-03 → 2021-10-28 (-6d) |  |  |  |
| 15 | **Design** | 2021-05-11 → 2021-05-05 (-6d) | 2021-07-14 → 2021-07-09 (-5d) |  |  |  |
| 16 | Design and development plan | 2021-05-11 → 2021-05-05 (-6d) | 2021-05-14 → 2021-05-10 (-4d) |  |  |  |
| 17 | Design specs. | 2021-05-14 → 2021-05-10 (-4d) | 2021-05-31 → 2021-05-25 (-6d) |  |  |  |
| 18 | Identify testing requirements | 2021-05-31 → 2021-05-25 (-6d) | 2021-06-07 → 2021-06-01 (-6d) |  |  |  |
| 19 | Risk analysis | 2021-06-07 → 2021-06-01 (-6d) | 2021-06-14 → 2021-06-08 (-6d) |  |  |  |
| 20 | Design labeling | 2021-07-08 → 2021-07-02 (-6d) | 2021-07-12 → 2021-07-07 (-5d) |  |  |  |
| 21 | Approve design | 2021-07-12 → 2021-07-07 (-5d) | 2021-07-14 → 2021-07-09 (-5d) |  |  |  |
| 22 | **Engineering** | 2021-07-14 → 2021-07-09 (-5d) | 2021-11-15 → 2021-11-09 (-6d) |  |  |  |
| 23 | Initial engineering specs. | 2021-07-14 → 2021-07-09 (-5d) | 2021-07-19 → 2021-07-13 (-6d) |  |  |  |
| 24 | Design verification activities | 2021-07-27 → 2021-07-21 (-6d) | 2021-07-30 → 2021-07-27 (-3d) |  |  |  |
| 25 | Verification design review | 2021-07-30 → 2021-07-27 (-3d) | 2021-08-03 → 2021-07-29 (-5d) |  |  |  |
| 26 | Release pre-production specifications | 2021-08-03 → 2021-07-29 (-5d) | 2021-08-10 → 2021-08-05 (-5d) |  |  |  |
| 27 | Build functional model | 2021-08-17 → 2021-08-11 (-6d) | 2021-08-30 → 2021-08-24 (-6d) |  |  |  |
| 28 | Design validation activities | 2021-09-21 → 2021-09-15 (-6d) | 2021-09-28 → 2021-09-22 (-6d) |  |  |  |
| 29 | Validation design review | 2021-10-12 → 2021-10-06 (-6d) | 2021-10-14 → 2021-10-08 (-6d) |  |  |  |
| 30 | Approve model design | 2021-10-14 → 2021-10-08 (-6d) | 2021-10-18 → 2021-10-12 (-6d) |  |  |  |
| 31 | Design transfer activities | 2021-10-20 → 2021-10-14 (-6d) | 2021-11-15 → 2021-11-09 (-6d) |  |  |  |
| 32 | **Engineering Quality** | 2021-08-17 → 2021-08-11 (-6d) | 2021-11-18 → 2021-11-12 (-6d) |  |  |  |
| 33 | Evaluate design specifications | 2021-08-17 → 2021-08-11 (-6d) | 2021-08-31 → 2021-08-25 (-6d) |  |  |  |
| 34 | Develop testing protocol for prototype | 2021-09-03 → 2021-08-30 (-4d) | 2021-09-15 → 2021-09-09 (-6d) |  |  |  |
| 35 | Test prototype | 2021-09-21 → 2021-09-15 (-6d) | 2021-10-05 → 2021-09-29 (-6d) |  |  |  |
| 36 | Evaluate results of tests and identify weaknesses | 2021-10-12 → 2021-10-06 (-6d) | 2021-10-20 → 2021-10-14 (-6d) |  |  |  |
| 37 | Product release meetings | 2021-11-15 → 2021-11-09 (-6d) | 2021-11-18 → 2021-11-12 (-6d) |  |  |  |
| 38 | **Manufacturing** | 2021-09-21 → 2021-09-15 (-6d) | 2022-01-07 → 2022-01-03 (-4d) |  |  |  |
| 39 | Process engineering plan | 2021-09-21 → 2021-09-15 (-6d) | 2021-10-12 → 2021-10-06 (-6d) |  |  |  |
| 40 | Develop production plan | 2021-10-20 → 2021-10-14 (-6d) | 2021-10-28 → 2021-10-22 (-6d) |  |  |  |
| 41 | Develop production control plan | 2021-11-18 → 2021-11-12 (-6d) | 2021-12-01 → 2021-11-25 (-6d) |  |  |  |
| 42 | Approve production parts | 2021-12-01 → 2021-11-25 (-6d) | 2021-12-08 → 2021-12-02 (-6d) |  |  |  |
| 43 | Contracting for deliveries | 2021-12-08 → 2021-12-02 (-6d) | 2021-12-20 → 2021-12-14 (-6d) |  |  |  |
| 44 | Submit production purchase order | 2021-12-20 → 2021-12-14 (-6d) | 2021-12-22 → 2021-12-16 (-6d) |  |  |  |
| 45 | Production pilot test | 2021-12-22 → 2021-12-16 (-6d) | 2021-12-29 → 2021-12-23 (-6d) |  |  |  |
| 46 | Debugging production system | 2021-12-29 → 2021-12-23 (-6d) | 2022-01-04 → 2021-12-29 (-6d) |  |  |  |
| 47 | Production release | 2022-01-04 → 2021-12-29 (-6d) | 2022-01-07 → 2022-01-03 (-4d) |  |  |  |
| 48 | **Commercialization** | 2021-05-11 → 2021-05-05 (-6d) | 2022-01-12 → 2022-01-06 (-6d) |  |  |  |
| 49 | Develop preliminary marketing plan | 2021-05-11 → 2021-05-05 (-6d) | 2021-05-13 → 2021-05-10 (-3d) |  |  |  |
| 50 | Develop marketing program | 2021-05-13 → 2021-05-10 (-3d) | 2021-05-25 → 2021-05-19 (-6d) |  |  |  |
| 51 | Train sales team | 2021-05-31 → 2021-05-25 (-6d) | 2021-06-30 → 2021-06-24 (-6d) |  |  |  |
| 52 | Advertising campaign | 2021-05-31 → 2021-05-25 (-6d) | 2021-07-08 → 2021-07-02 (-6d) |  |  |  |
| 53 | Show functional model at trade show | 2021-09-27 → 2021-09-20 (-7d) | 2021-09-29 → 2021-09-23 (-6d) |  |  | 8.01d → 9d |
| 54 | Product launch | 2022-01-07 → 2022-01-03 (-4d) | 2022-01-12 → 2022-01-06 (-6d) |  |  |  |
| 55 | **Project Management** | 2021-03-31 A → 2021-03-31 | 2022-01-03 → 2021-12-28 (-6d) | 197.88d? → 194.12d? | 16% → 0% |  |
| 56 | Project Management Period 1 | 2021-03-31 A → 2021-03-31 | 2021-04-26 A → 2021-04-16 (-10d) | 18.06d? → 12.5d? | 100% → 0% | none → 13d |
| 57 | Project Management Period 2 | 2021-05-11 → 2021-05-05 (-6d) | 2021-05-20 → 2021-05-14 (-6d) |  |  |  |
| 58 | Project Management Period 3 | 2021-05-31 → 2021-05-25 (-6d) | 2021-06-09 → 2021-06-03 (-6d) |  |  |  |
| 59 | Project Management Period 4 | 2021-07-08 → 2021-07-02 (-6d) | 2021-07-27 → 2021-07-21 (-6d) |  |  |  |
| 60 | Project Management Period 5 | 2021-07-27 → 2021-07-21 (-6d) | 2021-08-17 → 2021-08-11 (-6d) |  |  |  |
| 61 | Project Management Period 6 | 2021-08-17 → 2021-08-11 (-6d) | 2021-08-30 → 2021-08-24 (-6d) |  |  |  |
| 62 | Project Management Period 7 | 2021-09-03 → 2021-08-30 (-4d) | 2021-09-20 → 2021-09-14 (-6d) |  |  |  |
| 63 | Project Management Period 8 | 2021-09-21 → 2021-09-15 (-6d) | 2021-09-24 → 2021-09-20 (-4d) |  |  |  |
| 64 | Project Management Period 9 | 2021-10-12 → 2021-10-06 (-6d) | 2021-10-18 → 2021-10-12 (-6d) |  |  |  |
| 65 | Project Management Period 10 | 2021-10-20 → 2021-10-14 (-6d) | 2021-10-27 → 2021-10-21 (-6d) |  |  |  |
| 66 | Project Management Period 11 | 2021-11-18 → 2021-11-12 (-6d) | 2021-12-07 → 2021-12-01 (-6d) |  |  |  |
| 67 | Project Management Period 12 | 2021-12-20 → 2021-12-14 (-6d) | 2022-01-03 → 2021-12-28 (-6d) |  |  |  |
| 68 | **Milestones** | 2021-05-11 → 2021-05-05 (-6d) | 2022-01-12 → 2022-01-06 (-6d) |  |  |  |
| 69 | Milestone 1 | 2021-05-11 → 2021-05-05 (-6d) | 2021-05-11 → 2021-05-05 (-6d) |  |  |  |
| 70 | Milestone 2 | 2021-05-31 → 2021-05-25 (-6d) | 2021-05-31 → 2021-05-25 (-6d) |  |  |  |

| ID | Task | Start | Finish |
| --- | --- | --- | --- |
| 71 | Milestone 3 | 2021-07-08 → 2021-07-02 (-6d) | 2021-07-08 → 2021-07-02 (-6d) |
| 72 | Milestone 4 | 2021-07-27 → 2021-07-21 (-6d) | 2021-07-27 → 2021-07-21 (-6d) |
| 73 | Milestone 5 | 2021-08-17 → 2021-08-11 (-6d) | 2021-08-17 → 2021-08-11 (-6d) |
| 74 | Milestone 6 | 2021-09-03 → 2021-08-30 (-4d) | 2021-09-03 → 2021-08-30 (-4d) |
| 75 | Milestone 7 | 2021-09-21 → 2021-09-15 (-6d) | 2021-09-21 → 2021-09-15 (-6d) |
| 76 | Milestone 8 | 2021-10-12 → 2021-10-06 (-6d) | 2021-10-12 → 2021-10-06 (-6d) |
| 77 | Milestone 9 | 2021-10-20 → 2021-10-14 (-6d) | 2021-10-20 → 2021-10-14 (-6d) |
| 78 | Milestone 10 | 2021-11-18 → 2021-11-12 (-6d) | 2021-11-18 → 2021-11-12 (-6d) |
| 79 | Milestone 11 | 2021-12-20 → 2021-12-14 (-6d) | 2021-12-20 → 2021-12-14 (-6d) |
| 80 | Milestone 12 | 2022-01-12 → 2022-01-06 (-6d) | 2022-01-12 → 2022-01-06 (-6d) |

## Version 8 (data date 2021-06-03, saved 2021-04-19, file phase2Result.mpp)

Note of the change: Assign2 Final

Last finish 2022-01-06 → 2022-01-31 (+25d). Complete tasks 0 → 12.

Changed:

| ID | Task | Start | Finish | Duration | Complete | Total float | Other |
| --- | --- | --- | --- | --- | --- | --- | --- |
| 1 | **Market Assessment** | 2021-03-31 A | 2021-05-05 → 2021-05-11 A (+6d) | 25.5d? → 29.25d | 0% → 100% | 0d → none | baseline finish 2021-05-05 → 2021-06-10 |
| 2 | Evaluate market | 2021-03-31 A | 2021-04-08 A | 6d? → 6.69d | 0% → 100% | 0d → none | baseline finish 2021-04-08 → 2021-04-16 |
| 3 | Develop Business opportunity | 2021-04-08 A | 2021-04-19 → 2021-04-20 A (+1d) | 7d? → 8.06d | 0% → 100% | 0d → none | resources Kurt Zollinger; Yukio Ashida → Yukio Ashida; Kurt Zollinger; baseline start 2021-04-08 → 2021-04-16; baseline finish 2021-04-19 → 2021-05-06 |
| 4 | Customer preference study | 2021-04-19 → 2021-04-20 A (+1d) | 2021-05-03 → 2021-05-06 A (+3d) | 10.5d? → 12.12d | 0% → 100% | 0d → none | resources Kurt Zollinger; Yukio Ashida → Yukio Ashida; Kurt Zollinger; baseline start 2021-04-19 → 2021-05-06; baseline finish 2021-05-03 → 2021-06-04 |
| 5 | Business evaluation (NPV, etc.) | 2021-05-03 → 2021-05-07 A (+4d) | 2021-05-05 → 2021-05-11 A (+6d) | 2d? → 2.38d | 0% → 100% | 0d → none | baseline start 2021-05-03 → 2021-06-04; baseline finish 2021-05-05 → 2021-06-10 |
| 6 | **Procurement** | 2021-08-11 → 2021-09-01 (+21d) | 2021-11-26 → 2021-12-21 (+25d) | 77.12d? → 80d? |  | 0d → 3.5d | baseline start 2021-08-11 → 2021-10-15; baseline finish 2021-11-26 → 2022-02-04 |
| 7 | Identify vendors | 2021-08-11 → 2021-09-01 (+21d) | 2021-08-20 → 2021-09-09 (+20d) |  |  | 5.62d → 11d | resources Operations Specialist → none; baseline start 2021-08-11 → 2021-10-15; baseline finish 2021-08-20 → 2021-10-26 |
| 8 | Develop and Issue RFQ | 2021-08-11 → 2021-09-01 (+21d) | 2021-08-30 → 2021-09-08 (+9d) |  |  | 0d → 12d | resources Operations Specialist → none; baseline start 2021-08-11 → 2021-10-15; baseline finish 2021-08-30 → 2021-10-25 |
| 9 | Issue sample (production equivalent) | 2021-08-30 → 2021-09-27 (+28d) | 2021-09-06 → 2021-10-01 (+25d) |  |  |  | resources Quality Engineer → none; baseline start 2021-08-30 → 2021-11-10; baseline finish 2021-09-06 → 2021-11-17 |
| 10 | Assess RFQ responses and select vendors | 2021-11-12 → 2021-12-08 (+26d) | 2021-11-26 → 2021-12-21 (+25d) |  |  |  | resources Quality Engineer → none; baseline start 2021-11-12 → 2022-01-21; baseline finish 2021-11-26 → 2022-02-04 |
| 11 | **Supplier Quality** | 2021-09-06 → 2021-10-04 (+28d) | 2021-10-28 → 2021-12-07 (+40d) | 38d? → 47d? |  |  | baseline start 2021-09-06 → 2021-11-17; baseline finish 2021-10-28 → 2022-01-21 |
| 12 | Perform supplier process capability | 2021-09-06 → 2021-10-04 (+28d) | 2021-09-15 → 2021-10-21 (+36d) | 7d? → 14d? |  |  | resources Operations Specialist; Tom Bechur → none; baseline start 2021-09-06 → 2021-11-17; baseline finish 2021-09-15 → 2021-12-07 |
| 13 | Approve sample parts | 2021-09-15 → 2021-10-22 (+37d) | 2021-09-27 → 2021-11-02 (+36d) |  |  | 6.62d → 7d | resources Tom Bechur → none; baseline start 2021-09-15 → 2021-12-07; baseline finish 2021-09-27 → 2021-12-17 |
| 14 | Qualify Supplier | 2021-10-14 → 2021-11-24 (+41d) | 2021-10-28 → 2021-12-07 (+40d) |  |  | 11.5d → 0d | resources Quality Engineer → none; baseline start 2021-10-14 → 2022-01-07; baseline finish 2021-10-28 → 2022-01-21 |
| 15 | **Design** | 2021-05-05 → 2021-05-11 A (+6d) | 2021-07-09 → 2021-07-26 (+17d) | 46.5d? → 54.62d? | 0% → 38% |  | baseline start 2021-05-05 → 2021-06-10; baseline finish 2021-07-09 → 2021-09-09 |
| 16 | Design and development plan | 2021-05-05 → 2021-05-11 A (+6d) | 2021-05-10 → 2021-05-17 A (+7d) | 3d? → 3.88d | 0% → 100% | 0d → none | resources Junior Product Designer; Junior Product Designer 2 → Kelly Sauseda; Lance Portier; baseline start 2021-05-05 → 2021-06-10; baseline finish 2021-05-10 → 2021-06-18 |
| 17 | Design specs. | 2021-05-10 → 2021-05-17 A (+7d) | 2021-05-25 → 2021-06-03 A (+9d) | 11d? → 13.75d | 0% → 100% | 0d → none | resources Junior Product Designer; Junior Product Designer 2 → Lance Portier; Kelly Sauseda; baseline start 2021-05-10 → 2021-06-18; baseline finish 2021-05-25 → 2021-07-20 |
| 18 | Identify testing requirements | 2021-05-25 → 2021-06-04 (+10d) | 2021-06-01 → 2021-06-17 (+16d) | 5d? → 10d? |  | 18d → 8d | resources Junior Product Designer; Junior Product Designer 2 → none; baseline start 2021-05-25 → 2021-07-20; baseline finish 2021-06-01 → 2021-08-03 |
| 19 | Risk analysis | 2021-06-01 → 2021-06-18 (+17d) | 2021-06-08 → 2021-07-01 (+23d) | 5d? → 10d? |  | 18d → 8d | resources Junior Product Designer; Junior Product Designer 2 → none; baseline start 2021-06-01 → 2021-08-03; baseline finish 2021-06-08 → 2021-08-17 |
| 20 | Design labeling | 2021-07-02 → 2021-07-14 (+12d) | 2021-07-07 → 2021-07-20 (+13d) | 2.5d? → 5d? |  | 6d → 0d | resources Junior Product Designer; Junior Product Designer 2 → none; baseline start 2021-07-02 → 2021-08-27; baseline finish 2021-07-07 → 2021-09-03 |
| 21 | Approve design | 2021-07-07 → 2021-07-21 (+14d) | 2021-07-09 → 2021-07-26 (+17d) | 2d? → 4d? |  | 6d → 0d | resources Junior Product Designer; Junior Product Designer 2 → none; baseline start 2021-07-07 → 2021-09-03; baseline finish 2021-07-09 → 2021-09-09 |
| 22 | **Engineering** | 2021-07-09 → 2021-07-27 (+18d) | 2021-11-09 → 2021-12-02 (+23d) | 87.62d? → 93d? |  |  | baseline start 2021-07-09 → 2021-09-09; baseline finish 2021-11-09 → 2022-01-18 |
| 23 | Initial engineering specs. | 2021-07-09 → 2021-07-27 (+18d) | 2021-07-13 → 2021-08-02 (+20d) | 2.5d? → 5d? |  | 6d → 0d | resources Tom Bechur; Darryl Sandefur → none; baseline start 2021-07-09 → 2021-09-09; baseline finish 2021-07-13 → 2021-09-16 |
| 24 | Design verification activities | 2021-07-21 → 2021-08-03 (+13d) | 2021-07-27 → 2021-08-11 (+15d) | 3.5d? → 7d? |  | 4.5d → 0d | resources Tom Bechur; Darryl Sandefur → none; baseline start 2021-07-21 → 2021-09-16; baseline finish 2021-07-27 → 2021-09-27 |
| 25 | Verification design review | 2021-07-27 → 2021-08-12 (+16d) | 2021-07-29 → 2021-08-17 (+19d) | 2d? → 4d? |  | 4.5d → 0d | resources Tom Bechur; Darryl Sandefur → none; baseline start 2021-07-27 → 2021-09-27; baseline finish 2021-07-29 → 2021-10-01 |
| 26 | Release pre-production specifications | 2021-07-29 → 2021-08-18 (+20d) | 2021-08-05 → 2021-08-31 (+26d) | 5d? → 10d? |  | 4.5d → 0d | resources Tom Bechur; Darryl Sandefur → none; baseline start 2021-07-29 → 2021-10-01; baseline finish 2021-08-05 → 2021-10-15 |
| 27 | Build functional model | 2021-08-11 → 2021-09-01 (+21d) | 2021-08-24 → 2021-09-24 (+31d) | 9d? → 18d? |  | 3.62d → 0d | resources Tom Bechur; Darryl Sandefur → none; baseline start 2021-08-11 → 2021-10-15; baseline finish 2021-08-24 → 2021-11-10 |
| 28 | Design validation activities | 2021-09-15 → 2021-10-22 (+37d) | 2021-09-22 → 2021-10-28 (+36d) |  |  |  | resources Darryl Sandefur → none; baseline start 2021-09-15 → 2021-12-07; baseline finish 2021-09-22 → 2021-12-14 |
| 29 | Validation design review | 2021-10-06 → 2021-11-12 (+37d) | 2021-10-08 → 2021-11-17 (+40d) | 2d? → 4d? |  | 2d → 0d | resources Tom Bechur; Darryl Sandefur → none; baseline start 2021-10-06 → 2021-12-28; baseline finish 2021-10-08 → 2022-01-03 |
| 30 | Approve model design | 2021-10-08 → 2021-11-18 (+41d) | 2021-10-12 → 2021-11-23 (+42d) | 2d? → 4d? |  | 2d → 0d | resources Tom Bechur; Darryl Sandefur → none; baseline start 2021-10-08 → 2022-01-03; baseline finish 2021-10-12 → 2022-01-07 |
| 31 | Design transfer activities | 2021-10-14 → 2021-11-24 (+41d) | 2021-11-09 → 2021-12-02 (+23d) | 18.5d? → 7d? |  |  | resources Tom Bechur; Darryl Sandefur → none; baseline start 2021-10-14 → 2022-01-07; baseline finish 2021-11-09 → 2022-01-18 |
| 32 | **Engineering Quality** | 2021-08-11 → 2021-09-01 (+21d) | 2021-11-12 → 2021-12-07 (+25d) | 67.12d? → 70d? |  |  | baseline start 2021-08-11 → 2021-10-15; baseline finish 2021-11-12 → 2022-01-21 |
| 33 | Evaluate design specifications | 2021-08-11 → 2021-09-01 (+21d) | 2021-08-25 → 2021-09-14 (+20d) |  |  | 2.62d → 8d | resources Quality Engineer → none; baseline start 2021-08-11 → 2021-10-15; baseline finish 2021-08-25 → 2021-10-29 |
| 34 | Develop testing protocol for prototype | 2021-08-30 → 2021-09-27 (+28d) | 2021-09-09 → 2021-10-06 (+27d) |  |  | 4d → 11d | resources Darryl Sandefur → none; baseline start 2021-08-30 → 2021-11-10; baseline finish 2021-09-09 → 2021-11-22 |
| 35 | Test prototype | 2021-09-15 → 2021-10-22 (+37d) | 2021-09-29 → 2021-11-04 (+36d) |  |  |  | resources Quality Engineer → none; baseline start 2021-09-15 → 2021-12-07; baseline finish 2021-09-29 → 2021-12-21 |
| 36 | Evaluate results of tests and identify weaknesses | 2021-10-06 → 2021-11-12 (+37d) | 2021-10-14 → 2021-11-19 (+36d) |  |  | 0d → 2d | resources Quality Engineer → none; baseline start 2021-10-06 → 2021-12-28; baseline finish 2021-10-14 → 2022-01-05 |
| 37 | Product release meetings | 2021-11-09 → 2021-12-03 (+24d) | 2021-11-12 → 2021-12-07 (+25d) |  |  |  | resources Yukio Ashida → none; baseline start 2021-11-09 → 2022-01-18; baseline finish 2021-11-12 → 2022-01-21 |
| 38 | **Manufacturing** | 2021-09-15 → 2021-10-22 (+37d) | 2022-01-03 → 2022-01-26 (+23d) | 78d? → 68.5d? |  |  | baseline start 2021-09-15 → 2021-12-07; baseline finish 2022-01-03 → 2022-03-11 |
| 39 | Process engineering plan | 2021-09-15 → 2021-10-22 (+37d) | 2021-10-06 → 2021-11-11 (+36d) |  |  |  | resources Operations Specialist → none; baseline start 2021-09-15 → 2021-12-07; baseline finish 2021-10-06 → 2021-12-28 |
| 40 | Develop production plan | 2021-10-14 → 2021-11-24 (+41d) | 2021-10-22 → 2021-12-01 (+40d) |  |  | 15.5d → 4d | resources Operations Specialist → none; baseline start 2021-10-14 → 2022-01-07; baseline finish 2021-10-22 → 2022-01-17 |
| 41 | Develop production control plan | 2021-11-12 → 2021-12-08 (+26d) | 2021-11-25 → 2021-12-20 (+25d) |  |  |  | resources Operations Specialist → none; baseline start 2021-11-12 → 2022-01-21; baseline finish 2021-11-25 → 2022-02-02 |
| 42 | Approve production parts | 2021-11-25 → 2021-12-20 (+25d) | 2021-12-02 → 2021-12-27 (+25d) |  |  |  | resources Operations Specialist → none; baseline start 2021-11-25 → 2022-02-02; baseline finish 2021-12-02 → 2022-02-09 |
| 43 | Contracting for deliveries | 2021-12-02 → 2021-12-27 (+25d) | 2021-12-14 → 2022-01-06 (+23d) |  |  |  | resources Operations Specialist → none; baseline start 2021-12-02 → 2022-02-09; baseline finish 2021-12-14 → 2022-02-21 |
| 44 | Submit production purchase order | 2021-12-14 → 2022-01-06 (+23d) | 2021-12-16 → 2022-01-10 (+25d) |  |  |  | resources Operations Specialist → none; baseline start 2021-12-14 → 2022-02-21; baseline finish 2021-12-16 → 2022-02-23 |
| 45 | Production pilot test | 2021-12-16 → 2022-01-10 (+25d) | 2021-12-23 → 2022-01-17 (+25d) |  |  |  | resources Operations Specialist → none; baseline start 2021-12-16 → 2022-02-23; baseline finish 2021-12-23 → 2022-03-02 |
| 46 | Debugging production system | 2021-12-23 → 2022-01-17 (+25d) | 2021-12-29 → 2022-01-21 (+23d) |  |  |  | resources Operations Specialist → none; baseline start 2021-12-23 → 2022-03-02; baseline finish 2021-12-29 → 2022-03-08 |
| 47 | Production release | 2021-12-29 → 2022-01-21 (+23d) | 2022-01-03 → 2022-01-26 (+23d) |  |  |  | resources Operations Specialist → none; baseline start 2021-12-29 → 2022-03-08; baseline finish 2022-01-03 → 2022-03-11 |
| 48 | **Commercialization** | 2021-05-05 → 2021-05-11 A (+6d) | 2022-01-06 → 2022-01-31 (+25d) | 175.62d? → 189.12d? | 0% → 17% |  | baseline start 2021-05-05 → 2021-06-10; baseline finish 2022-01-06 → 2022-03-16 |
| 49 | Develop preliminary marketing plan | 2021-05-05 → 2021-05-11 A (+6d) | 2021-05-10 → 2021-05-14 A (+4d) | 2.5d? → 2.81d | 0% → 100% | 4d → none | resources Kurt Zollinger; Yukio Ashida → Yukio Ashida; Kurt Zollinger; baseline start 2021-05-05 → 2021-06-10; baseline finish 2021-05-10 → 2021-06-17 |
| 50 | Develop marketing program | 2021-05-10 → 2021-05-14 A (+4d) | 2021-05-19 → 2021-05-26 A (+7d) | 7.5d? → 8.44d | 0% → 100% | 4d → none | baseline start 2021-05-10 → 2021-06-17; baseline finish 2021-05-19 → 2021-07-08 |
| 51 | Train sales team | 2021-05-25 → 2021-06-04 (+10d) | 2021-06-24 → 2021-07-05 (+11d) |  |  |  | resources Kurt Zollinger → none; baseline start 2021-05-25 → 2021-07-20; baseline finish 2021-06-24 → 2021-08-19 |
| 52 | Advertising campaign | 2021-05-25 → 2021-06-04 (+10d) | 2021-07-02 → 2021-07-13 (+11d) |  |  |  | resources Yukio Ashida → none; baseline start 2021-05-25 → 2021-07-20; baseline finish 2021-07-02 → 2021-08-27 |
| 53 | Show functional model at trade show | 2021-09-20 → 2021-10-22 (+32d) | 2021-09-23 → 2021-10-26 (+33d) |  |  | 9d → 12d | resources Yukio Ashida → none; baseline start 2021-09-20 → 2021-12-07; baseline finish 2021-09-23 → 2021-12-10 |
| 54 | Product launch | 2022-01-03 → 2022-01-26 (+23d) | 2022-01-06 → 2022-01-31 (+25d) |  |  |  | resources Kurt Zollinger → none; baseline start 2022-01-03 → 2022-03-11; baseline finish 2022-01-06 → 2022-03-16 |
| 55 | **Project Management** | 2021-03-31 A | 2021-12-28 → 2022-01-20 (+23d) | 194.12d? → 211.38d? | 0% → 22% |  | baseline finish 2021-12-28 → 2022-03-07 |
| 56 | Project Management Period 1 | 2021-03-31 A | 2021-04-16 → 2021-04-26 A (+10d) | 12.5d? → 18.06d | 0% → 100% | 13d → none | resources Tom Bechur; Darryl Sandefur → Tom Becher; Darryl Sandefur; baseline finish 2021-04-16 → 2021-05-05 |
| 57 | Project Management Period 2 | 2021-05-05 → 2021-05-11 A (+6d) | 2021-05-14 → 2021-05-25 A (+11d) | 7d? → 10.06d | 0% → 100% | 7d → none | resources Tom Bechur; Darryl Sandefur → Tom Becher; Darryl Sandefur; baseline start 2021-05-05 → 2021-06-10; baseline finish 2021-05-14 → 2021-06-30 |
| 58 | Project Management Period 3 | 2021-05-25 → 2021-06-04 (+10d) | 2021-06-03 → 2021-06-23 (+20d) | 7d? → 14d? |  | 21d → 14d | resources Tom Bechur; Darryl Sandefur → none; baseline start 2021-05-25 → 2021-07-20; baseline finish 2021-06-03 → 2021-08-09 |
| 59 | Project Management Period 4 | 2021-07-02 → 2021-07-14 (+12d) | 2021-07-21 → 2021-07-30 (+9d) |  |  | 0d → 1d | resources Yukio Ashida → none; baseline start 2021-07-02 → 2021-08-27; baseline finish 2021-07-21 → 2021-09-15 |
| 60 | Project Management Period 5 | 2021-07-21 → 2021-08-03 (+13d) | 2021-08-11 → 2021-08-23 (+12d) |  |  | 0d → 6d | resources Yukio Ashida → none; baseline start 2021-07-21 → 2021-09-16; baseline finish 2021-08-11 → 2021-10-07 |
| 61 | Project Management Period 6 | 2021-08-11 → 2021-09-01 (+21d) | 2021-08-24 → 2021-09-13 (+20d) |  |  | 3.62d → 9d | resources Yukio Ashida → none; baseline start 2021-08-11 → 2021-10-15; baseline finish 2021-08-24 → 2021-10-28 |
| 62 | Project Management Period 7 | 2021-08-30 → 2021-09-27 (+28d) | 2021-09-14 → 2021-10-11 (+27d) |  |  | 1d → 8d | resources Yukio Ashida → none; baseline start 2021-08-30 → 2021-11-10; baseline finish 2021-09-14 → 2021-11-25 |
| 63 | Project Management Period 8 | 2021-09-15 → 2021-10-22 (+37d) | 2021-09-20 → 2021-10-26 (+36d) |  |  |  | resources Yukio Ashida → none; baseline start 2021-09-15 → 2021-12-07; baseline finish 2021-09-20 → 2021-12-10 |
| 64 | Project Management Period 9 | 2021-10-06 → 2021-11-12 (+37d) | 2021-10-12 → 2021-11-17 (+36d) |  |  | 2d → 4d | resources Yukio Ashida → none; baseline start 2021-10-06 → 2021-12-28; baseline finish 2021-10-12 → 2022-01-03 |
| 65 | Project Management Period 10 | 2021-10-14 → 2021-11-24 (+41d) | 2021-10-21 → 2021-11-30 (+40d) |  |  | 16.5d → 5d | resources Yukio Ashida → none; baseline start 2021-10-14 → 2022-01-07; baseline finish 2021-10-21 → 2022-01-14 |
| 66 | Project Management Period 11 | 2021-11-12 → 2021-12-08 (+26d) | 2021-12-01 → 2021-12-24 (+23d) |  |  |  | resources Darryl Sandefur → none; baseline start 2021-11-12 → 2022-01-21; baseline finish 2021-12-01 → 2022-02-09 |
| 67 | Project Management Period 12 | 2021-12-14 → 2022-01-06 (+23d) | 2021-12-28 → 2022-01-20 (+23d) |  |  |  | resources Darryl Sandefur → none; baseline start 2021-12-14 → 2022-02-21; baseline finish 2021-12-28 → 2022-03-07 |
| 68 | **Milestones** | 2021-05-05 → 2021-05-11 A (+6d) | 2022-01-06 → 2022-01-31 (+25d) | 175.62d? → 189.12d? |  |  | baseline start 2021-05-05 → 2021-06-10; baseline finish 2022-01-06 → 2022-03-16 |
| 69 | Milestone 1 | 2021-05-05 → 2021-05-11 A (+6d) | 2021-05-05 → 2021-05-11 A (+6d) | 0d? → 0d | 0% → 100% | 0d → none | resources none → Period 1 Training Costs; Period 1 Managerial Action Costs; Period 1 Unallocated Resource Costs; baseline start 2021-05-05 → 2021-06-10; baseline finish 2021-05-05 → 2021-06-10 |
| 70 | Milestone 2 | 2021-05-25 → 2021-06-03 A (+9d) | 2021-05-25 → 2021-06-03 A (+9d) | 0d? → 0d | 0% → 100% | 0d → none | resources none → Period 2 Training Costs; Period 2 Managerial Action Costs; Period 2 Unallocated Resource Costs; baseline start 2021-05-25 → 2021-07-20; baseline finish 2021-05-25 → 2021-07-20 |

| ID | Task | Start | Finish | Other |
| --- | --- | --- | --- | --- |
| 71 | Milestone 3 | 2021-07-02 → 2021-07-13 (+11d) | 2021-07-02 → 2021-07-13 (+11d) | baseline start 2021-07-02 → 2021-08-27; baseline finish 2021-07-02 → 2021-08-27 |
| 72 | Milestone 4 | 2021-07-21 → 2021-08-02 (+12d) | 2021-07-21 → 2021-08-02 (+12d) | baseline start 2021-07-21 → 2021-09-16; baseline finish 2021-07-21 → 2021-09-16 |
| 73 | Milestone 5 | 2021-08-11 → 2021-08-31 (+20d) | 2021-08-11 → 2021-08-31 (+20d) | baseline start 2021-08-11 → 2021-10-15; baseline finish 2021-08-11 → 2021-10-15 |
| 74 | Milestone 6 | 2021-08-30 → 2021-09-24 (+25d) | 2021-08-30 → 2021-09-24 (+25d) | baseline start 2021-08-30 → 2021-11-10; baseline finish 2021-08-30 → 2021-11-10 |
| 75 | Milestone 7 | 2021-09-15 → 2021-10-21 (+36d) | 2021-09-15 → 2021-10-21 (+36d) | baseline start 2021-09-15 → 2021-12-07; baseline finish 2021-09-15 → 2021-12-07 |
| 76 | Milestone 8 | 2021-10-06 → 2021-11-11 (+36d) | 2021-10-06 → 2021-11-11 (+36d) | baseline start 2021-10-06 → 2021-12-28; baseline finish 2021-10-06 → 2021-12-28 |
| 77 | Milestone 9 | 2021-10-14 → 2021-11-23 (+40d) | 2021-10-14 → 2021-11-23 (+40d) | baseline start 2021-10-14 → 2022-01-07; baseline finish 2021-10-14 → 2022-01-07 |
| 78 | Milestone 10 | 2021-11-12 → 2021-12-07 (+25d) | 2021-11-12 → 2021-12-07 (+25d) | baseline start 2021-11-12 → 2022-01-21; baseline finish 2021-11-12 → 2022-01-21 |
| 79 | Milestone 11 | 2021-12-14 → 2022-01-06 (+23d) | 2021-12-14 → 2022-01-06 (+23d) | baseline start 2021-12-14 → 2022-02-21; baseline finish 2021-12-14 → 2022-02-21 |
| 80 | Milestone 12 | 2022-01-06 → 2022-01-31 (+25d) | 2022-01-06 → 2022-01-31 (+25d) | baseline start 2022-01-06 → 2022-03-16; baseline finish 2022-01-06 → 2022-03-16 |

## Version 9 (data date 2021-08-06, saved 2021-04-21, file phase3Result.mpp)

Last finish 2022-01-31 → 2022-02-04 (+4d). Complete tasks 12 → 23.

Changed:

| ID | Task | Start | Finish | Duration | Complete | Total float | Other |
| --- | --- | --- | --- | --- | --- | --- | --- |
| 6 | **Procurement** | 2021-09-01 → 2021-09-07 (+6d) | 2021-12-21 → 2021-12-27 (+6d) |  |  |  |  |
| 7 | Identify vendors | 2021-09-01 → 2021-09-07 (+6d) | 2021-09-09 → 2021-09-15 (+6d) |  |  |  |  |
| 8 | Develop and Issue RFQ | 2021-09-01 → 2021-09-07 (+6d) | 2021-09-08 → 2021-09-14 (+6d) |  |  |  |  |
| 9 | Issue sample (production equivalent) | 2021-09-27 → 2021-10-01 (+4d) | 2021-10-01 → 2021-10-07 (+6d) |  |  |  |  |
| 10 | Assess RFQ responses and select vendors | 2021-12-08 → 2021-12-14 (+6d) | 2021-12-21 → 2021-12-27 (+6d) |  |  |  |  |
| 11 | **Supplier Quality** | 2021-10-04 → 2021-10-08 (+4d) | 2021-12-07 → 2021-12-13 (+6d) |  |  |  |  |
| 12 | Perform supplier process capability | 2021-10-04 → 2021-10-08 (+4d) | 2021-10-21 → 2021-10-27 (+6d) |  |  |  |  |
| 13 | Approve sample parts | 2021-10-22 → 2021-10-28 (+6d) | 2021-11-02 → 2021-11-08 (+6d) |  |  |  |  |
| 14 | Qualify Supplier | 2021-11-24 → 2021-11-30 (+6d) | 2021-12-07 → 2021-12-13 (+6d) |  |  |  |  |
| 15 | **Design** |  | 2021-07-26 → 2021-07-27 A (+1d) | 54.62d? → 54.88d | 38% → 100% | 0d → none |  |
| 18 | Identify testing requirements | 2021-06-04 A | 2021-06-17 → 2021-06-14 A (-3d) | 10d? → 6.25d | 0% → 100% | 8d → none | resources none → Kelly Sauseda; Lance Portier |
| 19 | Risk analysis | 2021-06-18 → 2021-06-14 A (-4d) | 2021-07-01 → 2021-06-23 A (-8d) | 10d? → 7.06d | 0% → 100% | 8d → none | resources none → Kelly Sauseda; Lance Portier |
| 20 | Design labeling | 2021-07-14 → 2021-07-19 A (+5d) | 2021-07-20 → 2021-07-22 A (+2d) | 5d? → 3.25d | 0% → 100% | 0d → none | resources none → Lance Portier; Kelly Sauseda |
| 21 | Approve design | 2021-07-21 → 2021-07-22 A (+1d) | 2021-07-26 → 2021-07-27 A (+1d) | 4d? → 2.62d | 0% → 100% | 0d → none | resources none → Lance Portier; Kelly Sauseda |
| 22 | **Engineering** | 2021-07-27 A | 2021-12-02 → 2021-12-08 (+6d) | 93d? → 96.75d? | 0% → 5% |  |  |
| 23 | Initial engineering specs. | 2021-07-27 A | 2021-08-02 → 2021-07-30 A (-3d) | 5d? → 2.88d | 0% → 100% | 0d → none | resources none → Tom Becher; Darryl Sandefur |
| 24 | Design verification activities | 2021-08-03 → 2021-08-09 (+6d) | 2021-08-11 → 2021-08-17 (+6d) |  |  |  |  |
| 25 | Verification design review | 2021-08-12 → 2021-08-18 (+6d) | 2021-08-17 → 2021-08-23 (+6d) |  |  |  |  |
| 26 | Release pre-production specifications | 2021-08-18 → 2021-08-24 (+6d) | 2021-08-31 → 2021-09-06 (+6d) |  |  |  |  |
| 27 | Build functional model | 2021-09-01 → 2021-09-07 (+6d) | 2021-09-24 → 2021-09-30 (+6d) |  |  |  |  |
| 28 | Design validation activities | 2021-10-22 → 2021-10-28 (+6d) | 2021-10-28 → 2021-11-03 (+6d) |  |  |  |  |
| 29 | Validation design review | 2021-11-12 → 2021-11-18 (+6d) | 2021-11-17 → 2021-11-23 (+6d) |  |  |  |  |
| 30 | Approve model design | 2021-11-18 → 2021-11-24 (+6d) | 2021-11-23 → 2021-11-29 (+6d) |  |  |  |  |
| 31 | Design transfer activities | 2021-11-24 → 2021-11-30 (+6d) | 2021-12-02 → 2021-12-08 (+6d) |  |  |  |  |
| 32 | **Engineering Quality** | 2021-09-01 → 2021-09-07 (+6d) | 2021-12-07 → 2021-12-13 (+6d) |  |  |  |  |
| 33 | Evaluate design specifications | 2021-09-01 → 2021-09-07 (+6d) | 2021-09-14 → 2021-09-20 (+6d) |  |  |  |  |
| 34 | Develop testing protocol for prototype | 2021-09-27 → 2021-10-01 (+4d) | 2021-10-06 → 2021-10-12 (+6d) |  |  |  |  |
| 35 | Test prototype | 2021-10-22 → 2021-10-28 (+6d) | 2021-11-04 → 2021-11-10 (+6d) |  |  |  |  |
| 36 | Evaluate results of tests and identify weaknesses | 2021-11-12 → 2021-11-18 (+6d) | 2021-11-19 → 2021-11-25 (+6d) |  |  |  |  |
| 37 | Product release meetings | 2021-12-03 → 2021-12-09 (+6d) | 2021-12-07 → 2021-12-13 (+6d) |  |  |  |  |
| 38 | **Manufacturing** | 2021-10-22 → 2021-10-28 (+6d) | 2022-01-26 → 2022-02-01 (+6d) |  |  |  |  |
| 39 | Process engineering plan | 2021-10-22 → 2021-10-28 (+6d) | 2021-11-11 → 2021-11-17 (+6d) |  |  |  |  |
| 40 | Develop production plan | 2021-11-24 → 2021-11-30 (+6d) | 2021-12-01 → 2021-12-07 (+6d) |  |  |  |  |
| 41 | Develop production control plan | 2021-12-08 → 2021-12-14 (+6d) | 2021-12-20 → 2021-12-24 (+4d) |  |  |  |  |
| 42 | Approve production parts | 2021-12-20 → 2021-12-24 (+4d) | 2021-12-27 → 2021-12-31 (+4d) |  |  |  |  |
| 43 | Contracting for deliveries | 2021-12-27 → 2021-12-31 (+4d) | 2022-01-06 → 2022-01-12 (+6d) |  |  |  |  |
| 44 | Submit production purchase order | 2022-01-06 → 2022-01-12 (+6d) | 2022-01-10 → 2022-01-14 (+4d) |  |  |  |  |
| 45 | Production pilot test | 2022-01-10 → 2022-01-14 (+4d) | 2022-01-17 → 2022-01-21 (+4d) |  |  |  |  |
| 46 | Debugging production system | 2022-01-17 → 2022-01-21 (+4d) | 2022-01-21 → 2022-01-27 (+6d) |  |  |  |  |
| 47 | Production release | 2022-01-21 → 2022-01-27 (+6d) | 2022-01-26 → 2022-02-01 (+6d) |  |  |  |  |
| 48 | **Commercialization** |  | 2022-01-31 → 2022-02-04 (+4d) | 189.12d? → 193.12d? | 17% → 92% |  |  |
| 51 | Train sales team | 2021-06-04 A | 2021-07-05 → 2021-07-08 A (+3d) | 22d? → 24.88d | 0% → 100% | 6d → none | resources none → Kurt Zollinger |
| 52 | Advertising campaign | 2021-06-04 A | 2021-07-13 → 2021-07-19 A (+6d) | 28d? → 31.38d | 0% → 100% | 0d → none | resources none → Yukio Ashida |
| 53 | Show functional model at trade show | 2021-10-22 → 2021-10-28 (+6d) | 2021-10-26 → 2021-11-01 (+6d) |  |  |  |  |
| 54 | Product launch | 2022-01-26 → 2022-02-01 (+6d) | 2022-01-31 → 2022-02-04 (+4d) |  |  |  |  |
| 55 | **Project Management** |  | 2022-01-20 → 2022-01-26 (+6d) | 211.38d? → 215.38d? | 22% → 43% |  |  |
| 58 | Project Management Period 3 | 2021-06-04 A | 2021-06-23 → 2021-06-18 A (-5d) | 14d? → 10.12d | 0% → 100% | 14d → none | resources none → Tom Becher; Darryl Sandefur |
| 59 | Project Management Period 4 | 2021-07-14 → 2021-07-19 A (+5d) | 2021-07-30 → 2021-08-06 A (+7d) | 13d? → 14.62d | 0% → 100% | 1d → none | resources none → Yukio Ashida |
| 60 | Project Management Period 5 | 2021-08-03 → 2021-08-09 (+6d) | 2021-08-23 → 2021-08-27 (+4d) |  |  |  |  |
| 61 | Project Management Period 6 | 2021-09-01 → 2021-09-07 (+6d) | 2021-09-13 → 2021-09-17 (+4d) |  |  |  |  |
| 62 | Project Management Period 7 | 2021-09-27 → 2021-10-01 (+4d) | 2021-10-11 → 2021-10-15 (+4d) |  |  |  |  |
| 63 | Project Management Period 8 | 2021-10-22 → 2021-10-28 (+6d) | 2021-10-26 → 2021-11-01 (+6d) |  |  |  |  |
| 64 | Project Management Period 9 | 2021-11-12 → 2021-11-18 (+6d) | 2021-11-17 → 2021-11-23 (+6d) |  |  |  |  |
| 65 | Project Management Period 10 | 2021-11-24 → 2021-11-30 (+6d) | 2021-11-30 → 2021-12-06 (+6d) |  |  |  |  |
| 66 | Project Management Period 11 | 2021-12-08 → 2021-12-14 (+6d) | 2021-12-24 → 2021-12-30 (+6d) |  |  |  |  |
| 67 | Project Management Period 12 | 2022-01-06 → 2022-01-12 (+6d) | 2022-01-20 → 2022-01-26 (+6d) |  |  |  |  |
| 68 | **Milestones** |  | 2022-01-31 → 2022-02-04 (+4d) | 189.12d? → 193.12d? |  |  |  |
| 71 | Milestone 3 | 2021-07-13 → 2021-07-19 A (+6d) | 2021-07-13 → 2021-07-19 A (+6d) | 0d? → 0d | 0% → 100% | 0d → none | resources none → Period 3 Training Costs; Period 3 Managerial Action Costs; Period 3 Unallocated Resource Costs |
| 72 | Milestone 4 | 2021-08-02 → 2021-08-06 A (+4d) | 2021-08-02 → 2021-08-06 A (+4d) | 0d? → 0d | 0% → 100% | 0d → none | resources none → Period 4 Training Costs; Period 4 Managerial Action Costs; Period 4 Unallocated Resource Costs |
| 73 | Milestone 5 | 2021-08-31 → 2021-09-06 (+6d) | 2021-08-31 → 2021-09-06 (+6d) |  |  |  |  |
| 74 | Milestone 6 | 2021-09-24 → 2021-09-30 (+6d) | 2021-09-24 → 2021-09-30 (+6d) |  |  |  |  |
| 75 | Milestone 7 | 2021-10-21 → 2021-10-27 (+6d) | 2021-10-21 → 2021-10-27 (+6d) |  |  |  |  |
| 76 | Milestone 8 | 2021-11-11 → 2021-11-17 (+6d) | 2021-11-11 → 2021-11-17 (+6d) |  |  |  |  |
| 77 | Milestone 9 | 2021-11-23 → 2021-11-29 (+6d) | 2021-11-23 → 2021-11-29 (+6d) |  |  |  |  |
| 78 | Milestone 10 | 2021-12-07 → 2021-12-13 (+6d) | 2021-12-07 → 2021-12-13 (+6d) |  |  |  |  |
| 79 | Milestone 11 | 2022-01-06 → 2022-01-12 (+6d) | 2022-01-06 → 2022-01-12 (+6d) |  |  |  |  |
| 80 | Milestone 12 | 2022-01-31 → 2022-02-04 (+4d) | 2022-01-31 → 2022-02-04 (+4d) |  |  |  |  |

## Version 10 (data date 2021-10-26, saved 2021-05-12, file phase7Result.mpp)

Last finish 2022-02-04 → 2022-02-02 (-2d). Complete tasks 23 → 39.

Changed:

| ID | Task | Start | Finish | Duration | Complete | Total float | Other |
| --- | --- | --- | --- | --- | --- | --- | --- |
| 6 | **Procurement** | 2021-09-07 → 2021-09-01 A (-6d) | 2021-12-27 → 2021-12-24 (-3d) | 80d? → 82.5d? | 0% → 61% |  |  |
| 7 | Identify vendors | 2021-09-07 → 2021-09-01 A (-6d) | 2021-09-15 → 2021-09-07 A (-8d) | 7d? → 4.5d | 0% → 100% | 11d → none | resources none → George Olmos; Norman Micheals |
| 8 | Develop and Issue RFQ | 2021-09-07 A | 2021-09-14 → 2021-09-13 A (-1d) | 6d? → 3.88d | 0% → 100% | 12d → none | resources none → George Olmos; Norman Micheals |
| 9 | Issue sample (production equivalent) | 2021-10-01 → 2021-09-21 A (-10d) | 2021-10-07 → 2021-10-01 A (-6d) | 5d? → 7.5d | 0% → 100% | 0d → none | resources none → Jovanna Soto |
| 10 | Assess RFQ responses and select vendors | 2021-12-14 → 2021-12-10 (-4d) | 2021-12-27 → 2021-12-24 (-3d) |  |  |  |  |
| 11 | **Supplier Quality** | 2021-10-08 → 2021-10-01 A (-7d) | 2021-12-13 → 2021-12-10 (-3d) | 47d? → 50.12d? | 0% → 49% |  |  |
| 12 | Perform supplier process capability | 2021-10-08 → 2021-10-01 A (-7d) | 2021-10-27 → 2021-10-26 A (-1d) | 14d? → 17.12d | 0% → 100% | 0d → none | resources none → Tom Becher |
| 13 | Approve sample parts | 2021-10-28 → 2021-10-26 (-2d) | 2021-11-08 → 2021-11-05 (-3d) |  |  |  |  |
| 14 | Qualify Supplier | 2021-11-30 → 2021-11-26 (-4d) | 2021-12-13 → 2021-12-10 (-3d) |  |  |  |  |
| 22 | **Engineering** |  | 2021-12-08 → 2021-12-07 (-1d) | 96.75d? → 95.25d? | 5% → 57% |  |  |
| 24 | Design verification activities | 2021-08-09 A | 2021-08-17 → 2021-08-13 A (-4d) | 7d? → 4.19d | 0% → 100% | 0d → none | resources none → Tom Becher; Darryl Sandefur |
| 25 | Verification design review | 2021-08-18 → 2021-08-13 A (-5d) | 2021-08-23 → 2021-08-17 A (-6d) | 4d? → 2.31d | 0% → 100% | 0d → none | resources none → Tom Becher; Darryl Sandefur |
| 26 | Release pre-production specifications | 2021-08-24 → 2021-08-17 A (-7d) | 2021-09-06 → 2021-08-25 A (-12d) | 10d? → 6d | 0% → 100% | 0d → none | resources none → Tom Becher; Darryl Sandefur |
| 27 | Build functional model | 2021-09-07 → 2021-09-01 A (-6d) | 2021-09-30 → 2021-09-16 A (-14d) | 18d? → 11.25d | 0% → 100% | 0d → none | resources none → Tom Becher; Darryl Sandefur |
| 28 | Design validation activities | 2021-10-28 → 2021-10-26 (-2d) | 2021-11-03 → 2021-11-02 (-1d) |  |  |  |  |
| 29 | Validation design review | 2021-11-18 → 2021-11-16 (-2d) | 2021-11-23 → 2021-11-22 (-1d) |  |  |  |  |
| 30 | Approve model design | 2021-11-24 → 2021-11-22 (-2d) | 2021-11-29 → 2021-11-26 (-3d) |  |  |  |  |
| 31 | Design transfer activities | 2021-11-30 → 2021-11-26 (-4d) | 2021-12-08 → 2021-12-07 (-1d) |  |  |  |  |
| 32 | **Engineering Quality** | 2021-09-07 → 2021-09-01 A (-6d) | 2021-12-13 → 2021-12-10 (-3d) | 70d? → 72.5d? | 0% → 57% |  |  |
| 33 | Evaluate design specifications | 2021-09-07 → 2021-09-01 A (-6d) | 2021-09-20 → 2021-09-21 A (+1d) | 10d? → 14.88d | 0% → 100% | 8d → none | resources none → Jovanna Soto |
| 34 | Develop testing protocol for prototype | 2021-10-01 → 2021-09-21 A (-10d) | 2021-10-12 → 2021-10-06 A (-6d) | 8d? → 10.25d | 0% → 100% | 11d → none | resources none → Darryl Sandefur |
| 35 | Test prototype | 2021-10-28 → 2021-10-26 (-2d) | 2021-11-10 → 2021-11-09 (-1d) |  |  |  |  |
| 36 | Evaluate results of tests and identify weaknesses | 2021-11-18 → 2021-11-16 (-2d) | 2021-11-25 → 2021-11-24 (-1d) |  |  |  |  |
| 37 | Product release meetings | 2021-12-09 → 2021-12-07 (-2d) | 2021-12-13 → 2021-12-10 (-3d) |  |  |  |  |
| 38 | **Manufacturing** | 2021-10-28 → 2021-10-26 (-2d) | 2022-02-01 → 2022-01-28 (-4d) |  |  |  |  |
| 39 | Process engineering plan | 2021-10-28 → 2021-10-26 (-2d) | 2021-11-17 → 2021-11-16 (-1d) |  |  |  |  |
| 40 | Develop production plan | 2021-11-30 → 2021-11-26 (-4d) | 2021-12-07 → 2021-12-06 (-1d) |  |  |  |  |
| 41 | Develop production control plan | 2021-12-14 → 2021-12-10 (-4d) | 2021-12-24 → 2021-12-22 (-2d) |  |  |  |  |
| 42 | Approve production parts | 2021-12-24 → 2021-12-23 (-1d) | 2021-12-31 → 2021-12-29 (-2d) |  |  |  |  |
| 43 | Contracting for deliveries | 2021-12-31 → 2021-12-30 (-1d) | 2022-01-12 → 2022-01-10 (-2d) |  |  |  |  |
| 44 | Submit production purchase order | 2022-01-12 → 2022-01-11 (-1d) | 2022-01-14 → 2022-01-12 (-2d) |  |  |  |  |
| 45 | Production pilot test | 2022-01-14 → 2022-01-13 (-1d) | 2022-01-21 → 2022-01-19 (-2d) |  |  |  |  |
| 46 | Debugging production system | 2022-01-21 → 2022-01-20 (-1d) | 2022-01-27 → 2022-01-25 (-2d) |  |  |  |  |
| 47 | Production release | 2022-01-27 → 2022-01-26 (-1d) | 2022-02-01 → 2022-01-28 (-4d) |  |  |  |  |
| 48 | **Commercialization** |  | 2022-02-04 → 2022-02-02 (-2d) | 193.12d? → 191.62d? |  |  |  |
| 53 | Show functional model at trade show | 2021-10-28 → 2021-10-26 (-2d) | 2021-11-01 → 2021-10-29 (-3d) |  |  |  |  |
| 54 | Product launch | 2022-02-01 → 2022-01-31 (-1d) | 2022-02-04 → 2022-02-02 (-2d) |  |  |  |  |
| 55 | **Project Management** |  | 2022-01-26 → 2022-01-24 (-2d) | 215.38d? → 213.88d? | 43% → 73% |  |  |
| 60 | Project Management Period 5 | 2021-08-09 A | 2021-08-27 → 2021-08-31 A (+4d) | 15d? → 17d | 0% → 100% | 6d → none | resources none → Yukio Ashida |
| 61 | Project Management Period 6 | 2021-09-07 → 2021-09-01 A (-6d) | 2021-09-17 → 2021-09-15 A (-2d) | 9d? → 10.25d | 0% → 100% | 9d → none | resources none → Yukio Ashida |
| 62 | Project Management Period 7 | 2021-10-01 → 2021-09-21 A (-10d) | 2021-10-15 → 2021-10-08 A (-7d) | 11d? → 12.5d | 0% → 100% | 8d → none | resources none → Yukio Ashida |
| 63 | Project Management Period 8 | 2021-10-28 → 2021-10-26 (-2d) | 2021-11-01 → 2021-10-29 (-3d) |  |  |  |  |
| 64 | Project Management Period 9 | 2021-11-18 → 2021-11-16 (-2d) | 2021-11-23 → 2021-11-22 (-1d) |  |  |  |  |
| 65 | Project Management Period 10 | 2021-11-30 → 2021-11-26 (-4d) | 2021-12-06 → 2021-12-03 (-3d) |  |  |  |  |
| 66 | Project Management Period 11 | 2021-12-14 → 2021-12-10 (-4d) | 2021-12-30 → 2021-12-29 (-1d) |  |  |  |  |
| 67 | Project Management Period 12 | 2022-01-12 → 2022-01-11 (-1d) | 2022-01-26 → 2022-01-24 (-2d) |  |  |  |  |
| 68 | **Milestones** |  | 2022-02-04 → 2022-02-02 (-2d) | 193.12d? → 191.62d? |  |  |  |
| 73 | Milestone 5 | 2021-09-06 → 2021-08-31 A (-6d) | 2021-09-06 → 2021-08-31 A (-6d) | 0d? → 0d | 0% → 100% | 0d → none | resources none → Period 5 Training Costs; Period 5 Managerial Action Costs; Period 5 Unallocated Resource Costs |
| 74 | Milestone 6 | 2021-09-30 → 2021-09-21 A (-9d) | 2021-09-30 → 2021-09-21 A (-9d) | 0d? → 0d | 0% → 100% | 0d → none | resources none → Period 6 Training Costs; Period 6 Managerial Action Costs; Period 6 Unallocated Resource Costs |
| 75 | Milestone 7 | 2021-10-27 → 2021-10-26 A (-1d) | 2021-10-27 → 2021-10-26 A (-1d) | 0d? → 0d | 0% → 100% | 0d → none | resources none → Period 7 Training Costs; Period 7 Managerial Action Costs; Period 7 Unallocated Resource Costs |
| 76 | Milestone 8 | 2021-11-17 → 2021-11-16 (-1d) | 2021-11-17 → 2021-11-16 (-1d) |  |  |  |  |
| 77 | Milestone 9 | 2021-11-29 → 2021-11-26 (-3d) | 2021-11-29 → 2021-11-26 (-3d) |  |  |  |  |
| 78 | Milestone 10 | 2021-12-13 → 2021-12-10 (-3d) | 2021-12-13 → 2021-12-10 (-3d) |  |  |  |  |
| 79 | Milestone 11 | 2022-01-12 → 2022-01-10 (-2d) | 2022-01-12 → 2022-01-10 (-2d) |  |  |  |  |
| 80 | Milestone 12 | 2022-02-04 → 2022-02-02 (-2d) | 2022-02-04 → 2022-02-02 (-2d) |  |  |  |  |

## Version 11 (data date 2021-11-19, saved 2021-05-17, file phase8Result.mpp)

Last finish 2022-02-02 → 2022-02-07 (+5d). Complete tasks 39 → 46.

Changed:

| ID | Task | Start | Finish | Duration | Complete | Total float | Other |
| --- | --- | --- | --- | --- | --- | --- | --- |
| 6 | **Procurement** |  | 2021-12-24 → 2021-12-29 (+5d) | 82.5d? → 85.12d? |  |  |  |
| 10 | Assess RFQ responses and select vendors | 2021-12-10 → 2021-12-15 (+5d) | 2021-12-24 → 2021-12-29 (+5d) |  |  |  |  |
| 11 | **Supplier Quality** |  | 2021-12-10 → 2021-12-15 (+5d) | 50.12d? → 52.75d? | 49% → 73% |  |  |
| 13 | Approve sample parts | 2021-10-26 A | 2021-11-05 → 2021-11-09 A (+4d) | 8d? → 10.12d | 0% → 100% | 7d → none | resources none → Jovanna Soto |
| 14 | Qualify Supplier | 2021-11-26 → 2021-12-01 (+5d) | 2021-12-10 → 2021-12-15 (+5d) |  |  |  |  |
| 22 | **Engineering** |  | 2021-12-07 → 2021-12-10 (+3d) | 95.25d? → 97.88d? | 57% → 66% |  |  |
| 28 | Design validation activities | 2021-10-26 → 2021-11-12 A (+17d) | 2021-11-02 → 2021-11-17 A (+15d) | 5d? → 3.06d | 0% → 100% | 10d → none | resources none → Darryl Sandefur; Jovanna Soto |
| 29 | Validation design review | 2021-11-16 → 2021-11-19 (+3d) | 2021-11-22 → 2021-11-25 (+3d) |  |  |  |  |
| 30 | Approve model design | 2021-11-22 → 2021-11-25 (+3d) | 2021-11-26 → 2021-12-01 (+5d) |  |  |  |  |
| 31 | Design transfer activities | 2021-11-26 → 2021-12-01 (+5d) | 2021-12-07 → 2021-12-10 (+3d) |  |  |  |  |
| 32 | **Engineering Quality** |  | 2021-12-10 → 2021-12-15 (+5d) | 72.5d? → 75.12d? | 57% → 81% |  |  |
| 35 | Test prototype | 2021-10-26 A | 2021-11-09 → 2021-11-12 A (+3d) | 10d? → 12.75d | 0% → 100% | 5d → none | resources none → Darryl Sandefur |
| 36 | Evaluate results of tests and identify weaknesses | 2021-11-16 → 2021-11-19 (+3d) | 2021-11-24 → 2021-11-29 (+5d) |  |  |  |  |
| 37 | Product release meetings | 2021-12-07 → 2021-12-10 (+3d) | 2021-12-10 → 2021-12-15 (+5d) |  |  |  |  |
| 38 | **Manufacturing** | 2021-10-26 A | 2022-01-28 → 2022-02-02 (+5d) | 68.5d? → 71.12d? | 0% → 30% |  |  |
| 39 | Process engineering plan | 2021-10-26 A | 2021-11-16 → 2021-11-19 A (+3d) | 15d? → 17.62d | 0% → 100% | 0d → none | resources none → Tom Becher |
| 40 | Develop production plan | 2021-11-26 → 2021-12-01 (+5d) | 2021-12-06 → 2021-12-09 (+3d) |  |  |  |  |
| 41 | Develop production control plan | 2021-12-10 → 2021-12-15 (+5d) | 2021-12-22 → 2021-12-27 (+5d) |  |  |  |  |
| 42 | Approve production parts | 2021-12-23 → 2021-12-27 (+4d) | 2021-12-29 → 2022-01-03 (+5d) |  |  |  |  |
| 43 | Contracting for deliveries | 2021-12-30 → 2022-01-03 (+4d) | 2022-01-10 → 2022-01-13 (+3d) |  |  |  |  |
| 44 | Submit production purchase order | 2022-01-11 → 2022-01-13 (+2d) | 2022-01-12 → 2022-01-17 (+5d) |  |  |  |  |
| 45 | Production pilot test | 2022-01-13 → 2022-01-17 (+4d) | 2022-01-19 → 2022-01-24 (+5d) |  |  |  |  |
| 46 | Debugging production system | 2022-01-20 → 2022-01-24 (+4d) | 2022-01-25 → 2022-01-28 (+3d) |  |  |  |  |
| 47 | Production release | 2022-01-26 → 2022-01-28 (+2d) | 2022-01-28 → 2022-02-02 (+5d) |  |  |  |  |
| 48 | **Commercialization** |  | 2022-02-02 → 2022-02-07 (+5d) | 191.62d? → 194.25d? | 92% → 96% |  |  |
| 53 | Show functional model at trade show | 2021-10-26 → 2021-10-29 A (+3d) | 2021-10-29 → 2021-11-04 A (+6d) | 3d? → 3.25d | 0% → 100% | 12d → none | resources none → Yukio Ashida |
| 54 | Product launch | 2022-01-31 → 2022-02-02 (+2d) | 2022-02-02 → 2022-02-07 (+5d) |  |  |  |  |
| 55 | **Project Management** |  | 2022-01-24 → 2022-01-27 (+3d) | 213.88d? → 216.5d? | 73% → 75% |  |  |
| 63 | Project Management Period 8 | 2021-10-26 A | 2021-10-29 A | 3d? → 3.38d | 0% → 100% | 12d → none | resources none → Yukio Ashida |
| 64 | Project Management Period 9 | 2021-11-16 → 2021-11-19 (+3d) | 2021-11-22 → 2021-11-25 (+3d) |  |  |  |  |
| 65 | Project Management Period 10 | 2021-11-26 → 2021-12-01 (+5d) | 2021-12-03 → 2021-12-08 (+5d) |  |  |  |  |
| 66 | Project Management Period 11 | 2021-12-10 → 2021-12-15 (+5d) | 2021-12-29 → 2022-01-03 (+5d) |  |  |  |  |
| 67 | Project Management Period 12 | 2022-01-11 → 2022-01-13 (+2d) | 2022-01-24 → 2022-01-27 (+3d) |  |  |  |  |
| 68 | **Milestones** |  | 2022-02-02 → 2022-02-07 (+5d) | 191.62d? → 194.25d? |  |  |  |
| 76 | Milestone 8 | 2021-11-16 → 2021-11-19 A (+3d) | 2021-11-16 → 2021-11-19 A (+3d) | 0d? → 0d | 0% → 100% | 0d → none | resources none → Period 8 Training Costs; Period 8 Managerial Action Costs; Period 8 Unallocated Resource Costs |
| 77 | Milestone 9 | 2021-11-26 → 2021-12-01 (+5d) | 2021-11-26 → 2021-12-01 (+5d) |  |  |  |  |
| 78 | Milestone 10 | 2021-12-10 → 2021-12-15 (+5d) | 2021-12-10 → 2021-12-15 (+5d) |  |  |  |  |
| 79 | Milestone 11 | 2022-01-10 → 2022-01-13 (+3d) | 2022-01-10 → 2022-01-13 (+3d) |  |  |  |  |
| 80 | Milestone 12 | 2022-02-02 → 2022-02-07 (+5d) | 2022-02-02 → 2022-02-07 (+5d) |  |  |  |  |

## Version 12 (data date 2021-12-02, saved 2021-05-18, file phase9Result.mpp)

Last finish 2022-02-07 → 2022-02-09 (+2d). Complete tasks 46 → 51.

Changed:

| ID | Task | Start | Finish | Duration | Complete | Total float | Other |
| --- | --- | --- | --- | --- | --- | --- | --- |
| 6 | **Procurement** |  | 2021-12-29 → 2021-12-30 (+1d) | 85.12d? → 87d? |  |  |  |
| 10 | Assess RFQ responses and select vendors | 2021-12-15 → 2021-12-17 (+2d) | 2021-12-29 → 2021-12-30 (+1d) |  |  |  |  |
| 11 | **Supplier Quality** |  | 2021-12-15 → 2021-12-16 (+1d) | 52.75d? → 54.62d? |  |  |  |
| 14 | Qualify Supplier | 2021-12-01 → 2021-12-03 (+2d) | 2021-12-15 → 2021-12-16 (+1d) |  |  |  |  |
| 22 | **Engineering** |  | 2021-12-10 → 2021-12-13 (+3d) | 97.88d? → 99.75d? | 66% → 85% |  |  |
| 29 | Validation design review | 2021-11-19 A | 2021-11-25 A | 4d? → 4.75d | 0% → 100% | 0d → none | resources none → Tom Becher |
| 30 | Approve model design | 2021-11-25 A | 2021-12-01 → 2021-12-02 A (+1d) | 4d? → 5.12d | 0% → 100% | 0d → none | resources none → Darryl Sandefur |
| 31 | Design transfer activities | 2021-12-01 → 2021-12-03 (+2d) | 2021-12-10 → 2021-12-13 (+3d) |  |  |  |  |
| 32 | **Engineering Quality** |  | 2021-12-15 → 2021-12-16 (+1d) | 75.12d? → 77d? | 81% → 94% |  |  |
| 36 | Evaluate results of tests and identify weaknesses | 2021-11-19 A | 2021-11-29 → 2021-11-30 A (+1d) | 6d? → 7.38d | 0% → 100% | 2d → none | resources none → Jovanna Soto |
| 37 | Product release meetings | 2021-12-10 → 2021-12-14 (+4d) | 2021-12-15 → 2021-12-16 (+1d) |  |  |  |  |
| 38 | **Manufacturing** |  | 2022-02-02 → 2022-02-04 (+2d) | 71.12d? → 73d? |  |  |  |
| 40 | Develop production plan | 2021-12-01 → 2021-12-03 (+2d) | 2021-12-09 → 2021-12-10 (+1d) |  |  |  |  |
| 41 | Develop production control plan | 2021-12-15 → 2021-12-17 (+2d) | 2021-12-27 → 2021-12-29 (+2d) |  |  |  |  |
| 42 | Approve production parts | 2021-12-27 → 2021-12-29 (+2d) | 2022-01-03 → 2022-01-05 (+2d) |  |  |  |  |
| 43 | Contracting for deliveries | 2022-01-03 → 2022-01-05 (+2d) | 2022-01-13 → 2022-01-17 (+4d) |  |  |  |  |
| 44 | Submit production purchase order | 2022-01-13 → 2022-01-17 (+4d) | 2022-01-17 → 2022-01-19 (+2d) |  |  |  |  |
| 45 | Production pilot test | 2022-01-17 → 2022-01-19 (+2d) | 2022-01-24 → 2022-01-26 (+2d) |  |  |  |  |
| 46 | Debugging production system | 2022-01-24 → 2022-01-26 (+2d) | 2022-01-28 → 2022-02-01 (+4d) |  |  |  |  |
| 47 | Production release | 2022-01-28 → 2022-02-01 (+4d) | 2022-02-02 → 2022-02-04 (+2d) |  |  |  |  |
| 48 | **Commercialization** |  | 2022-02-07 → 2022-02-09 (+2d) | 194.25d? → 196.12d? |  |  |  |
| 54 | Product launch | 2022-02-02 → 2022-02-04 (+2d) | 2022-02-07 → 2022-02-09 (+2d) |  |  |  |  |
| 55 | **Project Management** |  | 2022-01-27 → 2022-01-31 (+4d) | 216.5d? → 218.38d? | 75% → 78% |  |  |
| 64 | Project Management Period 9 | 2021-11-19 A | 2021-11-25 A | 4d? → 4.62d | 0% → 100% | 4d → none | resources none → Yukio Ashida |
| 65 | Project Management Period 10 | 2021-12-01 → 2021-12-03 (+2d) | 2021-12-08 → 2021-12-09 (+1d) |  |  |  |  |
| 66 | Project Management Period 11 | 2021-12-15 → 2021-12-17 (+2d) | 2022-01-03 → 2022-01-04 (+1d) |  |  |  |  |
| 67 | Project Management Period 12 | 2022-01-13 → 2022-01-17 (+4d) | 2022-01-27 → 2022-01-31 (+4d) |  |  |  |  |
| 68 | **Milestones** |  | 2022-02-07 → 2022-02-09 (+2d) | 194.25d? → 196.12d? |  |  |  |
| 77 | Milestone 9 | 2021-12-01 → 2021-12-02 A (+1d) | 2021-12-01 → 2021-12-02 A (+1d) | 0d? → 0d | 0% → 100% | 0d → none | resources none → Period 9 Training Costs; Period 9 Managerial Action Costs; Period 9 Unallocated Resource Costs |
| 78 | Milestone 10 | 2021-12-15 → 2021-12-16 (+1d) | 2021-12-15 → 2021-12-16 (+1d) |  |  |  |  |
| 79 | Milestone 11 | 2022-01-13 → 2022-01-17 (+4d) | 2022-01-13 → 2022-01-17 (+4d) |  |  |  |  |
| 80 | Milestone 12 | 2022-02-07 → 2022-02-09 (+2d) | 2022-02-07 → 2022-02-09 (+2d) |  |  |  |  |

## Version 13 (saved 2021-05-19, file Master_backup.mpp)

Note of the change: Updated to period 10

Last finish stays 2022-02-09. Complete tasks 51 → 42.

Changed:

| ID | Task | Start | Finish | Duration | Complete | Total float | Other |
| --- | --- | --- | --- | --- | --- | --- | --- |
| 1 | **Market Assessment** |  |  | 29.25d → 29.26d |  |  | baseline finish 2021-06-10 → 2021-05-05 |
| 2 | Evaluate market |  |  |  |  |  | baseline finish 2021-04-16 → 2021-04-08 |
| 3 | Develop Business opportunity |  |  |  |  |  | resources Yukio Ashida; Kurt Zollinger → Kurt Zollinger; Yukio Ashida; baseline start 2021-04-16 → 2021-04-08; baseline finish 2021-05-06 → 2021-04-19 |
| 4 | Customer preference study |  | 2021-05-06 A → 2021-05-07 A (+1d) | 12.12d → 12.13d |  |  | resources Yukio Ashida; Kurt Zollinger → Kurt Zollinger; Yukio Ashida; baseline start 2021-05-06 → 2021-04-19; baseline finish 2021-06-04 → 2021-05-03 |
| 5 | Business evaluation (NPV, etc.) |  |  |  |  |  | baseline start 2021-06-04 → 2021-05-03; baseline finish 2021-06-10 → 2021-05-05 |
| 6 | **Procurement** |  | 2021-12-30 → 2021-12-31 (+1d) | 87d? → 87.02d? |  |  | baseline start 2021-10-15 → 2021-08-11; baseline finish 2022-02-04 → 2021-11-26 |
| 7 | Identify vendors |  |  |  |  |  | baseline start 2021-10-15 → 2021-08-11; baseline finish 2021-10-26 → 2021-08-20 |
| 8 | Develop and Issue RFQ | 2021-09-07 A → 2021-09-01 A (-6d) | 2021-09-13 A → 2021-09-15 A (+2d) |  |  |  | baseline start 2021-10-15 → 2021-08-11; baseline finish 2021-10-25 → 2021-08-30 |
| 9 | Issue sample (production equivalent) |  |  |  |  |  | baseline start 2021-11-10 → 2021-08-30; baseline finish 2021-11-17 → 2021-09-06 |
| 10 | Assess RFQ responses and select vendors |  | 2021-12-30 → 2021-12-31 (+1d) |  |  |  | resources none → Jovanna Soto; baseline start 2022-01-21 → 2021-11-12; baseline finish 2022-02-04 → 2021-11-26 |
| 11 | **Supplier Quality** |  | 2021-12-16 → 2021-12-17 (+1d) | 54.62d? → 54.64d? |  |  | baseline start 2021-11-17 → 2021-09-06; baseline finish 2022-01-21 → 2021-10-28 |
| 12 | Perform supplier process capability |  |  | 17.12d → 17.13d |  |  | resources Tom Becher → Tom Bechur; baseline start 2021-11-17 → 2021-09-06; baseline finish 2021-12-07 → 2021-09-15 |
| 13 | Approve sample parts |  |  | 10.12d → 10.13d |  |  | baseline start 2021-12-07 → 2021-09-15; baseline finish 2021-12-17 → 2021-09-27 |
| 14 | Qualify Supplier |  | 2021-12-16 → 2021-12-17 (+1d) |  |  |  | resources none → Jovanna Soto; baseline start 2022-01-07 → 2021-10-14; baseline finish 2022-01-21 → 2021-10-28 |
| 15 | **Design** |  | 2021-07-27 A → 2021-07-21 A (-6d) | 54.88d → 51.51d |  |  | baseline start 2021-06-10 → 2021-05-05; baseline finish 2021-09-09 → 2021-07-09 |
| 16 | Design and development plan |  |  |  |  |  | baseline start 2021-06-10 → 2021-05-05; baseline finish 2021-06-18 → 2021-05-10 |
| 17 | Design specs. |  | 2021-06-03 A → 2021-06-04 A (+1d) |  |  |  | resources Lance Portier; Kelly Sauseda → Kelly Sauseda; Lance Portier; baseline start 2021-06-18 → 2021-05-10; baseline finish 2021-07-20 → 2021-05-25 |
| 18 | Identify testing requirements |  |  |  |  |  | baseline start 2021-07-20 → 2021-05-25; baseline finish 2021-08-03 → 2021-06-01 |
| 19 | Risk analysis |  |  |  |  |  | baseline start 2021-08-03 → 2021-06-01; baseline finish 2021-08-17 → 2021-06-08 |
| 20 | Design labeling | 2021-07-19 A → 2021-07-14 A (-5d) | 2021-07-22 A → 2021-07-19 A (-3d) |  |  |  | resources Lance Portier; Kelly Sauseda → Kelly Sauseda; Lance Portier; baseline start 2021-08-27 → 2021-07-02; baseline finish 2021-09-03 → 2021-07-07 |
| 21 | Approve design | 2021-07-22 A → 2021-07-19 A (-3d) | 2021-07-27 A → 2021-07-21 A (-6d) | 2.62d → 2.63d |  |  | resources Lance Portier; Kelly Sauseda → Kelly Sauseda; Lance Portier; baseline start 2021-09-03 → 2021-07-07; baseline finish 2021-09-09 → 2021-07-09 |
| 22 | **Engineering** | 2021-07-27 A → 2021-07-21 A (-6d) | 2021-12-13 → 2021-12-14 (+1d) | 99.75d? → 103.15d? |  |  | baseline start 2021-09-09 → 2021-07-09; baseline finish 2022-01-18 → 2021-11-09 |
| 23 | Initial engineering specs. | 2021-07-27 A → 2021-07-21 A (-6d) | 2021-07-30 A → 2021-07-26 A (-4d) |  |  |  | resources Tom Becher; Darryl Sandefur → Tom Bechur; Darryl Sandefur; baseline start 2021-09-09 → 2021-07-09; baseline finish 2021-09-16 → 2021-07-13 |
| 24 | Design verification activities |  |  |  |  |  | resources Tom Becher; Darryl Sandefur → Tom Bechur; Darryl Sandefur; baseline start 2021-09-16 → 2021-07-21; baseline finish 2021-09-27 → 2021-07-27 |
| 25 | Verification design review |  |  |  |  |  | resources Tom Becher; Darryl Sandefur → Tom Bechur; Darryl Sandefur; baseline start 2021-09-27 → 2021-07-27; baseline finish 2021-10-01 → 2021-07-29 |
| 26 | Release pre-production specifications |  |  |  |  |  | resources Tom Becher; Darryl Sandefur → Tom Bechur; Darryl Sandefur; baseline start 2021-10-01 → 2021-07-29; baseline finish 2021-10-15 → 2021-08-05 |
| 27 | Build functional model |  |  |  |  |  | resources Tom Becher; Darryl Sandefur → Tom Bechur; Darryl Sandefur; baseline start 2021-10-15 → 2021-08-11; baseline finish 2021-11-10 → 2021-08-24 |
| 28 | Design validation activities | 2021-11-12 A → 2021-10-26 A (-17d) | 2021-11-17 A → 2021-11-16 A (-1d) |  |  |  | baseline start 2021-12-07 → 2021-09-15; baseline finish 2021-12-14 → 2021-09-22 |
| 29 | Validation design review |  |  |  |  |  | resources Tom Becher → Tom Bechur; baseline start 2021-12-28 → 2021-10-06; baseline finish 2022-01-03 → 2021-10-08 |
| 30 | Approve model design |  | 2021-12-02 A → 2021-12-03 A (+1d) | 5.12d → 5.13d |  |  | baseline start 2022-01-03 → 2021-10-08; baseline finish 2022-01-07 → 2021-10-12 |
| 31 | Design transfer activities |  | 2021-12-13 → 2021-12-14 (+1d) |  |  |  | resources none → Tom Bechur; baseline start 2022-01-07 → 2021-10-14; baseline finish 2022-01-18 → 2021-11-09 |
| 32 | **Engineering Quality** |  | 2021-12-16 → 2021-12-17 (+1d) | 77d? → 77.02d? |  |  | baseline start 2021-10-15 → 2021-08-11; baseline finish 2022-01-21 → 2021-11-12 |
| 33 | Evaluate design specifications |  |  |  |  |  | baseline start 2021-10-15 → 2021-08-11; baseline finish 2021-10-29 → 2021-08-25 |
| 34 | Develop testing protocol for prototype |  |  |  |  |  | baseline start 2021-11-10 → 2021-08-30; baseline finish 2021-11-22 → 2021-09-09 |
| 35 | Test prototype |  |  |  |  |  | baseline start 2021-12-07 → 2021-09-15; baseline finish 2021-12-21 → 2021-09-29 |
| 36 | Evaluate results of tests and identify weaknesses |  |  |  |  |  | baseline start 2021-12-28 → 2021-10-06; baseline finish 2022-01-05 → 2021-10-14 |
| 37 | Product release meetings |  | 2021-12-16 → 2021-12-17 (+1d) |  |  |  | resources none → Yukio Ashida; baseline start 2022-01-18 → 2021-11-09; baseline finish 2022-01-21 → 2021-11-12 |
| 38 | **Manufacturing** |  |  | 73d? → 73.01d? |  |  | baseline start 2021-12-07 → 2021-09-15; baseline finish 2022-03-11 → 2022-01-03 |
| 39 | Process engineering plan |  |  | 17.62d → 17.63d |  |  | resources Tom Becher → Tom Bechur; baseline start 2021-12-07 → 2021-09-15; baseline finish 2021-12-28 → 2021-10-06 |
| 40 | Develop production plan |  | 2021-12-10 → 2021-12-13 (+3d) |  |  |  | resources none → Operations Specialist; baseline start 2022-01-07 → 2021-10-14; baseline finish 2022-01-17 → 2021-10-22 |
| 41 | Develop production control plan |  |  |  |  |  | resources none → Operations Specialist; baseline start 2022-01-21 → 2021-11-12; baseline finish 2022-02-02 → 2021-11-25 |
| 42 | Approve production parts |  |  |  |  |  | resources none → Operations Specialist; baseline start 2022-02-02 → 2021-11-25; baseline finish 2022-02-09 → 2021-12-02 |
| 43 | Contracting for deliveries |  |  |  |  |  | resources none → Operations Specialist; baseline start 2022-02-09 → 2021-12-02; baseline finish 2022-02-21 → 2021-12-14 |
| 44 | Submit production purchase order |  |  |  |  |  | resources none → Operations Specialist; baseline start 2022-02-21 → 2021-12-14; baseline finish 2022-02-23 → 2021-12-16 |
| 45 | Production pilot test |  |  |  |  |  | resources none → Operations Specialist; baseline start 2022-02-23 → 2021-12-16; baseline finish 2022-03-02 → 2021-12-23 |
| 46 | Debugging production system |  |  |  |  |  | resources none → Operations Specialist; baseline start 2022-03-02 → 2021-12-23; baseline finish 2022-03-08 → 2021-12-29 |
| 47 | Production release |  |  |  |  |  | resources none → Operations Specialist; baseline start 2022-03-08 → 2021-12-29; baseline finish 2022-03-11 → 2022-01-03 |
| 48 | **Commercialization** |  |  | 196.12d? → 196.16d? |  |  | baseline start 2021-06-10 → 2021-05-05; baseline finish 2022-03-16 → 2022-01-06 |
| 49 | Develop preliminary marketing plan |  |  |  |  |  | resources Yukio Ashida; Kurt Zollinger → Kurt Zollinger; Yukio Ashida; baseline start 2021-06-10 → 2021-05-05; baseline finish 2021-06-17 → 2021-05-10 |
| 50 | Develop marketing program |  |  |  |  |  | baseline start 2021-06-17 → 2021-05-10; baseline finish 2021-07-08 → 2021-05-19 |
| 51 | Train sales team |  |  |  |  |  | baseline start 2021-07-20 → 2021-05-25; baseline finish 2021-08-19 → 2021-06-24 |
| 52 | Advertising campaign |  |  |  |  |  | baseline start 2021-07-20 → 2021-05-25; baseline finish 2021-08-27 → 2021-07-02 |
| 53 | Show functional model at trade show | 2021-10-29 A → 2021-11-01 A (+3d) |  |  |  |  | baseline start 2021-12-07 → 2021-09-20; baseline finish 2021-12-10 → 2021-09-23 |
| 54 | Product launch |  |  |  |  |  | resources none → Kurt Zollinger; baseline start 2022-03-11 → 2022-01-03; baseline finish 2022-03-16 → 2022-01-06 |
| 55 | **Project Management** |  |  | 218.38d? → 218.42d? |  |  | baseline finish 2022-03-07 → 2021-12-28 |
| 56 | Project Management Period 1 |  |  |  |  |  | resources Tom Becher; Darryl Sandefur → Tom Bechur; Darryl Sandefur; baseline finish 2021-05-05 → 2021-04-16 |
| 57 | Project Management Period 2 |  |  |  |  |  | resources Tom Becher; Darryl Sandefur → Tom Bechur; Darryl Sandefur; baseline start 2021-06-10 → 2021-05-05; baseline finish 2021-06-30 → 2021-05-14 |
| 58 | Project Management Period 3 |  |  | 10.12d → 10.13d |  |  | resources Tom Becher; Darryl Sandefur → Tom Bechur; Darryl Sandefur; baseline start 2021-07-20 → 2021-05-25; baseline finish 2021-08-09 → 2021-06-03 |
| 59 | Project Management Period 4 |  | 2021-08-06 A → 2021-08-09 A (+3d) | 14.62d → 14.63d |  |  | baseline start 2021-08-27 → 2021-07-02; baseline finish 2021-09-15 → 2021-07-21 |
| 60 | Project Management Period 5 |  | 2021-08-31 A → 2021-09-01 A (+1d) |  |  |  | baseline start 2021-09-16 → 2021-07-21; baseline finish 2021-10-07 → 2021-08-11 |
| 61 | Project Management Period 6 |  |  |  |  |  | baseline start 2021-10-15 → 2021-08-11; baseline finish 2021-10-28 → 2021-08-24 |
| 62 | Project Management Period 7 |  |  |  |  |  | baseline start 2021-11-10 → 2021-08-30; baseline finish 2021-11-25 → 2021-09-14 |
| 63 | Project Management Period 8 |  |  |  |  |  | baseline start 2021-12-07 → 2021-09-15; baseline finish 2021-12-10 → 2021-09-20 |
| 64 | Project Management Period 9 |  |  | 4.62d → 4.63d |  |  | baseline start 2021-12-28 → 2021-10-06; baseline finish 2022-01-03 → 2021-10-12 |
| 65 | Project Management Period 10 |  | 2021-12-09 → 2021-12-10 (+1d) |  |  |  | resources none → Yukio Ashida; baseline start 2022-01-07 → 2021-10-14; baseline finish 2022-01-14 → 2021-10-21 |
| 66 | Project Management Period 11 |  | 2022-01-04 → 2022-01-05 (+1d) |  |  |  | resources none → Darryl Sandefur; baseline start 2022-01-21 → 2021-11-12; baseline finish 2022-02-09 → 2021-12-01 |
| 67 | Project Management Period 12 |  |  |  |  |  | resources none → Darryl Sandefur; baseline start 2022-02-21 → 2021-12-14; baseline finish 2022-03-07 → 2021-12-28 |
| 68 | **Milestones** | 2021-05-11 A → 2021-05-11 |  | 196.12d? → 196.16d? |  |  | baseline start 2021-06-10 → 2021-05-05; baseline finish 2022-03-16 → 2022-01-06 |
| 69 | Milestone 1 | 2021-05-11 A → 2021-05-11 | 2021-05-11 A → 2021-05-11 | 0d → 0d? | 100% → 0% | none → 167.75d | resources Period 1 Training Costs; Period 1 Managerial Action Costs; Period 1 Unallocated Resource Costs → none; baseline start 2021-06-10 → 2021-05-05; baseline finish 2021-06-10 → 2021-05-05 |
| 70 | Milestone 2 | 2021-06-03 A → 2021-06-04 (+1d) | 2021-06-03 A → 2021-06-04 (+1d) | 0d → 0d? | 100% → 0% | none → 155.13d | resources Period 2 Training Costs; Period 2 Managerial Action Costs; Period 2 Unallocated Resource Costs → none; baseline start 2021-07-20 → 2021-05-25; baseline finish 2021-07-20 → 2021-05-25 |

| ID | Task | Start | Finish | Duration | Complete | Total float | Other |
| --- | --- | --- | --- | --- | --- | --- | --- |
| 71 | Milestone 3 | 2021-07-19 A → 2021-07-19 | 2021-07-19 A → 2021-07-19 | 0d → 0d? | 100% → 0% | none → 123.75d | resources Period 3 Training Costs; Period 3 Managerial Action Costs; Period 3 Unallocated Resource Costs → none; baseline start 2021-08-27 → 2021-07-02; baseline finish 2021-08-27 → 2021-07-02 |
| 72 | Milestone 4 | 2021-08-06 A → 2021-08-09 (+3d) | 2021-08-06 A → 2021-08-09 (+3d) | 0d → 0d? | 100% → 0% | none → 111.12d | resources Period 4 Training Costs; Period 4 Managerial Action Costs; Period 4 Unallocated Resource Costs → none; baseline start 2021-09-16 → 2021-07-21; baseline finish 2021-09-16 → 2021-07-21 |
| 73 | Milestone 5 | 2021-08-31 A → 2021-09-01 (+1d) | 2021-08-31 A → 2021-09-01 (+1d) | 0d → 0d? | 100% → 0% | none → 96.38d | resources Period 5 Training Costs; Period 5 Managerial Action Costs; Period 5 Unallocated Resource Costs → none; baseline start 2021-10-15 → 2021-08-11; baseline finish 2021-10-15 → 2021-08-11 |
| 74 | Milestone 6 | 2021-09-21 A → 2021-09-21 | 2021-09-21 A → 2021-09-21 | 0d → 0d? | 100% → 0% | none → 94.13d | resources Period 6 Training Costs; Period 6 Managerial Action Costs; Period 6 Unallocated Resource Costs → none; baseline start 2021-11-10 → 2021-08-30; baseline finish 2021-11-10 → 2021-08-30 |
| 75 | Milestone 7 | 2021-10-26 A → 2021-10-26 | 2021-10-26 A → 2021-10-26 | 0d → 0d? | 100% → 0% | none → 72.13d | resources Period 7 Training Costs; Period 7 Managerial Action Costs; Period 7 Unallocated Resource Costs → none; baseline start 2021-12-07 → 2021-09-15; baseline finish 2021-12-07 → 2021-09-15 |
| 76 | Milestone 8 | 2021-11-19 A → 2021-11-19 | 2021-11-19 A → 2021-11-19 | 0d → 0d? | 100% → 0% | none → 58.38d | resources Period 8 Training Costs; Period 8 Managerial Action Costs; Period 8 Unallocated Resource Costs → none; baseline start 2021-12-28 → 2021-10-06; baseline finish 2021-12-28 → 2021-10-06 |
| 77 | Milestone 9 | 2021-12-02 A → 2021-12-03 (+1d) | 2021-12-02 A → 2021-12-03 (+1d) | 0d → 0d? | 100% → 0% | none → 0d | resources Period 9 Training Costs; Period 9 Managerial Action Costs; Period 9 Unallocated Resource Costs → none; baseline start 2022-01-07 → 2021-10-14; baseline finish 2022-01-07 → 2021-10-14 |
| 78 | Milestone 10 | 2021-12-16 → 2021-12-17 (+1d) | 2021-12-16 → 2021-12-17 (+1d) |  |  |  | baseline start 2022-01-21 → 2021-11-12; baseline finish 2022-01-21 → 2021-11-12 |
| 79 | Milestone 11 |  |  |  |  |  | baseline start 2022-02-21 → 2021-12-14; baseline finish 2022-02-21 → 2021-12-14 |
| 80 | Milestone 12 |  |  |  |  |  | baseline start 2022-03-16 → 2022-01-06; baseline finish 2022-03-16 → 2022-01-06 |

## Version 14 (data date 2021-12-21, saved 2021-05-19, file phase10Result.mpp)

Last finish 2022-02-09 → 2022-02-11 (+2d). Complete tasks 42 → 57.

Changed:

| ID | Task | Start | Finish | Duration | Complete | Total float | Other |
| --- | --- | --- | --- | --- | --- | --- | --- |
| 1 | **Market Assessment** |  |  | 29.26d → 29.25d |  |  | baseline finish 2021-05-05 → 2021-06-10 |
| 2 | Evaluate market |  |  |  |  |  | baseline finish 2021-04-08 → 2021-04-16 |
| 3 | Develop Business opportunity |  |  |  |  |  | resources Kurt Zollinger; Yukio Ashida → Yukio Ashida; Kurt Zollinger; baseline start 2021-04-08 → 2021-04-16; baseline finish 2021-04-19 → 2021-05-06 |
| 4 | Customer preference study |  | 2021-05-07 A → 2021-05-06 A (-1d) | 12.13d → 12.12d |  |  | resources Kurt Zollinger; Yukio Ashida → Yukio Ashida; Kurt Zollinger; baseline start 2021-04-19 → 2021-05-06; baseline finish 2021-05-03 → 2021-06-04 |
| 5 | Business evaluation (NPV, etc.) |  |  |  |  |  | baseline start 2021-05-03 → 2021-06-04; baseline finish 2021-05-05 → 2021-06-10 |
| 6 | **Procurement** |  | 2021-12-31 → 2022-01-04 (+4d) | 87.02d? → 89.5d? |  |  | baseline start 2021-08-11 → 2021-10-15; baseline finish 2021-11-26 → 2022-02-04 |
| 7 | Identify vendors |  |  |  |  |  | baseline start 2021-08-11 → 2021-10-15; baseline finish 2021-08-20 → 2021-10-26 |
| 8 | Develop and Issue RFQ | 2021-09-01 A → 2021-09-07 A (+6d) | 2021-09-15 A → 2021-09-13 A (-2d) |  |  |  | baseline start 2021-08-11 → 2021-10-15; baseline finish 2021-08-30 → 2021-10-25 |
| 9 | Issue sample (production equivalent) |  |  |  |  |  | baseline start 2021-08-30 → 2021-11-10; baseline finish 2021-09-06 → 2021-11-17 |
| 10 | Assess RFQ responses and select vendors | 2021-12-17 → 2021-12-21 (+4d) | 2021-12-31 → 2022-01-04 (+4d) |  |  |  | resources Jovanna Soto → none; baseline start 2021-11-12 → 2022-01-21; baseline finish 2021-11-26 → 2022-02-04 |
| 11 | **Supplier Quality** |  | 2021-12-17 → 2021-12-21 A (+4d) | 54.64d? → 57.12d | 73% → 100% | 0d → none | baseline start 2021-09-06 → 2021-11-17; baseline finish 2021-10-28 → 2022-01-21 |
| 12 | Perform supplier process capability |  |  | 17.13d → 17.12d |  |  | resources Tom Bechur → Tom Becher; baseline start 2021-09-06 → 2021-11-17; baseline finish 2021-09-15 → 2021-12-07 |
| 13 | Approve sample parts |  |  | 10.13d → 10.12d |  |  | baseline start 2021-09-15 → 2021-12-07; baseline finish 2021-09-27 → 2021-12-17 |
| 14 | Qualify Supplier | 2021-12-03 A | 2021-12-17 → 2021-12-21 A (+4d) | 10d? → 12.5d | 0% → 100% | 0d → none | baseline start 2021-10-14 → 2022-01-07; baseline finish 2021-10-28 → 2022-01-21 |
| 15 | **Design** |  | 2021-07-21 A → 2021-07-27 A (+6d) | 51.51d → 54.88d |  |  | baseline start 2021-05-05 → 2021-06-10; baseline finish 2021-07-09 → 2021-09-09 |
| 16 | Design and development plan |  |  |  |  |  | baseline start 2021-05-05 → 2021-06-10; baseline finish 2021-05-10 → 2021-06-18 |
| 17 | Design specs. |  | 2021-06-04 A → 2021-06-03 A (-1d) |  |  |  | resources Kelly Sauseda; Lance Portier → Lance Portier; Kelly Sauseda; baseline start 2021-05-10 → 2021-06-18; baseline finish 2021-05-25 → 2021-07-20 |
| 18 | Identify testing requirements |  |  |  |  |  | baseline start 2021-05-25 → 2021-07-20; baseline finish 2021-06-01 → 2021-08-03 |
| 19 | Risk analysis |  |  |  |  |  | baseline start 2021-06-01 → 2021-08-03; baseline finish 2021-06-08 → 2021-08-17 |
| 20 | Design labeling | 2021-07-14 A → 2021-07-19 A (+5d) | 2021-07-19 A → 2021-07-22 A (+3d) |  |  |  | resources Kelly Sauseda; Lance Portier → Lance Portier; Kelly Sauseda; baseline start 2021-07-02 → 2021-08-27; baseline finish 2021-07-07 → 2021-09-03 |
| 21 | Approve design | 2021-07-19 A → 2021-07-22 A (+3d) | 2021-07-21 A → 2021-07-27 A (+6d) | 2.63d → 2.62d |  |  | resources Kelly Sauseda; Lance Portier → Lance Portier; Kelly Sauseda; baseline start 2021-07-07 → 2021-09-03; baseline finish 2021-07-09 → 2021-09-09 |
| 22 | **Engineering** | 2021-07-21 A → 2021-07-27 A (+6d) | 2021-12-14 → 2021-12-15 A (+1d) | 103.15d? → 101d | 85% → 100% | 0d → none | baseline start 2021-07-09 → 2021-09-09; baseline finish 2021-11-09 → 2022-01-18 |
| 23 | Initial engineering specs. | 2021-07-21 A → 2021-07-27 A (+6d) | 2021-07-26 A → 2021-07-30 A (+4d) |  |  |  | resources Tom Bechur; Darryl Sandefur → Tom Becher; Darryl Sandefur; baseline start 2021-07-09 → 2021-09-09; baseline finish 2021-07-13 → 2021-09-16 |
| 24 | Design verification activities |  |  |  |  |  | resources Tom Bechur; Darryl Sandefur → Tom Becher; Darryl Sandefur; baseline start 2021-07-21 → 2021-09-16; baseline finish 2021-07-27 → 2021-09-27 |
| 25 | Verification design review |  |  |  |  |  | resources Tom Bechur; Darryl Sandefur → Tom Becher; Darryl Sandefur; baseline start 2021-07-27 → 2021-09-27; baseline finish 2021-07-29 → 2021-10-01 |
| 26 | Release pre-production specifications |  |  |  |  |  | resources Tom Bechur; Darryl Sandefur → Tom Becher; Darryl Sandefur; baseline start 2021-07-29 → 2021-10-01; baseline finish 2021-08-05 → 2021-10-15 |
| 27 | Build functional model |  |  |  |  |  | resources Tom Bechur; Darryl Sandefur → Tom Becher; Darryl Sandefur; baseline start 2021-08-11 → 2021-10-15; baseline finish 2021-08-24 → 2021-11-10 |
| 28 | Design validation activities | 2021-10-26 A → 2021-11-12 A (+17d) | 2021-11-16 A → 2021-11-17 A (+1d) |  |  |  | baseline start 2021-09-15 → 2021-12-07; baseline finish 2021-09-22 → 2021-12-14 |
| 29 | Validation design review |  |  |  |  |  | resources Tom Bechur → Tom Becher; baseline start 2021-10-06 → 2021-12-28; baseline finish 2021-10-08 → 2022-01-03 |
| 30 | Approve model design |  | 2021-12-03 A → 2021-12-02 A (-1d) | 5.13d → 5.12d |  |  | baseline start 2021-10-08 → 2022-01-03; baseline finish 2021-10-12 → 2022-01-07 |
| 31 | Design transfer activities | 2021-12-03 A | 2021-12-14 → 2021-12-15 A (+1d) | 7d? → 8.25d | 0% → 100% | 0d → none | resources Tom Bechur → Tom Becher; baseline start 2021-10-14 → 2022-01-07; baseline finish 2021-11-09 → 2022-01-18 |
| 32 | **Engineering Quality** |  | 2021-12-17 → 2021-12-20 A (+3d) | 77.02d? → 78.62d | 94% → 100% | 0d → none | baseline start 2021-08-11 → 2021-10-15; baseline finish 2021-11-12 → 2022-01-21 |
| 33 | Evaluate design specifications |  |  |  |  |  | baseline start 2021-08-11 → 2021-10-15; baseline finish 2021-08-25 → 2021-10-29 |
| 34 | Develop testing protocol for prototype |  |  |  |  |  | baseline start 2021-08-30 → 2021-11-10; baseline finish 2021-09-09 → 2021-11-22 |
| 35 | Test prototype |  |  |  |  |  | baseline start 2021-09-15 → 2021-12-07; baseline finish 2021-09-29 → 2021-12-21 |
| 36 | Evaluate results of tests and identify weaknesses |  |  |  |  |  | baseline start 2021-10-06 → 2021-12-28; baseline finish 2021-10-14 → 2022-01-05 |
| 37 | Product release meetings | 2021-12-14 → 2021-12-15 A (+1d) | 2021-12-17 → 2021-12-20 A (+3d) | 3d? → 3.38d | 0% → 100% | 0d → none | baseline start 2021-11-09 → 2022-01-18; baseline finish 2021-11-12 → 2022-01-21 |
| 38 | **Manufacturing** |  | 2022-02-04 → 2022-02-08 (+4d) | 73.01d? → 75.5d? | 30% → 42% |  | baseline start 2021-09-15 → 2021-12-07; baseline finish 2022-01-03 → 2022-03-11 |
| 39 | Process engineering plan |  |  | 17.63d → 17.62d |  |  | resources Tom Bechur → Tom Becher; baseline start 2021-09-15 → 2021-12-07; baseline finish 2021-10-06 → 2021-12-28 |
| 40 | Develop production plan | 2021-12-03 A | 2021-12-13 → 2021-12-15 A (+2d) | 6d? → 8.25d | 0% → 100% | 4d → none | resources Operations Specialist → Darryl Sandefur; baseline start 2021-10-14 → 2022-01-07; baseline finish 2021-10-22 → 2022-01-17 |
| 41 | Develop production control plan | 2021-12-17 → 2021-12-21 (+4d) | 2021-12-29 → 2021-12-31 (+2d) |  |  |  | resources Operations Specialist → none; baseline start 2021-11-12 → 2022-01-21; baseline finish 2021-11-25 → 2022-02-02 |
| 42 | Approve production parts | 2021-12-29 → 2022-01-03 (+5d) | 2022-01-05 → 2022-01-07 (+2d) |  |  |  | resources Operations Specialist → none; baseline start 2021-11-25 → 2022-02-02; baseline finish 2021-12-02 → 2022-02-09 |
| 43 | Contracting for deliveries | 2022-01-05 → 2022-01-10 (+5d) | 2022-01-17 → 2022-01-19 (+2d) |  |  |  | resources Operations Specialist → none; baseline start 2021-12-02 → 2022-02-09; baseline finish 2021-12-14 → 2022-02-21 |
| 44 | Submit production purchase order | 2022-01-17 → 2022-01-20 (+3d) | 2022-01-19 → 2022-01-21 (+2d) |  |  |  | resources Operations Specialist → none; baseline start 2021-12-14 → 2022-02-21; baseline finish 2021-12-16 → 2022-02-23 |
| 45 | Production pilot test | 2022-01-19 → 2022-01-24 (+5d) | 2022-01-26 → 2022-01-28 (+2d) |  |  |  | resources Operations Specialist → none; baseline start 2021-12-16 → 2022-02-23; baseline finish 2021-12-23 → 2022-03-02 |
| 46 | Debugging production system | 2022-01-26 → 2022-01-31 (+5d) | 2022-02-01 → 2022-02-03 (+2d) |  |  |  | resources Operations Specialist → none; baseline start 2021-12-23 → 2022-03-02; baseline finish 2021-12-29 → 2022-03-08 |
| 47 | Production release | 2022-02-01 → 2022-02-04 (+3d) | 2022-02-04 → 2022-02-08 (+4d) |  |  |  | resources Operations Specialist → none; baseline start 2021-12-29 → 2022-03-08; baseline finish 2022-01-03 → 2022-03-11 |
| 48 | **Commercialization** |  | 2022-02-09 → 2022-02-11 (+2d) | 196.16d? → 198.62d? |  |  | baseline start 2021-05-05 → 2021-06-10; baseline finish 2022-01-06 → 2022-03-16 |
| 49 | Develop preliminary marketing plan |  |  |  |  |  | resources Kurt Zollinger; Yukio Ashida → Yukio Ashida; Kurt Zollinger; baseline start 2021-05-05 → 2021-06-10; baseline finish 2021-05-10 → 2021-06-17 |
| 50 | Develop marketing program |  |  |  |  |  | baseline start 2021-05-10 → 2021-06-17; baseline finish 2021-05-19 → 2021-07-08 |
| 51 | Train sales team |  |  |  |  |  | baseline start 2021-05-25 → 2021-07-20; baseline finish 2021-06-24 → 2021-08-19 |
| 52 | Advertising campaign |  |  |  |  |  | baseline start 2021-05-25 → 2021-07-20; baseline finish 2021-07-02 → 2021-08-27 |
| 53 | Show functional model at trade show | 2021-11-01 A → 2021-10-29 A (-3d) |  |  |  |  | baseline start 2021-09-20 → 2021-12-07; baseline finish 2021-09-23 → 2021-12-10 |
| 54 | Product launch | 2022-02-04 → 2022-02-09 (+5d) | 2022-02-09 → 2022-02-11 (+2d) |  |  |  | resources Kurt Zollinger → none; baseline start 2022-01-03 → 2022-03-11; baseline finish 2022-01-06 → 2022-03-16 |
| 55 | **Project Management** |  | 2022-01-31 → 2022-02-02 (+2d) | 218.42d? → 220.88d? | 78% → 82% |  | baseline finish 2021-12-28 → 2022-03-07 |
| 56 | Project Management Period 1 |  |  |  |  |  | resources Tom Bechur; Darryl Sandefur → Tom Becher; Darryl Sandefur; baseline finish 2021-04-16 → 2021-05-05 |
| 57 | Project Management Period 2 |  |  |  |  |  | resources Tom Bechur; Darryl Sandefur → Tom Becher; Darryl Sandefur; baseline start 2021-05-05 → 2021-06-10; baseline finish 2021-05-14 → 2021-06-30 |
| 58 | Project Management Period 3 |  |  | 10.13d → 10.12d |  |  | resources Tom Bechur; Darryl Sandefur → Tom Becher; Darryl Sandefur; baseline start 2021-05-25 → 2021-07-20; baseline finish 2021-06-03 → 2021-08-09 |
| 59 | Project Management Period 4 |  | 2021-08-09 A → 2021-08-06 A (-3d) | 14.63d → 14.62d |  |  | baseline start 2021-07-02 → 2021-08-27; baseline finish 2021-07-21 → 2021-09-15 |
| 60 | Project Management Period 5 |  | 2021-09-01 A → 2021-08-31 A (-1d) |  |  |  | baseline start 2021-07-21 → 2021-09-16; baseline finish 2021-08-11 → 2021-10-07 |
| 61 | Project Management Period 6 |  |  |  |  |  | baseline start 2021-08-11 → 2021-10-15; baseline finish 2021-08-24 → 2021-10-28 |
| 62 | Project Management Period 7 |  |  |  |  |  | baseline start 2021-08-30 → 2021-11-10; baseline finish 2021-09-14 → 2021-11-25 |
| 63 | Project Management Period 8 |  |  |  |  |  | baseline start 2021-09-15 → 2021-12-07; baseline finish 2021-09-20 → 2021-12-10 |
| 64 | Project Management Period 9 |  |  | 4.63d → 4.62d |  |  | baseline start 2021-10-06 → 2021-12-28; baseline finish 2021-10-12 → 2022-01-03 |
| 65 | Project Management Period 10 | 2021-12-03 A | 2021-12-10 A | 5d? → 5.62d | 0% → 100% | 5d → none | baseline start 2021-10-14 → 2022-01-07; baseline finish 2021-10-21 → 2022-01-14 |
| 66 | Project Management Period 11 | 2021-12-17 → 2021-12-21 (+4d) | 2022-01-05 → 2022-01-07 (+2d) |  |  |  | resources Darryl Sandefur → none; baseline start 2021-11-12 → 2022-01-21; baseline finish 2021-12-01 → 2022-02-09 |
| 67 | Project Management Period 12 | 2022-01-17 → 2022-01-20 (+3d) | 2022-01-31 → 2022-02-02 (+2d) |  |  |  | resources Darryl Sandefur → none; baseline start 2021-12-14 → 2022-02-21; baseline finish 2021-12-28 → 2022-03-07 |
| 68 | **Milestones** | 2021-05-11 A | 2022-02-09 → 2022-02-11 (+2d) | 196.16d? → 198.62d? |  |  | baseline start 2021-05-05 → 2021-06-10; baseline finish 2022-01-06 → 2022-03-16 |
| 69 | Milestone 1 | 2021-05-11 A | 2021-05-11 A | 0d? → 0d | 0% → 100% | 167.75d → none | resources none → Period 1 Training Costs; Period 1 Managerial Action Costs; Period 1 Unallocated Resource Costs; baseline start 2021-05-05 → 2021-06-10; baseline finish 2021-05-05 → 2021-06-10 |
| 70 | Milestone 2 | 2021-06-04 → 2021-06-03 A (-1d) | 2021-06-04 → 2021-06-03 A (-1d) | 0d? → 0d | 0% → 100% | 155.13d → none | resources none → Period 2 Training Costs; Period 2 Managerial Action Costs; Period 2 Unallocated Resource Costs; baseline start 2021-05-25 → 2021-07-20; baseline finish 2021-05-25 → 2021-07-20 |

| ID | Task | Start | Finish | Duration | Complete | Total float | Other |
| --- | --- | --- | --- | --- | --- | --- | --- |
| 71 | Milestone 3 | 2021-07-19 A | 2021-07-19 A | 0d? → 0d | 0% → 100% | 123.75d → none | resources none → Period 3 Training Costs; Period 3 Managerial Action Costs; Period 3 Unallocated Resource Costs; baseline start 2021-07-02 → 2021-08-27; baseline finish 2021-07-02 → 2021-08-27 |
| 72 | Milestone 4 | 2021-08-09 → 2021-08-06 A (-3d) | 2021-08-09 → 2021-08-06 A (-3d) | 0d? → 0d | 0% → 100% | 111.12d → none | resources none → Period 4 Training Costs; Period 4 Managerial Action Costs; Period 4 Unallocated Resource Costs; baseline start 2021-07-21 → 2021-09-16; baseline finish 2021-07-21 → 2021-09-16 |
| 73 | Milestone 5 | 2021-09-01 → 2021-08-31 A (-1d) | 2021-09-01 → 2021-08-31 A (-1d) | 0d? → 0d | 0% → 100% | 96.38d → none | resources none → Period 5 Training Costs; Period 5 Managerial Action Costs; Period 5 Unallocated Resource Costs; baseline start 2021-08-11 → 2021-10-15; baseline finish 2021-08-11 → 2021-10-15 |
| 74 | Milestone 6 | 2021-09-21 A | 2021-09-21 A | 0d? → 0d | 0% → 100% | 94.13d → none | resources none → Period 6 Training Costs; Period 6 Managerial Action Costs; Period 6 Unallocated Resource Costs; baseline start 2021-08-30 → 2021-11-10; baseline finish 2021-08-30 → 2021-11-10 |
| 75 | Milestone 7 | 2021-10-26 A | 2021-10-26 A | 0d? → 0d | 0% → 100% | 72.13d → none | resources none → Period 7 Training Costs; Period 7 Managerial Action Costs; Period 7 Unallocated Resource Costs; baseline start 2021-09-15 → 2021-12-07; baseline finish 2021-09-15 → 2021-12-07 |
| 76 | Milestone 8 | 2021-11-19 A | 2021-11-19 A | 0d? → 0d | 0% → 100% | 58.38d → none | resources none → Period 8 Training Costs; Period 8 Managerial Action Costs; Period 8 Unallocated Resource Costs; baseline start 2021-10-06 → 2021-12-28; baseline finish 2021-10-06 → 2021-12-28 |
| 77 | Milestone 9 | 2021-12-03 → 2021-12-02 A (-1d) | 2021-12-03 → 2021-12-02 A (-1d) | 0d? → 0d | 0% → 100% | 0d → none | resources none → Period 9 Training Costs; Period 9 Managerial Action Costs; Period 9 Unallocated Resource Costs; baseline start 2021-10-14 → 2022-01-07; baseline finish 2021-10-14 → 2022-01-07 |
| 78 | Milestone 10 | 2021-12-17 → 2021-12-21 A (+4d) | 2021-12-17 → 2021-12-21 A (+4d) | 0d? → 0d | 0% → 100% | 0d → none | resources none → Period 10 Training Costs; Period 10 Managerial Action Costs; Period 10 Unallocated Resource Costs; baseline start 2021-11-12 → 2022-01-21; baseline finish 2021-11-12 → 2022-01-21 |
| 79 | Milestone 11 | 2022-01-17 → 2022-01-19 (+2d) | 2022-01-17 → 2022-01-19 (+2d) |  |  |  | baseline start 2021-12-14 → 2022-02-21; baseline finish 2021-12-14 → 2022-02-21 |
| 80 | Milestone 12 | 2022-02-09 → 2022-02-11 (+2d) | 2022-02-09 → 2022-02-11 (+2d) |  |  |  | baseline start 2022-01-06 → 2022-03-16; baseline finish 2022-01-06 → 2022-03-16 |

## Version 15 (data date 2022-01-18, saved 2021-05-24, file phase11Result.mpp)

Last finish 2022-02-11 → 2022-02-10 (-1d). Complete tasks 57 → 63.

Changed:

| ID | Task | Start | Finish | Duration | Complete | Total float | Other |
| --- | --- | --- | --- | --- | --- | --- | --- |
| 6 | **Procurement** |  | 2022-01-04 → 2021-12-29 A (-6d) | 89.5d? → 85.56d | 61% → 100% | 3.5d → none |  |
| 10 | Assess RFQ responses and select vendors | 2021-12-21 A | 2022-01-04 → 2021-12-29 A (-6d) | 10d? → 6.06d | 0% → 100% | 3.5d → none | resources none → Jovanna Soto; Tom Becher |
| 38 | **Manufacturing** |  | 2022-02-08 → 2022-02-07 (-1d) | 75.5d? → 73.56d? | 42% → 76% |  |  |
| 41 | Develop production control plan | 2021-12-21 A | 2021-12-31 → 2022-01-05 A (+5d) | 8.5d? → 11.12d | 0% → 100% | 0d → none | resources none → Darryl Sandefur |
| 42 | Approve production parts | 2022-01-03 → 2022-01-05 A (+2d) | 2022-01-07 → 2022-01-10 A (+3d) | 5d? → 3.31d | 0% → 100% | 0d → none | resources none → Tom Becher; Darryl Sandefur |
| 43 | Contracting for deliveries | 2022-01-10 A | 2022-01-19 → 2022-01-18 A (-1d) | 8d? → 5.12d | 0% → 100% | 0d → none | resources none → Tom Becher; Darryl Sandefur |
| 44 | Submit production purchase order | 2022-01-20 → 2022-01-18 (-2d) | 2022-01-21 → 2022-01-20 (-1d) |  |  |  |  |
| 45 | Production pilot test | 2022-01-24 → 2022-01-20 (-4d) | 2022-01-28 → 2022-01-27 (-1d) |  |  |  |  |
| 46 | Debugging production system | 2022-01-31 → 2022-01-27 (-4d) | 2022-02-03 → 2022-02-02 (-1d) |  |  |  |  |
| 47 | Production release | 2022-02-04 → 2022-02-02 (-2d) | 2022-02-08 → 2022-02-07 (-1d) |  |  |  |  |
| 48 | **Commercialization** |  | 2022-02-11 → 2022-02-10 (-1d) | 198.62d? → 196.69d? |  |  |  |
| 54 | Product launch | 2022-02-09 → 2022-02-07 (-2d) | 2022-02-11 → 2022-02-10 (-1d) |  |  |  |  |
| 55 | **Project Management** |  | 2022-02-02 → 2022-02-01 (-1d) | 220.88d? → 218.94d? | 82% → 92% |  |  |
| 66 | Project Management Period 11 | 2021-12-21 A | 2022-01-07 → 2022-01-11 A (+4d) | 13d? → 14.75d | 0% → 100% | 8.5d → none | resources none → Yukio Ashida |
| 67 | Project Management Period 12 | 2022-01-20 → 2022-01-18 (-2d) | 2022-02-02 → 2022-02-01 (-1d) |  |  |  |  |
| 68 | **Milestones** |  | 2022-02-11 → 2022-02-10 (-1d) | 198.62d? → 196.69d? |  |  |  |
| 79 | Milestone 11 | 2022-01-19 → 2022-01-18 A (-1d) | 2022-01-19 → 2022-01-18 A (-1d) | 0d? → 0d | 0% → 100% | 0d → none | resources none → Period 11 Training Costs; Period 11 Managerial Action Costs; Period 11 Unallocated Resource Costs |
| 80 | Milestone 12 | 2022-02-11 → 2022-02-10 (-1d) | 2022-02-11 → 2022-02-10 (-1d) |  |  |  |  |

## Version 16 (data date 2021-11-15, saved 2021-05-24, file Master.mpp)

Last finish stays 2022-02-10. Complete tasks 63 → 57.

Changed:

| ID | Task | Start | Finish | Duration | Complete | Total float | Other |
| --- | --- | --- | --- | --- | --- | --- | --- |
| 1 | **Market Assessment** |  |  | 29.25d → 29.26d |  |  | baseline finish 2021-06-10 → 2021-05-05 |
| 2 | Evaluate market |  |  |  |  |  | baseline finish 2021-04-16 → 2021-04-08 |
| 3 | Develop Business opportunity |  |  |  |  |  | resources Yukio Ashida; Kurt Zollinger → Kurt Zollinger; Yukio Ashida; baseline start 2021-04-16 → 2021-04-08; baseline finish 2021-05-06 → 2021-04-19 |
| 4 | Customer preference study |  | 2021-05-06 A → 2021-05-07 A (+1d) | 12.12d → 12.13d |  |  | resources Yukio Ashida; Kurt Zollinger → Kurt Zollinger; Yukio Ashida; baseline start 2021-05-06 → 2021-04-19; baseline finish 2021-06-04 → 2021-05-03 |
| 5 | Business evaluation (NPV, etc.) |  |  |  |  |  | baseline start 2021-06-04 → 2021-05-03; baseline finish 2021-06-10 → 2021-05-05 |
| 6 | **Procurement** |  |  | 85.56d → 85.58d |  |  | baseline start 2021-10-15 → 2021-08-11; baseline finish 2022-02-04 → 2021-11-26 |
| 7 | Identify vendors |  |  |  |  |  | baseline start 2021-10-15 → 2021-08-11; baseline finish 2021-10-26 → 2021-08-20 |
| 8 | Develop and Issue RFQ | 2021-09-07 A → 2021-09-01 A (-6d) |  |  |  |  | baseline start 2021-10-15 → 2021-08-11; baseline finish 2021-10-25 → 2021-08-30 |
| 9 | Issue sample (production equivalent) |  |  |  |  |  | baseline start 2021-11-10 → 2021-08-30; baseline finish 2021-11-17 → 2021-09-06 |
| 10 | Assess RFQ responses and select vendors |  |  |  |  |  | resources Jovanna Soto; Tom Becher → Jovanna Soto; Tom Bechur; baseline start 2022-01-21 → 2021-11-12; baseline finish 2022-02-04 → 2021-11-26 |
| 11 | **Supplier Quality** |  |  | 57.12d → 57.14d |  |  | baseline start 2021-11-17 → 2021-09-06; baseline finish 2022-01-21 → 2021-10-28 |
| 12 | Perform supplier process capability |  |  | 17.12d → 17.13d |  |  | resources Tom Becher → Tom Bechur; baseline start 2021-11-17 → 2021-09-06; baseline finish 2021-12-07 → 2021-09-15 |
| 13 | Approve sample parts |  |  | 10.12d → 10.13d |  |  | baseline start 2021-12-07 → 2021-09-15; baseline finish 2021-12-17 → 2021-09-27 |
| 14 | Qualify Supplier |  |  |  |  |  | baseline start 2022-01-07 → 2021-10-14; baseline finish 2022-01-21 → 2021-10-28 |
| 15 | **Design** |  | 2021-07-27 A → 2021-07-21 A (-6d) | 54.88d → 51.51d |  |  | baseline start 2021-06-10 → 2021-05-05; baseline finish 2021-09-09 → 2021-07-09 |
| 16 | Design and development plan |  |  |  |  |  | baseline start 2021-06-10 → 2021-05-05; baseline finish 2021-06-18 → 2021-05-10 |
| 17 | Design specs. |  | 2021-06-03 A → 2021-06-04 A (+1d) |  |  |  | resources Lance Portier; Kelly Sauseda → Kelly Sauseda; Lance Portier; baseline start 2021-06-18 → 2021-05-10; baseline finish 2021-07-20 → 2021-05-25 |
| 18 | Identify testing requirements |  |  |  |  |  | baseline start 2021-07-20 → 2021-05-25; baseline finish 2021-08-03 → 2021-06-01 |
| 19 | Risk analysis |  |  |  |  |  | baseline start 2021-08-03 → 2021-06-01; baseline finish 2021-08-17 → 2021-06-08 |
| 20 | Design labeling | 2021-07-19 A → 2021-07-14 A (-5d) | 2021-07-22 A → 2021-07-19 A (-3d) |  |  |  | resources Lance Portier; Kelly Sauseda → Kelly Sauseda; Lance Portier; baseline start 2021-08-27 → 2021-07-02; baseline finish 2021-09-03 → 2021-07-07 |
| 21 | Approve design | 2021-07-22 A → 2021-07-19 A (-3d) | 2021-07-27 A → 2021-07-21 A (-6d) | 2.62d → 2.63d |  |  | resources Lance Portier; Kelly Sauseda → Kelly Sauseda; Lance Portier; baseline start 2021-09-03 → 2021-07-07; baseline finish 2021-09-09 → 2021-07-09 |
| 22 | **Engineering** | 2021-07-27 A → 2021-07-21 A (-6d) | 2021-12-15 A → 2021-12-15 | 101d → 104.4d | 100% → 98% | none → 40.82d | baseline start 2021-09-09 → 2021-07-09; baseline finish 2022-01-18 → 2021-11-09 |
| 23 | Initial engineering specs. | 2021-07-27 A → 2021-07-21 A (-6d) | 2021-07-30 A → 2021-07-26 A (-4d) |  |  |  | resources Tom Becher; Darryl Sandefur → Tom Bechur; Darryl Sandefur; baseline start 2021-09-09 → 2021-07-09; baseline finish 2021-09-16 → 2021-07-13 |
| 24 | Design verification activities |  |  |  |  |  | resources Tom Becher; Darryl Sandefur → Tom Bechur; Darryl Sandefur; baseline start 2021-09-16 → 2021-07-21; baseline finish 2021-09-27 → 2021-07-27 |
| 25 | Verification design review |  |  |  |  |  | resources Tom Becher; Darryl Sandefur → Tom Bechur; Darryl Sandefur; baseline start 2021-09-27 → 2021-07-27; baseline finish 2021-10-01 → 2021-07-29 |
| 26 | Release pre-production specifications |  |  |  |  |  | resources Tom Becher; Darryl Sandefur → Tom Bechur; Darryl Sandefur; baseline start 2021-10-01 → 2021-07-29; baseline finish 2021-10-15 → 2021-08-05 |
| 27 | Build functional model |  |  |  |  |  | resources Tom Becher; Darryl Sandefur → Tom Bechur; Darryl Sandefur; baseline start 2021-10-15 → 2021-08-11; baseline finish 2021-11-10 → 2021-08-24 |
| 28 | Design validation activities | 2021-11-12 A → 2021-10-26 A (-17d) | 2021-11-17 A → 2021-11-16 (-1d) |  | 100% → 71% | none → 61.23d | baseline start 2021-12-07 → 2021-09-15; baseline finish 2021-12-14 → 2021-09-22 |
| 29 | Validation design review |  |  |  |  |  | resources Tom Becher → Tom Bechur; baseline start 2021-12-28 → 2021-10-06; baseline finish 2022-01-03 → 2021-10-08 |
| 30 | Approve model design |  | 2021-12-02 A → 2021-12-03 A (+1d) | 5.12d → 5.13d |  |  | baseline start 2022-01-03 → 2021-10-08; baseline finish 2022-01-07 → 2021-10-12 |
| 31 | Design transfer activities |  |  |  |  |  | resources Tom Becher → Tom Bechur; baseline start 2022-01-07 → 2021-10-14; baseline finish 2022-01-18 → 2021-10-22 |
| 32 | **Engineering Quality** |  |  | 78.62d → 78.65d |  |  | baseline start 2021-10-15 → 2021-08-11; baseline finish 2022-01-21 → 2021-11-12 |
| 33 | Evaluate design specifications |  |  |  |  |  | baseline start 2021-10-15 → 2021-08-11; baseline finish 2021-10-29 → 2021-08-25 |
| 34 | Develop testing protocol for prototype |  |  |  |  |  | baseline start 2021-11-10 → 2021-08-30; baseline finish 2021-11-22 → 2021-09-09 |
| 35 | Test prototype |  |  |  |  |  | baseline start 2021-12-07 → 2021-09-15; baseline finish 2021-12-21 → 2021-09-29 |
| 36 | Evaluate results of tests and identify weaknesses |  |  |  |  |  | baseline start 2021-12-28 → 2021-10-06; baseline finish 2022-01-05 → 2021-10-14 |
| 37 | Product release meetings |  |  |  |  |  | baseline start 2022-01-18 → 2021-11-09; baseline finish 2022-01-21 → 2021-11-12 |
| 38 | **Manufacturing** |  |  | 73.56d? → 73.58d? | 76% → 71% | 0d → 3d | baseline start 2021-12-07 → 2021-09-15; baseline finish 2022-03-11 → 2022-01-03 |
| 39 | Process engineering plan |  | 2021-11-19 A → 2021-11-19 | 17.62d → 17.63d | 100% → 82% | none → 58.95d | resources Tom Becher → Tom Bechur; baseline start 2021-12-07 → 2021-09-15; baseline finish 2021-12-28 → 2021-10-06 |
| 40 | Develop production plan |  |  |  |  |  | baseline start 2022-01-07 → 2021-10-14; baseline finish 2022-01-17 → 2021-10-22 |
| 41 | Develop production control plan |  |  | 11.12d → 11.13d |  |  | baseline start 2022-01-21 → 2021-11-12; baseline finish 2022-02-02 → 2021-11-25 |
| 42 | Approve production parts |  |  |  |  |  | resources Tom Becher; Darryl Sandefur → Darryl Sandefur; Tom Bechur; baseline start 2022-02-02 → 2021-11-25; baseline finish 2022-02-09 → 2021-12-02 |
| 43 | Contracting for deliveries |  |  | 5.12d → 5.13d |  |  | resources Tom Becher; Darryl Sandefur → Darryl Sandefur; Tom Bechur; baseline start 2022-02-09 → 2021-12-02; baseline finish 2022-02-21 → 2021-12-14 |
| 44 | Submit production purchase order |  |  |  |  |  | resources none → Operations Specialist; baseline start 2022-02-21 → 2021-12-14; baseline finish 2022-02-23 → 2021-12-16 |
| 45 | Production pilot test |  |  |  |  |  | resources none → Operations Specialist; baseline start 2022-02-23 → 2021-12-16; baseline finish 2022-03-02 → 2021-12-23 |
| 46 | Debugging production system |  |  |  |  |  | resources none → Operations Specialist; baseline start 2022-03-02 → 2021-12-23; baseline finish 2022-03-08 → 2021-12-29 |
| 47 | Production release |  |  |  |  |  | resources none → Operations Specialist; baseline start 2022-03-08 → 2021-12-29; baseline finish 2022-03-11 → 2022-01-03 |
| 48 | **Commercialization** |  |  | 196.69d? → 196.73d? |  |  | baseline start 2021-06-10 → 2021-05-05; baseline finish 2022-03-16 → 2022-01-06 |
| 49 | Develop preliminary marketing plan |  |  |  |  |  | resources Yukio Ashida; Kurt Zollinger → Kurt Zollinger; Yukio Ashida; baseline start 2021-06-10 → 2021-05-05; baseline finish 2021-06-17 → 2021-05-10 |
| 50 | Develop marketing program |  |  |  |  |  | baseline start 2021-06-17 → 2021-05-10; baseline finish 2021-07-08 → 2021-05-19 |
| 51 | Train sales team |  |  |  |  |  | baseline start 2021-07-20 → 2021-05-25; baseline finish 2021-08-19 → 2021-06-24 |
| 52 | Advertising campaign |  |  |  |  |  | baseline start 2021-07-20 → 2021-05-25; baseline finish 2021-08-27 → 2021-07-02 |
| 53 | Show functional model at trade show | 2021-10-29 A → 2021-11-01 A (+3d) |  |  |  |  | baseline start 2021-12-07 → 2021-09-20; baseline finish 2021-12-10 → 2021-09-23 |
| 54 | Product launch |  |  |  |  |  | resources none → Yukio Ashida; baseline start 2022-03-11 → 2022-01-03; baseline finish 2022-03-16 → 2022-01-06 |
| 55 | **Project Management** |  |  | 218.94d? → 218.99d? |  |  | baseline finish 2022-03-07 → 2021-12-28 |
| 56 | Project Management Period 1 |  |  |  |  |  | resources Tom Becher; Darryl Sandefur → Tom Bechur; Darryl Sandefur; baseline finish 2021-05-05 → 2021-04-16 |
| 57 | Project Management Period 2 |  |  |  |  |  | resources Tom Becher; Darryl Sandefur → Tom Bechur; Darryl Sandefur; baseline start 2021-06-10 → 2021-05-05; baseline finish 2021-06-30 → 2021-05-14 |
| 58 | Project Management Period 3 |  |  | 10.12d → 10.13d |  |  | resources Tom Becher; Darryl Sandefur → Tom Bechur; Darryl Sandefur; baseline start 2021-07-20 → 2021-05-25; baseline finish 2021-08-09 → 2021-06-03 |
| 59 | Project Management Period 4 |  | 2021-08-06 A → 2021-08-09 A (+3d) | 14.62d → 14.63d |  |  | baseline start 2021-08-27 → 2021-07-02; baseline finish 2021-09-15 → 2021-07-21 |
| 60 | Project Management Period 5 |  | 2021-08-31 A → 2021-09-01 A (+1d) |  |  |  | baseline start 2021-09-16 → 2021-07-21; baseline finish 2021-10-07 → 2021-08-11 |
| 61 | Project Management Period 6 |  |  |  |  |  | baseline start 2021-10-15 → 2021-08-11; baseline finish 2021-10-28 → 2021-08-24 |
| 62 | Project Management Period 7 |  |  |  |  |  | baseline start 2021-11-10 → 2021-08-30; baseline finish 2021-11-25 → 2021-09-14 |
| 63 | Project Management Period 8 |  |  |  |  |  | baseline start 2021-12-07 → 2021-09-15; baseline finish 2021-12-10 → 2021-09-20 |
| 64 | Project Management Period 9 |  |  | 4.62d → 4.63d |  |  | baseline start 2021-12-28 → 2021-10-06; baseline finish 2022-01-03 → 2021-10-12 |
| 65 | Project Management Period 10 |  |  | 5.62d → 5.63d |  |  | baseline start 2022-01-07 → 2021-10-14; baseline finish 2022-01-14 → 2021-10-21 |
| 66 | Project Management Period 11 |  |  |  |  |  | baseline start 2022-01-21 → 2021-11-12; baseline finish 2022-02-09 → 2021-12-01 |
| 67 | Project Management Period 12 |  |  |  |  |  | resources none → Yukio Ashida; baseline start 2022-02-21 → 2021-12-14; baseline finish 2022-03-07 → 2021-12-28 |
| 68 | **Milestones** |  |  | 196.69d? → 196.73d? |  |  | baseline start 2021-06-10 → 2021-05-05; baseline finish 2022-03-16 → 2022-01-06 |
| 69 | Milestone 1 |  |  | 0d → 0d? |  |  | resources Period 1 Training Costs; Period 1 Managerial Action Costs; Period 1 Unallocated Resource Costs → none; baseline start 2021-06-10 → 2021-05-05; baseline finish 2021-06-10 → 2021-05-05 |
| 70 | Milestone 2 | 2021-06-03 A → 2021-06-04 A (+1d) | 2021-06-03 A → 2021-06-04 A (+1d) | 0d → 0d? |  |  | resources Period 2 Training Costs; Period 2 Managerial Action Costs; Period 2 Unallocated Resource Costs → none; baseline start 2021-07-20 → 2021-05-25; baseline finish 2021-07-20 → 2021-05-25 |

| ID | Task | Start | Finish | Duration | Complete | Total float | Other |
| --- | --- | --- | --- | --- | --- | --- | --- |
| 71 | Milestone 3 |  |  | 0d → 0d? |  |  | resources Period 3 Training Costs; Period 3 Managerial Action Costs; Period 3 Unallocated Resource Costs → none; baseline start 2021-08-27 → 2021-07-02; baseline finish 2021-08-27 → 2021-07-02 |
| 72 | Milestone 4 | 2021-08-06 A → 2021-08-09 A (+3d) | 2021-08-06 A → 2021-08-09 A (+3d) | 0d → 0d? |  |  | resources Period 4 Training Costs; Period 4 Managerial Action Costs; Period 4 Unallocated Resource Costs → none; baseline start 2021-09-16 → 2021-07-21; baseline finish 2021-09-16 → 2021-07-21 |
| 73 | Milestone 5 | 2021-08-31 A → 2021-09-01 A (+1d) | 2021-08-31 A → 2021-09-01 A (+1d) | 0d → 0d? |  |  | resources Period 5 Training Costs; Period 5 Managerial Action Costs; Period 5 Unallocated Resource Costs → none; baseline start 2021-10-15 → 2021-08-11; baseline finish 2021-10-15 → 2021-08-11 |
| 74 | Milestone 6 |  |  | 0d → 0d? |  |  | resources Period 6 Training Costs; Period 6 Managerial Action Costs; Period 6 Unallocated Resource Costs → none; baseline start 2021-11-10 → 2021-08-30; baseline finish 2021-11-10 → 2021-08-30 |
| 75 | Milestone 7 |  |  | 0d → 0d? |  |  | resources Period 7 Training Costs; Period 7 Managerial Action Costs; Period 7 Unallocated Resource Costs → none; baseline start 2021-12-07 → 2021-09-15; baseline finish 2021-12-07 → 2021-09-15 |
| 76 | Milestone 8 | 2021-11-19 A → 2021-11-19 | 2021-11-19 A → 2021-11-19 | 0d → 0d? | 100% → 0% | none → 58.38d | resources Period 8 Training Costs; Period 8 Managerial Action Costs; Period 8 Unallocated Resource Costs → none; baseline start 2021-12-28 → 2021-10-06; baseline finish 2021-12-28 → 2021-10-06 |
| 77 | Milestone 9 | 2021-12-02 A → 2021-12-03 (+1d) | 2021-12-02 A → 2021-12-03 (+1d) | 0d → 0d? | 100% → 0% | none → 7.5d | resources Period 9 Training Costs; Period 9 Managerial Action Costs; Period 9 Unallocated Resource Costs → none; baseline start 2022-01-07 → 2021-10-14; baseline finish 2022-01-07 → 2021-10-14 |
| 78 | Milestone 10 | 2021-12-21 A → 2021-12-21 | 2021-12-21 A → 2021-12-21 | 0d → 0d? | 100% → 0% | none → 36.57d | resources Period 10 Training Costs; Period 10 Managerial Action Costs; Period 10 Unallocated Resource Costs → none; baseline start 2022-01-21 → 2021-11-12; baseline finish 2022-01-21 → 2021-11-12 |
| 79 | Milestone 11 | 2022-01-18 A → 2022-01-18 | 2022-01-18 A → 2022-01-18 | 0d → 0d? | 100% → 0% | none → 0d | resources Period 11 Training Costs; Period 11 Managerial Action Costs; Period 11 Unallocated Resource Costs → none; baseline start 2022-02-21 → 2021-12-14; baseline finish 2022-02-21 → 2021-12-14 |
| 80 | Milestone 12 |  |  |  |  |  | baseline start 2022-03-16 → 2022-01-06; baseline finish 2022-03-16 → 2022-01-06 |

## Version 17 (data date 2022-02-07, saved 2021-05-25, file phase12Result.mpp)

Last finish 2022-02-10 → 2022-02-07 (-3d). Complete tasks 57 → 70.

Changed:

| ID | Task | Start | Finish | Duration | Complete | Total float | Other |
| --- | --- | --- | --- | --- | --- | --- | --- |
| 1 | **Market Assessment** |  |  | 29.26d → 29.25d |  |  | baseline finish 2021-05-05 → 2021-06-10 |
| 2 | Evaluate market |  |  |  |  |  | baseline finish 2021-04-08 → 2021-04-16 |
| 3 | Develop Business opportunity |  |  |  |  |  | resources Kurt Zollinger; Yukio Ashida → Yukio Ashida; Kurt Zollinger; baseline start 2021-04-08 → 2021-04-16; baseline finish 2021-04-19 → 2021-05-06 |
| 4 | Customer preference study |  | 2021-05-07 A → 2021-05-06 A (-1d) | 12.13d → 12.12d |  |  | resources Kurt Zollinger; Yukio Ashida → Yukio Ashida; Kurt Zollinger; baseline start 2021-04-19 → 2021-05-06; baseline finish 2021-05-03 → 2021-06-04 |
| 5 | Business evaluation (NPV, etc.) |  |  |  |  |  | baseline start 2021-05-03 → 2021-06-04; baseline finish 2021-05-05 → 2021-06-10 |
| 6 | **Procurement** |  |  | 85.58d → 85.56d |  |  | baseline start 2021-08-11 → 2021-10-15; baseline finish 2021-11-26 → 2022-02-04 |
| 7 | Identify vendors |  |  |  |  |  | baseline start 2021-08-11 → 2021-10-15; baseline finish 2021-08-20 → 2021-10-26 |
| 8 | Develop and Issue RFQ | 2021-09-01 A → 2021-09-07 A (+6d) |  |  |  |  | baseline start 2021-08-11 → 2021-10-15; baseline finish 2021-08-30 → 2021-10-25 |
| 9 | Issue sample (production equivalent) |  |  |  |  |  | baseline start 2021-08-30 → 2021-11-10; baseline finish 2021-09-06 → 2021-11-17 |
| 10 | Assess RFQ responses and select vendors |  |  |  |  |  | resources Jovanna Soto; Tom Bechur → Jovanna Soto; Tom Becher; baseline start 2021-11-12 → 2022-01-21; baseline finish 2021-11-26 → 2022-02-04 |
| 11 | **Supplier Quality** |  |  | 57.14d → 57.12d |  |  | baseline start 2021-09-06 → 2021-11-17; baseline finish 2021-10-28 → 2022-01-21 |
| 12 | Perform supplier process capability |  |  | 17.13d → 17.12d |  |  | resources Tom Bechur → Tom Becher; baseline start 2021-09-06 → 2021-11-17; baseline finish 2021-09-15 → 2021-12-07 |
| 13 | Approve sample parts |  |  | 10.13d → 10.12d |  |  | baseline start 2021-09-15 → 2021-12-07; baseline finish 2021-09-27 → 2021-12-17 |
| 14 | Qualify Supplier |  |  |  |  |  | baseline start 2021-10-14 → 2022-01-07; baseline finish 2021-10-28 → 2022-01-21 |
| 15 | **Design** |  | 2021-07-21 A → 2021-07-27 A (+6d) | 51.51d → 54.88d |  |  | baseline start 2021-05-05 → 2021-06-10; baseline finish 2021-07-09 → 2021-09-09 |
| 16 | Design and development plan |  |  |  |  |  | baseline start 2021-05-05 → 2021-06-10; baseline finish 2021-05-10 → 2021-06-18 |
| 17 | Design specs. |  | 2021-06-04 A → 2021-06-03 A (-1d) |  |  |  | resources Kelly Sauseda; Lance Portier → Lance Portier; Kelly Sauseda; baseline start 2021-05-10 → 2021-06-18; baseline finish 2021-05-25 → 2021-07-20 |
| 18 | Identify testing requirements |  |  |  |  |  | baseline start 2021-05-25 → 2021-07-20; baseline finish 2021-06-01 → 2021-08-03 |
| 19 | Risk analysis |  |  |  |  |  | baseline start 2021-06-01 → 2021-08-03; baseline finish 2021-06-08 → 2021-08-17 |
| 20 | Design labeling | 2021-07-14 A → 2021-07-19 A (+5d) | 2021-07-19 A → 2021-07-22 A (+3d) |  |  |  | resources Kelly Sauseda; Lance Portier → Lance Portier; Kelly Sauseda; baseline start 2021-07-02 → 2021-08-27; baseline finish 2021-07-07 → 2021-09-03 |
| 21 | Approve design | 2021-07-19 A → 2021-07-22 A (+3d) | 2021-07-21 A → 2021-07-27 A (+6d) | 2.63d → 2.62d |  |  | resources Kelly Sauseda; Lance Portier → Lance Portier; Kelly Sauseda; baseline start 2021-07-07 → 2021-09-03; baseline finish 2021-07-09 → 2021-09-09 |
| 22 | **Engineering** | 2021-07-21 A → 2021-07-27 A (+6d) | 2021-12-15 A | 104.4d → 101d | 98% → 100% | 40.82d → none | baseline start 2021-07-09 → 2021-09-09; baseline finish 2021-11-09 → 2022-01-18 |
| 23 | Initial engineering specs. | 2021-07-21 A → 2021-07-27 A (+6d) | 2021-07-26 A → 2021-07-30 A (+4d) |  |  |  | resources Tom Bechur; Darryl Sandefur → Tom Becher; Darryl Sandefur; baseline start 2021-07-09 → 2021-09-09; baseline finish 2021-07-13 → 2021-09-16 |
| 24 | Design verification activities |  |  |  |  |  | resources Tom Bechur; Darryl Sandefur → Tom Becher; Darryl Sandefur; baseline start 2021-07-21 → 2021-09-16; baseline finish 2021-07-27 → 2021-09-27 |
| 25 | Verification design review |  |  |  |  |  | resources Tom Bechur; Darryl Sandefur → Tom Becher; Darryl Sandefur; baseline start 2021-07-27 → 2021-09-27; baseline finish 2021-07-29 → 2021-10-01 |
| 26 | Release pre-production specifications |  |  |  |  |  | resources Tom Bechur; Darryl Sandefur → Tom Becher; Darryl Sandefur; baseline start 2021-07-29 → 2021-10-01; baseline finish 2021-08-05 → 2021-10-15 |
| 27 | Build functional model |  |  |  |  |  | resources Tom Bechur; Darryl Sandefur → Tom Becher; Darryl Sandefur; baseline start 2021-08-11 → 2021-10-15; baseline finish 2021-08-24 → 2021-11-10 |
| 28 | Design validation activities | 2021-10-26 A → 2021-11-12 A (+17d) | 2021-11-16 → 2021-11-17 A (+1d) |  | 71% → 100% | 61.23d → none | baseline start 2021-09-15 → 2021-12-07; baseline finish 2021-09-22 → 2021-12-14 |
| 29 | Validation design review |  |  |  |  |  | resources Tom Bechur → Tom Becher; baseline start 2021-10-06 → 2021-12-28; baseline finish 2021-10-08 → 2022-01-03 |
| 30 | Approve model design |  | 2021-12-03 A → 2021-12-02 A (-1d) | 5.13d → 5.12d |  |  | baseline start 2021-10-08 → 2022-01-03; baseline finish 2021-10-12 → 2022-01-07 |
| 31 | Design transfer activities |  |  |  |  |  | resources Tom Bechur → Tom Becher; baseline start 2021-10-14 → 2022-01-07; baseline finish 2021-10-22 → 2022-01-18 |
| 32 | **Engineering Quality** |  |  | 78.65d → 78.62d |  |  | baseline start 2021-08-11 → 2021-10-15; baseline finish 2021-11-12 → 2022-01-21 |
| 33 | Evaluate design specifications |  |  |  |  |  | baseline start 2021-08-11 → 2021-10-15; baseline finish 2021-08-25 → 2021-10-29 |
| 34 | Develop testing protocol for prototype |  |  |  |  |  | baseline start 2021-08-30 → 2021-11-10; baseline finish 2021-09-09 → 2021-11-22 |
| 35 | Test prototype |  |  |  |  |  | baseline start 2021-09-15 → 2021-12-07; baseline finish 2021-09-29 → 2021-12-21 |
| 36 | Evaluate results of tests and identify weaknesses |  |  |  |  |  | baseline start 2021-10-06 → 2021-12-28; baseline finish 2021-10-14 → 2022-01-05 |
| 37 | Product release meetings |  |  |  |  |  | baseline start 2021-11-09 → 2022-01-18; baseline finish 2021-11-12 → 2022-01-21 |
| 38 | **Manufacturing** |  | 2022-02-07 → 2022-01-28 A (-10d) | 73.58d? → 68.5d | 71% → 100% | 3d → none | baseline start 2021-09-15 → 2021-12-07; baseline finish 2022-01-03 → 2022-03-11 |
| 39 | Process engineering plan |  | 2021-11-19 A | 17.63d → 17.62d | 82% → 100% | 58.95d → none | resources Tom Bechur → Tom Becher; baseline start 2021-09-15 → 2021-12-07; baseline finish 2021-10-06 → 2021-12-28 |
| 40 | Develop production plan |  |  |  |  |  | baseline start 2021-10-14 → 2022-01-07; baseline finish 2021-10-22 → 2022-01-17 |
| 41 | Develop production control plan |  |  | 11.13d → 11.12d |  |  | baseline start 2021-11-12 → 2022-01-21; baseline finish 2021-11-25 → 2022-02-02 |
| 42 | Approve production parts |  |  |  |  |  | resources Darryl Sandefur; Tom Bechur → Tom Becher; Darryl Sandefur; baseline start 2021-11-25 → 2022-02-02; baseline finish 2021-12-02 → 2022-02-09 |
| 43 | Contracting for deliveries |  |  | 5.13d → 5.12d |  |  | resources Darryl Sandefur; Tom Bechur → Tom Becher; Darryl Sandefur; baseline start 2021-12-02 → 2022-02-09; baseline finish 2021-12-14 → 2022-02-21 |
| 44 | Submit production purchase order | 2022-01-18 A | 2022-01-20 → 2022-01-19 A (-1d) | 2d? → 1.31d | 0% → 100% | 0d → none | resources Operations Specialist → Tom Becher; Darryl Sandefur; baseline start 2021-12-14 → 2022-02-21; baseline finish 2021-12-16 → 2022-02-23 |
| 45 | Production pilot test | 2022-01-20 → 2022-01-19 A (-1d) | 2022-01-27 → 2022-01-24 A (-3d) | 5d? → 3.19d | 0% → 100% | 0d → none | resources Operations Specialist → Tom Becher; Darryl Sandefur; baseline start 2021-12-16 → 2022-02-23; baseline finish 2021-12-23 → 2022-03-02 |
| 46 | Debugging production system | 2022-01-27 → 2022-01-24 A (-3d) | 2022-02-02 → 2022-01-26 A (-7d) | 4d? → 2.44d | 0% → 100% | 0d → none | resources Operations Specialist → Tom Becher; Darryl Sandefur; baseline start 2021-12-23 → 2022-03-02; baseline finish 2021-12-29 → 2022-03-08 |
| 47 | Production release | 2022-02-02 → 2022-01-27 A (-6d) | 2022-02-07 → 2022-01-28 A (-10d) | 3d? → 2d | 0% → 100% | 0d → none | resources Operations Specialist → Tom Becher; Darryl Sandefur; baseline start 2021-12-29 → 2022-03-08; baseline finish 2022-01-03 → 2022-03-11 |
| 48 | **Commercialization** |  | 2022-02-10 → 2022-02-07 A (-3d) | 196.73d? → 194.44d | 96% → 100% | 0d → none | baseline start 2021-05-05 → 2021-06-10; baseline finish 2022-01-06 → 2022-03-16 |
| 49 | Develop preliminary marketing plan |  |  |  |  |  | resources Kurt Zollinger; Yukio Ashida → Yukio Ashida; Kurt Zollinger; baseline start 2021-05-05 → 2021-06-10; baseline finish 2021-05-10 → 2021-06-17 |
| 50 | Develop marketing program |  |  |  |  |  | baseline start 2021-05-10 → 2021-06-17; baseline finish 2021-05-19 → 2021-07-08 |
| 51 | Train sales team |  |  |  |  |  | baseline start 2021-05-25 → 2021-07-20; baseline finish 2021-06-24 → 2021-08-19 |
| 52 | Advertising campaign |  |  |  |  |  | baseline start 2021-05-25 → 2021-07-20; baseline finish 2021-07-02 → 2021-08-27 |
| 53 | Show functional model at trade show | 2021-11-01 A → 2021-10-29 A (-3d) |  |  |  |  | baseline start 2021-09-20 → 2021-12-07; baseline finish 2021-09-23 → 2021-12-10 |
| 54 | Product launch | 2022-02-07 → 2022-02-02 A (-5d) | 2022-02-10 → 2022-02-07 A (-3d) | 3d? → 3.38d | 0% → 100% | 0d → none | baseline start 2022-01-03 → 2022-03-11; baseline finish 2022-01-06 → 2022-03-16 |
| 55 | **Project Management** |  | 2022-02-01 → 2022-02-02 A (+1d) | 218.99d? → 220.31d | 92% → 100% | 7d → none | baseline finish 2021-12-28 → 2022-03-07 |
| 56 | Project Management Period 1 |  |  |  |  |  | resources Tom Bechur; Darryl Sandefur → Tom Becher; Darryl Sandefur; baseline finish 2021-04-16 → 2021-05-05 |
| 57 | Project Management Period 2 |  |  |  |  |  | resources Tom Bechur; Darryl Sandefur → Tom Becher; Darryl Sandefur; baseline start 2021-05-05 → 2021-06-10; baseline finish 2021-05-14 → 2021-06-30 |
| 58 | Project Management Period 3 |  |  | 10.13d → 10.12d |  |  | resources Tom Bechur; Darryl Sandefur → Tom Becher; Darryl Sandefur; baseline start 2021-05-25 → 2021-07-20; baseline finish 2021-06-03 → 2021-08-09 |
| 59 | Project Management Period 4 |  | 2021-08-09 A → 2021-08-06 A (-3d) | 14.63d → 14.62d |  |  | baseline start 2021-07-02 → 2021-08-27; baseline finish 2021-07-21 → 2021-09-15 |
| 60 | Project Management Period 5 |  | 2021-09-01 A → 2021-08-31 A (-1d) |  |  |  | baseline start 2021-07-21 → 2021-09-16; baseline finish 2021-08-11 → 2021-10-07 |
| 61 | Project Management Period 6 |  |  |  |  |  | baseline start 2021-08-11 → 2021-10-15; baseline finish 2021-08-24 → 2021-10-28 |
| 62 | Project Management Period 7 |  |  |  |  |  | baseline start 2021-08-30 → 2021-11-10; baseline finish 2021-09-14 → 2021-11-25 |
| 63 | Project Management Period 8 |  |  |  |  |  | baseline start 2021-09-15 → 2021-12-07; baseline finish 2021-09-20 → 2021-12-10 |
| 64 | Project Management Period 9 |  |  | 4.63d → 4.62d |  |  | baseline start 2021-10-06 → 2021-12-28; baseline finish 2021-10-12 → 2022-01-03 |
| 65 | Project Management Period 10 |  |  | 5.63d → 5.62d |  |  | baseline start 2021-10-14 → 2022-01-07; baseline finish 2021-10-21 → 2022-01-14 |
| 66 | Project Management Period 11 |  |  |  |  |  | baseline start 2021-11-12 → 2022-01-21; baseline finish 2021-12-01 → 2022-02-09 |
| 67 | Project Management Period 12 | 2022-01-18 A | 2022-02-01 → 2022-02-02 A (+1d) | 10d? → 11.38d | 0% → 100% | 7d → none | baseline start 2021-12-14 → 2022-02-21; baseline finish 2021-12-28 → 2022-03-07 |
| 68 | **Milestones** |  | 2022-02-10 → 2022-02-07 A (-3d) | 196.73d? → 194.44d | 0% → 100% | 0d → none | baseline start 2021-05-05 → 2021-06-10; baseline finish 2022-01-06 → 2022-03-16 |
| 69 | Milestone 1 |  |  | 0d? → 0d |  |  | resources none → Period 1 Training Costs; Period 1 Managerial Action Costs; Period 1 Unallocated Resource Costs; baseline start 2021-05-05 → 2021-06-10; baseline finish 2021-05-05 → 2021-06-10 |
| 70 | Milestone 2 | 2021-06-04 A → 2021-06-03 A (-1d) | 2021-06-04 A → 2021-06-03 A (-1d) | 0d? → 0d |  |  | resources none → Period 2 Training Costs; Period 2 Managerial Action Costs; Period 2 Unallocated Resource Costs; baseline start 2021-05-25 → 2021-07-20; baseline finish 2021-05-25 → 2021-07-20 |

| ID | Task | Start | Finish | Duration | Complete | Total float | Other |
| --- | --- | --- | --- | --- | --- | --- | --- |
| 71 | Milestone 3 |  |  | 0d? → 0d |  |  | resources none → Period 3 Training Costs; Period 3 Managerial Action Costs; Period 3 Unallocated Resource Costs; baseline start 2021-07-02 → 2021-08-27; baseline finish 2021-07-02 → 2021-08-27 |
| 72 | Milestone 4 | 2021-08-09 A → 2021-08-06 A (-3d) | 2021-08-09 A → 2021-08-06 A (-3d) | 0d? → 0d |  |  | resources none → Period 4 Training Costs; Period 4 Managerial Action Costs; Period 4 Unallocated Resource Costs; baseline start 2021-07-21 → 2021-09-16; baseline finish 2021-07-21 → 2021-09-16 |
| 73 | Milestone 5 | 2021-09-01 A → 2021-08-31 A (-1d) | 2021-09-01 A → 2021-08-31 A (-1d) | 0d? → 0d |  |  | resources none → Period 5 Training Costs; Period 5 Managerial Action Costs; Period 5 Unallocated Resource Costs; baseline start 2021-08-11 → 2021-10-15; baseline finish 2021-08-11 → 2021-10-15 |
| 74 | Milestone 6 |  |  | 0d? → 0d |  |  | resources none → Period 6 Training Costs; Period 6 Managerial Action Costs; Period 6 Unallocated Resource Costs; baseline start 2021-08-30 → 2021-11-10; baseline finish 2021-08-30 → 2021-11-10 |
| 75 | Milestone 7 |  |  | 0d? → 0d |  |  | resources none → Period 7 Training Costs; Period 7 Managerial Action Costs; Period 7 Unallocated Resource Costs; baseline start 2021-09-15 → 2021-12-07; baseline finish 2021-09-15 → 2021-12-07 |
| 76 | Milestone 8 | 2021-11-19 A | 2021-11-19 A | 0d? → 0d | 0% → 100% | 58.38d → none | resources none → Period 8 Training Costs; Period 8 Managerial Action Costs; Period 8 Unallocated Resource Costs; baseline start 2021-10-06 → 2021-12-28; baseline finish 2021-10-06 → 2021-12-28 |
| 77 | Milestone 9 | 2021-12-03 → 2021-12-02 A (-1d) | 2021-12-03 → 2021-12-02 A (-1d) | 0d? → 0d | 0% → 100% | 7.5d → none | resources none → Period 9 Training Costs; Period 9 Managerial Action Costs; Period 9 Unallocated Resource Costs; baseline start 2021-10-14 → 2022-01-07; baseline finish 2021-10-14 → 2022-01-07 |
| 78 | Milestone 10 | 2021-12-21 A | 2021-12-21 A | 0d? → 0d | 0% → 100% | 36.57d → none | resources none → Period 10 Training Costs; Period 10 Managerial Action Costs; Period 10 Unallocated Resource Costs; baseline start 2021-11-12 → 2022-01-21; baseline finish 2021-11-12 → 2022-01-21 |
| 79 | Milestone 11 | 2022-01-18 A | 2022-01-18 A | 0d? → 0d | 0% → 100% | 0d → none | resources none → Period 11 Training Costs; Period 11 Managerial Action Costs; Period 11 Unallocated Resource Costs; baseline start 2021-12-14 → 2022-02-21; baseline finish 2021-12-14 → 2022-02-21 |
| 80 | Milestone 12 | 2022-02-10 → 2022-02-07 A (-3d) | 2022-02-10 → 2022-02-07 A (-3d) | 0d? → 0d | 0% → 100% | 0d → none | resources none → Period 12 Training Costs; Period 12 Managerial Action Costs; Period 12 Unallocated Resource Costs; baseline start 2022-01-06 → 2022-03-16; baseline finish 2022-01-06 → 2022-03-16 |

## Version 18 (data date 2021-05-05, saved 2021-05-25, file Master.mpp)

Last finish stays 2022-02-07. Complete tasks 70 → 67.

Changed:

| ID | Task | Start | Finish | Duration | Complete | Total float | Other |
| --- | --- | --- | --- | --- | --- | --- | --- |
| 1 | **Market Assessment** |  |  | 29.25d → 29.26d |  |  | baseline finish 2021-06-10 → 2021-05-05 |
| 2 | Evaluate market |  |  |  |  |  | baseline finish 2021-04-16 → 2021-04-08 |
| 3 | Develop Business opportunity |  |  |  |  |  | resources Yukio Ashida; Kurt Zollinger → Kurt Zollinger; Yukio Ashida; baseline start 2021-04-16 → 2021-04-08; baseline finish 2021-05-06 → 2021-04-19 |
| 4 | Customer preference study |  | 2021-05-06 A → 2021-05-07 A (+1d) | 12.12d → 12.13d |  |  | resources Yukio Ashida; Kurt Zollinger → Kurt Zollinger; Yukio Ashida; baseline start 2021-05-06 → 2021-04-19; baseline finish 2021-06-04 → 2021-05-03 |
| 5 | Business evaluation (NPV, etc.) |  |  |  |  |  | baseline start 2021-06-04 → 2021-05-03; baseline finish 2021-06-10 → 2021-05-05 |
| 6 | **Procurement** |  |  | 85.56d → 85.58d |  |  | baseline start 2021-10-15 → 2021-08-11; baseline finish 2022-02-04 → 2021-11-26 |
| 7 | Identify vendors |  |  |  |  |  | baseline start 2021-10-15 → 2021-08-11; baseline finish 2021-10-26 → 2021-08-20 |
| 8 | Develop and Issue RFQ | 2021-09-07 A → 2021-09-01 A (-6d) |  |  |  |  | baseline start 2021-10-15 → 2021-08-11; baseline finish 2021-10-25 → 2021-08-30 |
| 9 | Issue sample (production equivalent) |  |  |  |  |  | baseline start 2021-11-10 → 2021-08-30; baseline finish 2021-11-17 → 2021-09-06 |
| 10 | Assess RFQ responses and select vendors |  |  |  |  |  | resources Jovanna Soto; Tom Becher → Jovanna Soto; Tom Bechur; baseline start 2022-01-21 → 2021-11-12; baseline finish 2022-02-04 → 2021-11-26 |
| 11 | **Supplier Quality** |  |  | 57.12d → 57.14d |  |  | baseline start 2021-11-17 → 2021-09-06; baseline finish 2022-01-21 → 2021-10-28 |
| 12 | Perform supplier process capability |  |  | 17.12d → 17.13d |  |  | resources Tom Becher → Tom Bechur; baseline start 2021-11-17 → 2021-09-06; baseline finish 2021-12-07 → 2021-09-15 |
| 13 | Approve sample parts |  |  | 10.12d → 10.13d |  |  | baseline start 2021-12-07 → 2021-09-15; baseline finish 2021-12-17 → 2021-09-27 |
| 14 | Qualify Supplier |  |  |  |  |  | baseline start 2022-01-07 → 2021-10-14; baseline finish 2022-01-21 → 2021-10-28 |
| 15 | **Design** |  | 2021-07-27 A → 2021-07-21 A (-6d) | 54.88d → 51.51d |  |  | baseline start 2021-06-10 → 2021-05-05; baseline finish 2021-09-09 → 2021-07-09 |
| 16 | Design and development plan |  |  |  |  |  | baseline start 2021-06-10 → 2021-05-05; baseline finish 2021-06-18 → 2021-05-10 |
| 17 | Design specs. |  | 2021-06-03 A → 2021-06-04 A (+1d) |  |  |  | resources Lance Portier; Kelly Sauseda → Kelly Sauseda; Lance Portier; baseline start 2021-06-18 → 2021-05-10; baseline finish 2021-07-20 → 2021-05-25 |
| 18 | Identify testing requirements |  |  |  |  |  | baseline start 2021-07-20 → 2021-05-25; baseline finish 2021-08-03 → 2021-06-01 |
| 19 | Risk analysis |  |  |  |  |  | baseline start 2021-08-03 → 2021-06-01; baseline finish 2021-08-17 → 2021-06-08 |
| 20 | Design labeling | 2021-07-19 A → 2021-07-14 A (-5d) | 2021-07-22 A → 2021-07-19 A (-3d) |  |  |  | resources Lance Portier; Kelly Sauseda → Kelly Sauseda; Lance Portier; baseline start 2021-08-27 → 2021-07-02; baseline finish 2021-09-03 → 2021-07-07 |
| 21 | Approve design | 2021-07-22 A → 2021-07-19 A (-3d) | 2021-07-27 A → 2021-07-21 A (-6d) | 2.62d → 2.63d |  |  | resources Lance Portier; Kelly Sauseda → Kelly Sauseda; Lance Portier; baseline start 2021-09-03 → 2021-07-07; baseline finish 2021-09-09 → 2021-07-09 |
| 22 | **Engineering** | 2021-07-27 A → 2021-07-21 A (-6d) |  | 101d → 104.4d |  |  | baseline start 2021-09-09 → 2021-07-09; baseline finish 2022-01-18 → 2021-11-09 |
| 23 | Initial engineering specs. | 2021-07-27 A → 2021-07-21 A (-6d) | 2021-07-30 A → 2021-07-26 A (-4d) |  |  |  | resources Tom Becher; Darryl Sandefur → Tom Bechur; Darryl Sandefur; baseline start 2021-09-09 → 2021-07-09; baseline finish 2021-09-16 → 2021-07-13 |
| 24 | Design verification activities |  |  |  |  |  | resources Tom Becher; Darryl Sandefur → Tom Bechur; Darryl Sandefur; baseline start 2021-09-16 → 2021-07-21; baseline finish 2021-09-27 → 2021-07-27 |
| 25 | Verification design review |  |  |  |  |  | resources Tom Becher; Darryl Sandefur → Tom Bechur; Darryl Sandefur; baseline start 2021-09-27 → 2021-07-27; baseline finish 2021-10-01 → 2021-07-29 |
| 26 | Release pre-production specifications |  |  |  |  |  | resources Tom Becher; Darryl Sandefur → Tom Bechur; Darryl Sandefur; baseline start 2021-10-01 → 2021-07-29; baseline finish 2021-10-15 → 2021-08-05 |
| 27 | Build functional model |  |  |  |  |  | resources Tom Becher; Darryl Sandefur → Tom Bechur; Darryl Sandefur; baseline start 2021-10-15 → 2021-08-11; baseline finish 2021-11-10 → 2021-08-24 |
| 28 | Design validation activities | 2021-11-12 A → 2021-10-26 A (-17d) | 2021-11-17 A → 2021-11-16 A (-1d) |  |  |  | baseline start 2021-12-07 → 2021-09-15; baseline finish 2021-12-14 → 2021-09-22 |
| 29 | Validation design review |  |  |  |  |  | resources Tom Becher → Tom Bechur; baseline start 2021-12-28 → 2021-10-06; baseline finish 2022-01-03 → 2021-10-08 |
| 30 | Approve model design |  | 2021-12-02 A → 2021-12-03 A (+1d) | 5.12d → 5.13d |  |  | baseline start 2022-01-03 → 2021-10-08; baseline finish 2022-01-07 → 2021-10-12 |
| 31 | Design transfer activities |  |  |  |  |  | resources Tom Becher → Tom Bechur; baseline start 2022-01-07 → 2021-10-14; baseline finish 2022-01-18 → 2021-10-22 |
| 32 | **Engineering Quality** |  |  | 78.62d → 78.65d |  |  | baseline start 2021-10-15 → 2021-08-11; baseline finish 2022-01-21 → 2021-11-12 |
| 33 | Evaluate design specifications |  |  |  |  |  | baseline start 2021-10-15 → 2021-08-11; baseline finish 2021-10-29 → 2021-08-25 |
| 34 | Develop testing protocol for prototype |  |  |  |  |  | baseline start 2021-11-10 → 2021-08-30; baseline finish 2021-11-22 → 2021-09-09 |
| 35 | Test prototype |  |  |  |  |  | baseline start 2021-12-07 → 2021-09-15; baseline finish 2021-12-21 → 2021-09-29 |
| 36 | Evaluate results of tests and identify weaknesses |  |  |  |  |  | baseline start 2021-12-28 → 2021-10-06; baseline finish 2022-01-05 → 2021-10-14 |
| 37 | Product release meetings |  |  |  |  |  | baseline start 2022-01-18 → 2021-11-09; baseline finish 2022-01-21 → 2021-11-12 |
| 38 | **Manufacturing** |  | 2022-01-28 A → 2022-01-31 (+3d) | 68.5d → 68.52d | 100% → 94% | none → 5.82d | baseline start 2021-12-07 → 2021-09-15; baseline finish 2022-03-11 → 2022-01-03 |
| 39 | Process engineering plan |  |  | 17.62d → 17.63d |  |  | resources Tom Becher → Tom Bechur; baseline start 2021-12-07 → 2021-09-15; baseline finish 2021-12-28 → 2021-10-06 |
| 40 | Develop production plan |  |  |  |  |  | baseline start 2022-01-07 → 2021-10-14; baseline finish 2022-01-17 → 2021-10-22 |
| 41 | Develop production control plan |  |  | 11.12d → 11.13d |  |  | baseline start 2022-01-21 → 2021-11-12; baseline finish 2022-02-02 → 2021-11-25 |
| 42 | Approve production parts |  |  |  |  |  | resources Tom Becher; Darryl Sandefur → Darryl Sandefur; Tom Bechur; baseline start 2022-02-02 → 2021-11-25; baseline finish 2022-02-09 → 2021-12-02 |
| 43 | Contracting for deliveries |  | 2022-01-18 A → 2022-01-18 | 5.12d → 5.13d | 100% → 39% | none → 14.76d | resources Tom Becher; Darryl Sandefur → Darryl Sandefur; Tom Bechur; baseline start 2022-02-09 → 2021-12-02; baseline finish 2022-02-21 → 2021-12-14 |
| 44 | Submit production purchase order |  |  |  |  |  | resources Tom Becher; Darryl Sandefur → Darryl Sandefur; Tom Bechur; baseline start 2022-02-21 → 2021-12-14; baseline finish 2022-02-23 → 2021-12-16 |
| 45 | Production pilot test |  |  |  |  |  | resources Tom Becher; Darryl Sandefur → Darryl Sandefur; Tom Bechur; baseline start 2022-02-23 → 2021-12-16; baseline finish 2022-03-02 → 2021-12-23 |
| 46 | Debugging production system |  | 2022-01-26 A → 2022-01-27 A (+1d) |  |  |  | resources Tom Becher; Darryl Sandefur → Darryl Sandefur; Tom Bechur; baseline start 2022-03-02 → 2021-12-23; baseline finish 2022-03-08 → 2021-12-29 |
| 47 | Production release |  | 2022-01-28 A → 2022-01-31 A (+3d) |  |  |  | resources Tom Becher; Darryl Sandefur → Darryl Sandefur; Tom Bechur; baseline start 2022-03-08 → 2021-12-29; baseline finish 2022-03-11 → 2022-01-03 |
| 48 | **Commercialization** |  |  | 194.44d → 194.49d |  |  | baseline start 2021-06-10 → 2021-05-05; baseline finish 2022-03-16 → 2022-01-06 |
| 49 | Develop preliminary marketing plan |  |  |  |  |  | resources Yukio Ashida; Kurt Zollinger → Kurt Zollinger; Yukio Ashida; baseline start 2021-06-10 → 2021-05-05; baseline finish 2021-06-17 → 2021-05-10 |
| 50 | Develop marketing program |  |  |  |  |  | baseline start 2021-06-17 → 2021-05-10; baseline finish 2021-07-08 → 2021-05-19 |
| 51 | Train sales team |  |  |  |  |  | baseline start 2021-07-20 → 2021-05-25; baseline finish 2021-08-19 → 2021-06-24 |
| 52 | Advertising campaign |  |  |  |  |  | baseline start 2021-07-20 → 2021-05-25; baseline finish 2021-08-27 → 2021-07-02 |
| 53 | Show functional model at trade show | 2021-10-29 A → 2021-11-01 A (+3d) |  |  |  |  | baseline start 2021-12-07 → 2021-09-20; baseline finish 2021-12-10 → 2021-09-23 |
| 54 | Product launch |  |  |  |  |  | constraint none → start no earlier than 2022-02-02; baseline start 2022-03-11 → 2022-01-03; baseline finish 2022-03-16 → 2022-01-06 |
| 55 | **Project Management** |  |  | 220.31d → 220.37d |  |  | baseline finish 2022-03-07 → 2021-12-28 |
| 56 | Project Management Period 1 |  |  |  |  |  | resources Tom Becher; Darryl Sandefur → Tom Bechur; Darryl Sandefur; baseline finish 2021-05-05 → 2021-04-16 |
| 57 | Project Management Period 2 |  |  |  |  |  | resources Tom Becher; Darryl Sandefur → Tom Bechur; Darryl Sandefur; baseline start 2021-06-10 → 2021-05-05; baseline finish 2021-06-30 → 2021-05-14 |
| 58 | Project Management Period 3 |  |  | 10.12d → 10.13d |  |  | resources Tom Becher; Darryl Sandefur → Tom Bechur; Darryl Sandefur; baseline start 2021-07-20 → 2021-05-25; baseline finish 2021-08-09 → 2021-06-03 |
| 59 | Project Management Period 4 |  | 2021-08-06 A → 2021-08-09 A (+3d) | 14.62d → 14.63d |  |  | baseline start 2021-08-27 → 2021-07-02; baseline finish 2021-09-15 → 2021-07-21 |
| 60 | Project Management Period 5 |  | 2021-08-31 A → 2021-09-01 A (+1d) |  |  |  | baseline start 2021-09-16 → 2021-07-21; baseline finish 2021-10-07 → 2021-08-11 |
| 61 | Project Management Period 6 |  |  |  |  |  | baseline start 2021-10-15 → 2021-08-11; baseline finish 2021-10-28 → 2021-08-24 |
| 62 | Project Management Period 7 |  |  |  |  |  | baseline start 2021-11-10 → 2021-08-30; baseline finish 2021-11-25 → 2021-09-14 |
| 63 | Project Management Period 8 |  |  |  |  |  | baseline start 2021-12-07 → 2021-09-15; baseline finish 2021-12-10 → 2021-09-20 |
| 64 | Project Management Period 9 |  |  | 4.62d → 4.63d |  |  | baseline start 2021-12-28 → 2021-10-06; baseline finish 2022-01-03 → 2021-10-12 |
| 65 | Project Management Period 10 |  |  | 5.62d → 5.63d |  |  | baseline start 2022-01-07 → 2021-10-14; baseline finish 2022-01-14 → 2021-10-21 |
| 66 | Project Management Period 11 |  |  |  |  |  | baseline start 2022-01-21 → 2021-11-12; baseline finish 2022-02-09 → 2021-12-01 |
| 67 | Project Management Period 12 |  |  |  |  |  | baseline start 2022-02-21 → 2021-12-14; baseline finish 2022-03-07 → 2021-12-28 |
| 68 | **Milestones** |  | 2022-02-07 A → 2022-02-07 | 194.44d → 194.49d? | 100% → 0% | none → 0d | baseline start 2021-06-10 → 2021-05-05; baseline finish 2022-03-16 → 2022-01-06 |
| 69 | Milestone 1 |  |  | 0d → 0d? |  |  | resources Period 1 Training Costs; Period 1 Managerial Action Costs; Period 1 Unallocated Resource Costs → none; baseline start 2021-06-10 → 2021-05-05; baseline finish 2021-06-10 → 2021-05-05 |
| 70 | Milestone 2 | 2021-06-03 A → 2021-06-04 A (+1d) | 2021-06-03 A → 2021-06-04 A (+1d) | 0d → 0d? |  |  | resources Period 2 Training Costs; Period 2 Managerial Action Costs; Period 2 Unallocated Resource Costs → none; baseline start 2021-07-20 → 2021-05-25; baseline finish 2021-07-20 → 2021-05-25 |

| ID | Task | Start | Finish | Duration | Complete | Total float | Other |
| --- | --- | --- | --- | --- | --- | --- | --- |
| 71 | Milestone 3 |  |  | 0d → 0d? |  |  | resources Period 3 Training Costs; Period 3 Managerial Action Costs; Period 3 Unallocated Resource Costs → none; baseline start 2021-08-27 → 2021-07-02; baseline finish 2021-08-27 → 2021-07-02 |
| 72 | Milestone 4 | 2021-08-06 A → 2021-08-09 A (+3d) | 2021-08-06 A → 2021-08-09 A (+3d) | 0d → 0d? |  |  | resources Period 4 Training Costs; Period 4 Managerial Action Costs; Period 4 Unallocated Resource Costs → none; baseline start 2021-09-16 → 2021-07-21; baseline finish 2021-09-16 → 2021-07-21 |
| 73 | Milestone 5 | 2021-08-31 A → 2021-09-01 A (+1d) | 2021-08-31 A → 2021-09-01 A (+1d) | 0d → 0d? |  |  | resources Period 5 Training Costs; Period 5 Managerial Action Costs; Period 5 Unallocated Resource Costs → none; baseline start 2021-10-15 → 2021-08-11; baseline finish 2021-10-15 → 2021-08-11 |
| 74 | Milestone 6 |  |  | 0d → 0d? |  |  | resources Period 6 Training Costs; Period 6 Managerial Action Costs; Period 6 Unallocated Resource Costs → none; baseline start 2021-11-10 → 2021-08-30; baseline finish 2021-11-10 → 2021-08-30 |
| 75 | Milestone 7 |  |  | 0d → 0d? |  |  | resources Period 7 Training Costs; Period 7 Managerial Action Costs; Period 7 Unallocated Resource Costs → none; baseline start 2021-12-07 → 2021-09-15; baseline finish 2021-12-07 → 2021-09-15 |
| 76 | Milestone 8 |  |  | 0d → 0d? |  |  | resources Period 8 Training Costs; Period 8 Managerial Action Costs; Period 8 Unallocated Resource Costs → none; baseline start 2021-12-28 → 2021-10-06; baseline finish 2021-12-28 → 2021-10-06 |
| 77 | Milestone 9 | 2021-12-02 A → 2021-12-03 A (+1d) | 2021-12-02 A → 2021-12-03 A (+1d) | 0d → 0d? |  |  | resources Period 9 Training Costs; Period 9 Managerial Action Costs; Period 9 Unallocated Resource Costs → none; baseline start 2022-01-07 → 2021-10-14; baseline finish 2022-01-07 → 2021-10-14 |
| 78 | Milestone 10 |  |  | 0d → 0d? |  |  | resources Period 10 Training Costs; Period 10 Managerial Action Costs; Period 10 Unallocated Resource Costs → none; baseline start 2022-01-21 → 2021-11-12; baseline finish 2022-01-21 → 2021-11-12 |
| 79 | Milestone 11 | 2022-01-18 A → 2022-01-18 | 2022-01-18 A → 2022-01-18 | 0d → 0d? | 100% → 0% | none → 14.76d | resources Period 11 Training Costs; Period 11 Managerial Action Costs; Period 11 Unallocated Resource Costs → none; baseline start 2022-02-21 → 2021-12-14; baseline finish 2022-02-21 → 2021-12-14 |
| 80 | Milestone 12 | 2022-02-07 A → 2022-02-07 | 2022-02-07 A → 2022-02-07 | 0d → 0d? | 100% → 0% | none → 0d | resources Period 12 Training Costs; Period 12 Managerial Action Costs; Period 12 Unallocated Resource Costs → none; baseline start 2022-03-16 → 2022-01-06; baseline finish 2022-03-16 → 2022-01-06 |

## Version 19 (data date 2022-02-01, saved 2021-05-26, file Master.mpp)

Note of the change: Prelim Final ver

Last finish stays 2022-02-07. Complete tasks 67 → 70.

Changed:

| ID | Task | Start | Finish | Duration | Complete | Total float | Other |
| --- | --- | --- | --- | --- | --- | --- | --- |
| 6 | **Procurement** |  |  |  |  |  | baseline finish 2021-11-26 → 2021-11-11 |
| 8 | Develop and Issue RFQ |  | 2021-09-13 A → 2021-09-15 A (+2d) |  |  |  |  |
| 10 | Assess RFQ responses and select vendors |  |  |  |  |  | baseline start 2021-11-12 → 2021-10-28; baseline finish 2021-11-26 → 2021-11-11 |
| 13 | Approve sample parts | 2021-10-26 A → 2021-10-27 A (+1d) | 2021-11-09 A → 2021-11-10 A (+1d) |  |  |  |  |
| 15 | **Design** |  | 2021-07-21 A → 2021-07-27 A (+6d) | 51.51d → 54.89d |  |  |  |
| 20 | Design labeling | 2021-07-14 A → 2021-07-19 A (+5d) | 2021-07-19 A → 2021-07-22 A (+3d) |  |  |  |  |
| 21 | Approve design | 2021-07-19 A → 2021-07-22 A (+3d) | 2021-07-21 A → 2021-07-27 A (+6d) |  |  |  |  |
| 22 | **Engineering** | 2021-07-21 A → 2021-07-27 A (+6d) |  | 104.4d → 101.02d |  |  | baseline finish 2021-11-09 → 2021-10-19 |
| 23 | Initial engineering specs. | 2021-07-21 A → 2021-07-27 A (+6d) | 2021-07-26 A → 2021-07-30 A (+4d) |  |  |  |  |
| 31 | Design transfer activities |  |  |  |  |  | baseline finish 2021-10-22 → 2021-10-19 |
| 32 | **Engineering Quality** |  |  |  |  |  | baseline finish 2021-11-12 → 2021-10-26 |
| 37 | Product release meetings |  |  |  |  |  | baseline start 2021-11-09 → 2021-10-21; baseline finish 2021-11-12 → 2021-10-26 |
| 38 | **Manufacturing** |  | 2022-01-31 A |  | 94% → 100% | 5.82d → none | baseline finish 2022-01-03 → 2021-12-16 |
| 41 | Develop production control plan |  |  |  |  |  | baseline start 2021-11-12 → 2021-10-28; baseline finish 2021-11-25 → 2021-11-09 |
| 42 | Approve production parts |  |  |  |  |  | baseline start 2021-11-25 → 2021-11-09; baseline finish 2021-12-02 → 2021-11-16 |
| 43 | Contracting for deliveries |  | 2022-01-18 A |  | 39% → 100% | 14.76d → none | baseline start 2021-12-02 → 2021-11-16; baseline finish 2021-12-14 → 2021-11-26 |
| 44 | Submit production purchase order |  |  |  |  |  | baseline start 2021-12-14 → 2021-11-26; baseline finish 2021-12-16 → 2021-11-30 |
| 45 | Production pilot test |  |  |  |  |  | resources Darryl Sandefur; Tom Bechur → Tom Bechur; Darryl Sandefur; baseline start 2021-12-16 → 2021-11-30; baseline finish 2021-12-23 → 2021-12-07 |
| 46 | Debugging production system |  |  |  |  |  | baseline start 2021-12-23 → 2021-12-07; baseline finish 2021-12-29 → 2021-12-13 |
| 47 | Production release |  |  |  |  |  | baseline start 2021-12-29 → 2021-12-13; baseline finish 2022-01-03 → 2021-12-16 |
| 48 | **Commercialization** |  |  |  |  |  | baseline finish 2022-01-06 → 2021-12-21 |
| 54 | Product launch |  |  |  |  |  | constraint start no earlier than 2022-02-02 → none; baseline start 2022-01-03 → 2021-12-16; baseline finish 2022-01-06 → 2021-12-21 |
| 55 | **Project Management** |  |  |  |  |  | baseline finish 2021-12-28 → 2021-12-10 |
| 66 | Project Management Period 11 |  |  |  |  |  | baseline start 2021-11-12 → 2021-10-28; baseline finish 2021-12-01 → 2021-11-16 |
| 67 | Project Management Period 12 |  |  |  |  |  | baseline start 2021-12-14 → 2021-11-26; baseline finish 2021-12-28 → 2021-12-10 |
| 68 | **Milestones** |  | 2022-02-07 A | 194.49d? → 194.49d | 0% → 100% | 0d → none | baseline finish 2022-01-06 → 2021-12-21 |
| 69 | Milestone 1 |  |  | 0d? → 0d |  |  | resources none → Period 1 Managerial Action Costs; Period 1 Training Costs; Period 1 Unallocated Resource Costs |
| 70 | Milestone 2 |  |  | 0d? → 0d |  |  | resources none → Period 2 Managerial Action Costs; Period 2 Training Costs; Period 2 Unallocated Resource Costs |
| 71 | Milestone 3 |  |  | 0d? → 0d |  |  | resources none → Period 3 Managerial Action Costs; Period 3 Training Costs; Period 3 Unallocated Resource Costs |
| 72 | Milestone 4 |  |  | 0d? → 0d |  |  | resources none → Period 4 Managerial Action Costs; Period 4 Training Costs; Period 4 Unallocated Resource Costs |
| 73 | Milestone 5 |  |  | 0d? → 0d |  |  | resources none → Period 5 Managerial Action Costs; Period 5 Training Costs; Period 5 Unallocated Resource Costs |
| 74 | Milestone 6 |  |  | 0d? → 0d |  |  | resources none → Period 6 Managerial Action Costs; Period 6 Training Costs; Period 6 Unallocated Resource Costs |
| 75 | Milestone 7 |  |  | 0d? → 0d |  |  | resources none → Period 7 Managerial Action Costs; Period 7 Training Costs; Period 7 Unallocated Resource Costs |
| 76 | Milestone 8 |  |  | 0d? → 0d |  |  | resources none → Period 8 Managerial Action Costs; Period 8 Training Costs; Period 8 Unallocated Resource Costs |
| 77 | Milestone 9 |  |  | 0d? → 0d |  |  | resources none → Period 9 Managerial Action Costs; Period 9 Training Costs; Period 9 Unallocated Resource Costs |
| 78 | Milestone 10 |  |  | 0d? → 0d |  |  | resources none → Period 10 Managerial Action Costs; Period 10 Training Costs; Period 10 Unallocated Resource Costs; baseline start 2021-11-12 → 2021-10-28; baseline finish 2021-11-12 → 2021-10-28 |
| 79 | Milestone 11 | 2022-01-18 A | 2022-01-18 A | 0d? → 0d | 0% → 100% | 14.76d → none | resources none → Period 11 Managerial Action Costs; Period 11 Training Costs; Period 11 Unallocated Resource Costs; baseline start 2021-12-14 → 2021-11-26; baseline finish 2021-12-14 → 2021-11-26 |
| 80 | Milestone 12 | 2022-02-07 A | 2022-02-07 A | 0d? → 0d | 0% → 100% | 0d → none | resources none → Period 12 Managerial Action Costs; Period 12 Training Costs; Period 12 Unallocated Resource Costs; baseline start 2022-01-06 → 2021-12-21; baseline finish 2022-01-06 → 2021-12-21 |
