# 29562_10193_415202122307PM877644-v2013

How a schedule from MS Project changed from version to version. A marks actual dates.

## Version 1 (data date 2021-05-11, saved 2021-04-15, file phase1Result.mpp)

Note of the change: semi-final-final ver

| ID | WBS | Task | Duration | Start | Finish | Predecessors | Complete | Total float |
| --- | --- | --- | --- | --- | --- | --- | --- | --- |
| 1 | 1 | **Market Assessment** | 29.25d | 2021-03-31 A | 2021-05-11 A |  | 100% |  |
| 2 |  | Evaluate market | 6.69d | 2021-03-31 A | 2021-04-08 A |  | 100% |  |
| 3 |  | Develop Business opportunity | 8.06d | 2021-04-08 A | 2021-04-20 A | 2 | 100% |  |
| 4 |  | Customer preference study | 12.12d | 2021-04-20 A | 2021-05-06 A | 3 | 100% |  |
| 5 |  | Business evaluation (NPV, etc.) | 2.38d | 2021-05-07 A | 2021-05-11 A | 4 | 100% |  |
| 6 | 2 | **Procurement** | 80d? | 2021-09-15 | 2022-01-05 |  |  | 3.5d |
| 7 |  | Identify vendors | 7d? | 2021-09-15 | 2021-09-24 | 26, 73 |  | 11d |
| 8 |  | Develop and Issue RFQ | 6d? | 2021-09-15 | 2021-09-23 | 73, 26 |  | 12d |
| 9 |  | Issue sample (production equivalent) | 5d? | 2021-10-11 | 2021-10-18 | 26, 7, 8, 74 |  | 0d |
| 10 |  | Assess RFQ responses and select vendors | 10d? | 2021-12-22 | 2022-01-05 | 78, 14 |  | 3.5d |
| 11 | 3 | **Supplier Quality** | 47d? | 2021-10-18 | 2021-12-22 |  |  | 0d |
| 12 |  | Perform supplier process capability | 14d? | 2021-10-18 | 2021-11-05 | 9 |  | 0d |
| 13 |  | Approve sample parts | 8d? | 2021-11-05 | 2021-11-17 | 12, 75 |  | 7d |
| 14 |  | Qualify Supplier | 10d? | 2021-12-08 | 2021-12-22 | 77, 13 |  | 0d |
| 15 | 4 | **Design** | 65d? | 2021-05-11 | 2021-08-10 |  |  | 0d |
| 16 |  | Design and development plan | 6d? | 2021-05-11 | 2021-05-19 | 5, 69 |  | 0d |
| 17 |  | Design specs. | 22d? | 2021-05-19 | 2021-06-18 | 16 |  | 0d |
| 18 |  | Identify testing requirements | 10d? | 2021-06-18 | 2021-07-02 | 17, 70, 50 |  | 8d |
| 19 |  | Risk analysis | 10d? | 2021-07-02 | 2021-07-16 | 18 |  | 8d |
| 20 |  | Design labeling | 5d? | 2021-07-28 | 2021-08-04 | 19, 71 |  | 0d |
| 21 |  | Approve design | 4d? | 2021-08-04 | 2021-08-10 | 20 |  | 0d |
| 22 | 5 | **Engineering** | 93d? | 2021-08-10 | 2021-12-17 |  |  | 0d |
| 23 |  | Initial engineering specs. | 5d? | 2021-08-10 | 2021-08-17 | 21 |  | 0d |
| 24 |  | Design verification activities | 7d? | 2021-08-17 | 2021-08-26 | 23, 72 |  | 0d |
| 25 |  | Verification design review | 4d? | 2021-08-26 | 2021-09-01 | 24 |  | 0d |
| 26 |  | Release pre-production specifications | 10d? | 2021-09-01 | 2021-09-15 | 25 |  | 0d |
| 27 |  | Build functional model | 18d? | 2021-09-15 | 2021-10-11 | 26, 73 |  | 0d |
| 28 |  | Design validation activities | 5d? | 2021-11-05 | 2021-11-12 | 75, 27, 12 |  | 10d |
| 29 |  | Validation design review | 4d? | 2021-11-26 | 2021-12-02 | 28, 76 |  | 0d |
| 30 |  | Approve model design | 4d? | 2021-12-02 | 2021-12-08 | 29 |  | 0d |
| 31 |  | Design transfer activities | 7d? | 2021-12-08 | 2021-12-17 | 30, 36, 77 |  | 0d |
| 32 | 6 | **Engineering Quality** | 70d? | 2021-09-15 | 2021-12-22 |  |  | 0d |
| 33 |  | Evaluate design specifications | 10d? | 2021-09-15 | 2021-09-29 | 73, 26 |  | 8d |
| 34 |  | Develop testing protocol for prototype | 8d? | 2021-10-11 | 2021-10-21 | 26, 33, 74 |  | 11d |
| 35 |  | Test prototype | 10d? | 2021-11-05 | 2021-11-19 | 75, 34, 27, 12 |  | 5d |
| 36 |  | Evaluate results of tests and identify weaknesses | 6d? | 2021-11-26 | 2021-12-06 | 76, 35 |  | 2d |
| 37 |  | Product release meetings | 3d? | 2021-12-17 | 2021-12-22 | 31, 36, 30 |  | 0d |
| 38 | 7 | **Manufacturing** | 68.5d? | 2021-11-05 | 2022-02-09 |  |  | 0d |
| 39 |  | Process engineering plan | 15d? | 2021-11-05 | 2021-11-26 | 27, 12, 75 |  | 0d |
| 40 |  | Develop production plan | 6d? | 2021-12-08 | 2021-12-16 | 77, 36, 29, 39 |  | 4d |
| 41 |  | Develop production control plan | 8.5d? | 2021-12-22 | 2022-01-03 | 40, 14, 78 |  | 0d |
| 42 |  | Approve production parts | 5d? | 2022-01-03 | 2022-01-10 | 41 |  | 0d |
| 43 |  | Contracting for deliveries | 8d? | 2022-01-10 | 2022-01-20 | 42, 10 |  | 0d |
| 44 |  | Submit production purchase order | 2d? | 2022-01-20 | 2022-01-24 | 43, 79 |  | 0d |
| 45 |  | Production pilot test | 5d? | 2022-01-24 | 2022-01-31 | 44, 37 |  | 0d |
| 46 |  | Debugging production system | 4d? | 2022-01-31 | 2022-02-04 | 45 |  | 0d |
| 47 |  | Production release | 3d? | 2022-02-04 | 2022-02-09 | 46 |  | 0d |
| 48 | 8 | **Commercialization** | 199.5d? | 2021-05-11 | 2022-02-14 |  |  | 0d |
| 49 |  | Develop preliminary marketing plan | 5d? | 2021-05-11 | 2021-05-18 | 5, 69 |  | 8d |
| 50 |  | Develop marketing program | 15d? | 2021-05-18 | 2021-06-08 | 49 |  | 8d |
| 51 |  | Train sales team | 22d? | 2021-06-18 | 2021-07-20 | 50, 70 |  | 6d |
| 52 |  | Advertising campaign | 28d? | 2021-06-18 | 2021-07-28 | 70, 50 |  | 0d |
| 53 |  | Show functional model at trade show | 3d? | 2021-11-05 | 2021-11-10 | 50, 75, 12, 27 |  | 12d |
| 54 |  | Product launch | 3d? | 2022-02-09 | 2022-02-14 | 47, 51, 52, 53 |  | 0d |
| 55 | 9 | **Project Management** | 221.75d? | 2021-03-31 A | 2022-02-03 |  | 14% | 7d |
| 56 |  | Project Management Period 1 | 18.06d | 2021-03-31 A | 2021-04-26 A |  | 100% |  |
| 57 |  | Project Management Period 2 | 14d? | 2021-05-11 | 2021-05-31 | 56, 69 |  | 14d |
| 58 |  | Project Management Period 3 | 14d? | 2021-06-18 | 2021-07-08 | 70, 57 |  | 14d |
| 59 |  | Project Management Period 4 | 13d? | 2021-07-28 | 2021-08-16 | 58, 71 |  | 1d |
| 60 |  | Project Management Period 5 | 15d? | 2021-08-17 | 2021-09-07 | 72, 59 |  | 6d |
| 61 |  | Project Management Period 6 | 9d? | 2021-09-15 | 2021-09-28 | 60, 73 |  | 9d |
| 62 |  | Project Management Period 7 | 11d? | 2021-10-11 | 2021-10-26 | 74, 61 |  | 8d |
| 63 |  | Project Management Period 8 | 3d? | 2021-11-05 | 2021-11-10 | 62, 75 |  | 12d |
| 64 |  | Project Management Period 9 | 4d? | 2021-11-26 | 2021-12-02 | 76, 63 |  | 4d |
| 65 |  | Project Management Period 10 | 5d? | 2021-12-08 | 2021-12-15 | 64, 77 |  | 5d |
| 66 |  | Project Management Period 11 | 13d? | 2021-12-22 | 2022-01-10 | 78, 65 |  | 8.5d |
| 67 |  | Project Management Period 12 | 10d? | 2022-01-20 | 2022-02-03 | 66, 79 |  | 7d |
| 68 | 10 | **Milestones** | 199.5d? | 2021-05-11 A | 2022-02-14 |  |  | 0d |
| 69 |  | Milestone 1 | 0d | 2021-05-11 A | 2021-05-11 A | 56, 5 | 100% |  |
| 70 |  | Milestone 2 | 0d? | 2021-06-18 | 2021-06-18 | 17, 50, 57 |  | 0d |

| ID | Task | Duration | Start | Finish | Predecessors | Total float |
| --- | --- | --- | --- | --- | --- | --- |
| 71 | Milestone 3 | 0d? | 2021-07-28 | 2021-07-28 | 58, 52, 51, 19 | 0d |
| 72 | Milestone 4 | 0d? | 2021-08-17 | 2021-08-17 | 23, 59 | 0d |
| 73 | Milestone 5 | 0d? | 2021-09-15 | 2021-09-15 | 60, 26 | 0d |
| 74 | Milestone 6 | 0d? | 2021-10-11 | 2021-10-11 | 27, 33, 8, 7, 61 | 0d |
| 75 | Milestone 7 | 0d? | 2021-11-05 | 2021-11-05 | 62, 12, 34 | 0d |
| 76 | Milestone 8 | 0d? | 2021-11-26 | 2021-11-26 | 28, 39, 13, 63, 53, 35 | 0d |
| 77 | Milestone 9 | 0d? | 2021-12-08 | 2021-12-08 | 64, 36, 30 | 0d |
| 78 | Milestone 10 | 0d? | 2021-12-22 | 2021-12-22 | 40, 37, 14, 65 | 0d |
| 79 | Milestone 11 | 0d? | 2022-01-20 | 2022-01-20 | 66, 43 | 0d |
| 80 | Milestone 12 | 0d? | 2022-02-14 | 2022-02-14 | 67, 54 | 0d |

## Version 2 (data date 2021-06-03, saved 2021-04-19, file phase2Result.mpp)

Note of the change: semi-final-final ver

Last finish 2022-02-14 → 2022-01-31 (-14d). Complete tasks 6 → 12.

Changed:

| ID | Task | Start | Finish | Duration | Complete | Total float | Other |
| --- | --- | --- | --- | --- | --- | --- | --- |
| 6 | **Procurement** | 2021-09-15 → 2021-09-01 (-14d) | 2022-01-05 → 2021-12-21 (-15d) |  |  |  |  |
| 7 | Identify vendors | 2021-09-15 → 2021-09-01 (-14d) | 2021-09-24 → 2021-09-09 (-15d) |  |  |  |  |
| 8 | Develop and Issue RFQ | 2021-09-15 → 2021-09-01 (-14d) | 2021-09-23 → 2021-09-08 (-15d) |  |  |  |  |
| 9 | Issue sample (production equivalent) | 2021-10-11 → 2021-09-27 (-14d) | 2021-10-18 → 2021-10-01 (-17d) |  |  |  |  |
| 10 | Assess RFQ responses and select vendors | 2021-12-22 → 2021-12-08 (-14d) | 2022-01-05 → 2021-12-21 (-15d) |  |  |  |  |
| 11 | **Supplier Quality** | 2021-10-18 → 2021-10-04 (-14d) | 2021-12-22 → 2021-12-07 (-15d) |  |  |  |  |
| 12 | Perform supplier process capability | 2021-10-18 → 2021-10-04 (-14d) | 2021-11-05 → 2021-10-21 (-15d) |  |  |  |  |
| 13 | Approve sample parts | 2021-11-05 → 2021-10-22 (-14d) | 2021-11-17 → 2021-11-02 (-15d) |  |  |  |  |
| 14 | Qualify Supplier | 2021-12-08 → 2021-11-24 (-14d) | 2021-12-22 → 2021-12-07 (-15d) |  |  |  |  |
| 15 | **Design** | 2021-05-11 A | 2021-08-10 → 2021-07-26 (-15d) | 65d? → 54.62d? | 0% → 38% |  |  |
| 16 | Design and development plan | 2021-05-11 A | 2021-05-19 → 2021-05-17 A (-2d) | 6d? → 3.88d | 0% → 100% | 0d → none | resources none → Kelly Sauseda; Lance Portier |
| 17 | Design specs. | 2021-05-19 → 2021-05-17 A (-2d) | 2021-06-18 → 2021-06-03 A (-15d) | 22d? → 13.75d | 0% → 100% | 0d → none | resources none → Lance Portier; Kelly Sauseda |
| 18 | Identify testing requirements | 2021-06-18 → 2021-06-04 (-14d) | 2021-07-02 → 2021-06-17 (-15d) |  |  |  |  |
| 19 | Risk analysis | 2021-07-02 → 2021-06-18 (-14d) | 2021-07-16 → 2021-07-01 (-15d) |  |  |  |  |
| 20 | Design labeling | 2021-07-28 → 2021-07-14 (-14d) | 2021-08-04 → 2021-07-20 (-15d) |  |  |  |  |
| 21 | Approve design | 2021-08-04 → 2021-07-21 (-14d) | 2021-08-10 → 2021-07-26 (-15d) |  |  |  |  |
| 22 | **Engineering** | 2021-08-10 → 2021-07-27 (-14d) | 2021-12-17 → 2021-12-02 (-15d) |  |  |  |  |
| 23 | Initial engineering specs. | 2021-08-10 → 2021-07-27 (-14d) | 2021-08-17 → 2021-08-02 (-15d) |  |  |  |  |
| 24 | Design verification activities | 2021-08-17 → 2021-08-03 (-14d) | 2021-08-26 → 2021-08-11 (-15d) |  |  |  |  |
| 25 | Verification design review | 2021-08-26 → 2021-08-12 (-14d) | 2021-09-01 → 2021-08-17 (-15d) |  |  |  |  |
| 26 | Release pre-production specifications | 2021-09-01 → 2021-08-18 (-14d) | 2021-09-15 → 2021-08-31 (-15d) |  |  |  |  |
| 27 | Build functional model | 2021-09-15 → 2021-09-01 (-14d) | 2021-10-11 → 2021-09-24 (-17d) |  |  |  |  |
| 28 | Design validation activities | 2021-11-05 → 2021-10-22 (-14d) | 2021-11-12 → 2021-10-28 (-15d) |  |  |  |  |
| 29 | Validation design review | 2021-11-26 → 2021-11-12 (-14d) | 2021-12-02 → 2021-11-17 (-15d) |  |  |  |  |
| 30 | Approve model design | 2021-12-02 → 2021-11-18 (-14d) | 2021-12-08 → 2021-11-23 (-15d) |  |  |  |  |
| 31 | Design transfer activities | 2021-12-08 → 2021-11-24 (-14d) | 2021-12-17 → 2021-12-02 (-15d) |  |  |  |  |
| 32 | **Engineering Quality** | 2021-09-15 → 2021-09-01 (-14d) | 2021-12-22 → 2021-12-07 (-15d) |  |  |  |  |
| 33 | Evaluate design specifications | 2021-09-15 → 2021-09-01 (-14d) | 2021-09-29 → 2021-09-14 (-15d) |  |  |  |  |
| 34 | Develop testing protocol for prototype | 2021-10-11 → 2021-09-27 (-14d) | 2021-10-21 → 2021-10-06 (-15d) |  |  |  |  |
| 35 | Test prototype | 2021-11-05 → 2021-10-22 (-14d) | 2021-11-19 → 2021-11-04 (-15d) |  |  |  |  |
| 36 | Evaluate results of tests and identify weaknesses | 2021-11-26 → 2021-11-12 (-14d) | 2021-12-06 → 2021-11-19 (-17d) |  |  |  |  |
| 37 | Product release meetings | 2021-12-17 → 2021-12-03 (-14d) | 2021-12-22 → 2021-12-07 (-15d) |  |  |  |  |
| 38 | **Manufacturing** | 2021-11-05 → 2021-10-22 (-14d) | 2022-02-09 → 2022-01-26 (-14d) |  |  |  |  |
| 39 | Process engineering plan | 2021-11-05 → 2021-10-22 (-14d) | 2021-11-26 → 2021-11-11 (-15d) |  |  |  |  |
| 40 | Develop production plan | 2021-12-08 → 2021-11-24 (-14d) | 2021-12-16 → 2021-12-01 (-15d) |  |  |  |  |
| 41 | Develop production control plan | 2021-12-22 → 2021-12-08 (-14d) | 2022-01-03 → 2021-12-20 (-14d) |  |  |  |  |
| 42 | Approve production parts | 2022-01-03 → 2021-12-20 (-14d) | 2022-01-10 → 2021-12-27 (-14d) |  |  |  |  |
| 43 | Contracting for deliveries | 2022-01-10 → 2021-12-27 (-14d) | 2022-01-20 → 2022-01-06 (-14d) |  |  |  |  |
| 44 | Submit production purchase order | 2022-01-20 → 2022-01-06 (-14d) | 2022-01-24 → 2022-01-10 (-14d) |  |  |  |  |
| 45 | Production pilot test | 2022-01-24 → 2022-01-10 (-14d) | 2022-01-31 → 2022-01-17 (-14d) |  |  |  |  |
| 46 | Debugging production system | 2022-01-31 → 2022-01-17 (-14d) | 2022-02-04 → 2022-01-21 (-14d) |  |  |  |  |
| 47 | Production release | 2022-02-04 → 2022-01-21 (-14d) | 2022-02-09 → 2022-01-26 (-14d) |  |  |  |  |
| 48 | **Commercialization** | 2021-05-11 A | 2022-02-14 → 2022-01-31 (-14d) | 199.5d? → 189.12d? | 0% → 17% |  |  |
| 49 | Develop preliminary marketing plan | 2021-05-11 A | 2021-05-18 → 2021-05-14 A (-4d) | 5d? → 2.81d | 0% → 100% | 8d → none | resources none → Yukio Ashida; Kurt Zollinger |
| 50 | Develop marketing program | 2021-05-18 → 2021-05-14 A (-4d) | 2021-06-08 → 2021-05-26 A (-13d) | 15d? → 8.44d | 0% → 100% | 8d → none | resources none → Kurt Zollinger; Yukio Ashida |
| 51 | Train sales team | 2021-06-18 → 2021-06-04 (-14d) | 2021-07-20 → 2021-07-05 (-15d) |  |  |  |  |
| 52 | Advertising campaign | 2021-06-18 → 2021-06-04 (-14d) | 2021-07-28 → 2021-07-13 (-15d) |  |  |  |  |
| 53 | Show functional model at trade show | 2021-11-05 → 2021-10-22 (-14d) | 2021-11-10 → 2021-10-26 (-15d) |  |  |  |  |
| 54 | Product launch | 2022-02-09 → 2022-01-26 (-14d) | 2022-02-14 → 2022-01-31 (-14d) |  |  |  |  |
| 55 | **Project Management** |  | 2022-02-03 → 2022-01-20 (-14d) | 221.75d? → 211.38d? | 14% → 22% |  |  |
| 57 | Project Management Period 2 | 2021-05-11 A | 2021-05-31 → 2021-05-25 A (-6d) | 14d? → 10.06d | 0% → 100% | 14d → none | resources none → Tom Becher; Darryl Sandefur |
| 58 | Project Management Period 3 | 2021-06-18 → 2021-06-04 (-14d) | 2021-07-08 → 2021-06-23 (-15d) |  |  |  |  |
| 59 | Project Management Period 4 | 2021-07-28 → 2021-07-14 (-14d) | 2021-08-16 → 2021-07-30 (-17d) |  |  |  |  |
| 60 | Project Management Period 5 | 2021-08-17 → 2021-08-03 (-14d) | 2021-09-07 → 2021-08-23 (-15d) |  |  |  |  |
| 61 | Project Management Period 6 | 2021-09-15 → 2021-09-01 (-14d) | 2021-09-28 → 2021-09-13 (-15d) |  |  |  |  |
| 62 | Project Management Period 7 | 2021-10-11 → 2021-09-27 (-14d) | 2021-10-26 → 2021-10-11 (-15d) |  |  |  |  |
| 63 | Project Management Period 8 | 2021-11-05 → 2021-10-22 (-14d) | 2021-11-10 → 2021-10-26 (-15d) |  |  |  |  |
| 64 | Project Management Period 9 | 2021-11-26 → 2021-11-12 (-14d) | 2021-12-02 → 2021-11-17 (-15d) |  |  |  |  |
| 65 | Project Management Period 10 | 2021-12-08 → 2021-11-24 (-14d) | 2021-12-15 → 2021-11-30 (-15d) |  |  |  |  |
| 66 | Project Management Period 11 | 2021-12-22 → 2021-12-08 (-14d) | 2022-01-10 → 2021-12-24 (-17d) |  |  |  |  |
| 67 | Project Management Period 12 | 2022-01-20 → 2022-01-06 (-14d) | 2022-02-03 → 2022-01-20 (-14d) |  |  |  |  |
| 68 | **Milestones** |  | 2022-02-14 → 2022-01-31 (-14d) | 199.5d? → 189.12d? |  |  |  |
| 70 | Milestone 2 | 2021-06-18 → 2021-06-03 A (-15d) | 2021-06-18 → 2021-06-03 A (-15d) | 0d? → 0d | 0% → 100% | 0d → none | resources none → Period 2 Training Costs; Period 2 Managerial Action Costs; Period 2 Unallocated Resource Costs |
| 71 | Milestone 3 | 2021-07-28 → 2021-07-13 (-15d) | 2021-07-28 → 2021-07-13 (-15d) |  |  |  |  |
| 72 | Milestone 4 | 2021-08-17 → 2021-08-02 (-15d) | 2021-08-17 → 2021-08-02 (-15d) |  |  |  |  |
| 73 | Milestone 5 | 2021-09-15 → 2021-08-31 (-15d) | 2021-09-15 → 2021-08-31 (-15d) |  |  |  |  |
| 74 | Milestone 6 | 2021-10-11 → 2021-09-24 (-17d) | 2021-10-11 → 2021-09-24 (-17d) |  |  |  |  |
| 75 | Milestone 7 | 2021-11-05 → 2021-10-21 (-15d) | 2021-11-05 → 2021-10-21 (-15d) |  |  |  |  |
| 76 | Milestone 8 | 2021-11-26 → 2021-11-11 (-15d) | 2021-11-26 → 2021-11-11 (-15d) |  |  |  |  |
| 77 | Milestone 9 | 2021-12-08 → 2021-11-23 (-15d) | 2021-12-08 → 2021-11-23 (-15d) |  |  |  |  |

| ID | Task | Start | Finish |
| --- | --- | --- | --- |
| 78 | Milestone 10 | 2021-12-22 → 2021-12-07 (-15d) | 2021-12-22 → 2021-12-07 (-15d) |
| 79 | Milestone 11 | 2022-01-20 → 2022-01-06 (-14d) | 2022-01-20 → 2022-01-06 (-14d) |
| 80 | Milestone 12 | 2022-02-14 → 2022-01-31 (-14d) | 2022-02-14 → 2022-01-31 (-14d) |

## Version 3 (data date 2021-07-19, saved 2021-04-20, file phase3Result.mpp)

Note of the change: semi-final-final ver

Last finish 2022-01-31 → 2022-02-03 (+3d). Complete tasks 12 → 18.

Changed:

| ID | Task | Start | Finish | Duration | Complete | Total float | Other |
| --- | --- | --- | --- | --- | --- | --- | --- |
| 6 | **Procurement** | 2021-09-01 → 2021-09-06 (+5d) | 2021-12-21 → 2021-12-27 (+6d) |  |  |  |  |
| 7 | Identify vendors | 2021-09-01 → 2021-09-06 (+5d) | 2021-09-09 → 2021-09-15 (+6d) |  |  |  |  |
| 8 | Develop and Issue RFQ | 2021-09-01 → 2021-09-06 (+5d) | 2021-09-08 → 2021-09-14 (+6d) |  |  |  |  |
| 9 | Issue sample (production equivalent) | 2021-09-27 → 2021-09-30 (+3d) | 2021-10-01 → 2021-10-07 (+6d) |  |  |  |  |
| 10 | Assess RFQ responses and select vendors | 2021-12-08 → 2021-12-13 (+5d) | 2021-12-21 → 2021-12-27 (+6d) |  |  |  |  |
| 11 | **Supplier Quality** | 2021-10-04 → 2021-10-07 (+3d) | 2021-12-07 → 2021-12-13 (+6d) |  |  |  |  |
| 12 | Perform supplier process capability | 2021-10-04 → 2021-10-07 (+3d) | 2021-10-21 → 2021-10-27 (+6d) |  |  |  |  |
| 13 | Approve sample parts | 2021-10-22 → 2021-10-27 (+5d) | 2021-11-02 → 2021-11-08 (+6d) |  |  |  |  |
| 14 | Qualify Supplier | 2021-11-24 → 2021-11-29 (+5d) | 2021-12-07 → 2021-12-13 (+6d) |  |  |  |  |
| 15 | **Design** |  | 2021-07-26 → 2021-07-30 (+4d) | 54.62d? → 58d? | 38% → 77% |  |  |
| 18 | Identify testing requirements | 2021-06-04 A | 2021-06-17 → 2021-06-14 A (-3d) | 10d? → 6.25d | 0% → 100% | 8d → none | resources none → Kelly Sauseda; Lance Portier |
| 19 | Risk analysis | 2021-06-18 → 2021-06-14 A (-4d) | 2021-07-01 → 2021-06-23 A (-8d) | 10d? → 7.06d | 0% → 100% | 8d → none | resources none → Kelly Sauseda; Lance Portier |
| 20 | Design labeling | 2021-07-14 → 2021-07-19 (+5d) | 2021-07-20 → 2021-07-26 (+6d) |  |  |  |  |
| 21 | Approve design | 2021-07-21 → 2021-07-26 (+5d) | 2021-07-26 → 2021-07-30 (+4d) |  |  |  |  |
| 22 | **Engineering** | 2021-07-27 → 2021-07-30 (+3d) | 2021-12-02 → 2021-12-08 (+6d) |  |  |  |  |
| 23 | Initial engineering specs. | 2021-07-27 → 2021-07-30 (+3d) | 2021-08-02 → 2021-08-06 (+4d) |  |  |  |  |
| 24 | Design verification activities | 2021-08-03 → 2021-08-06 (+3d) | 2021-08-11 → 2021-08-17 (+6d) |  |  |  |  |
| 25 | Verification design review | 2021-08-12 → 2021-08-17 (+5d) | 2021-08-17 → 2021-08-23 (+6d) |  |  |  |  |
| 26 | Release pre-production specifications | 2021-08-18 → 2021-08-23 (+5d) | 2021-08-31 → 2021-09-06 (+6d) |  |  |  |  |
| 27 | Build functional model | 2021-09-01 → 2021-09-06 (+5d) | 2021-09-24 → 2021-09-30 (+6d) |  |  |  |  |
| 28 | Design validation activities | 2021-10-22 → 2021-10-27 (+5d) | 2021-10-28 → 2021-11-03 (+6d) |  |  |  |  |
| 29 | Validation design review | 2021-11-12 → 2021-11-17 (+5d) | 2021-11-17 → 2021-11-23 (+6d) |  |  |  |  |
| 30 | Approve model design | 2021-11-18 → 2021-11-23 (+5d) | 2021-11-23 → 2021-11-29 (+6d) |  |  |  |  |
| 31 | Design transfer activities | 2021-11-24 → 2021-11-29 (+5d) | 2021-12-02 → 2021-12-08 (+6d) |  |  |  |  |
| 32 | **Engineering Quality** | 2021-09-01 → 2021-09-06 (+5d) | 2021-12-07 → 2021-12-13 (+6d) |  |  |  |  |
| 33 | Evaluate design specifications | 2021-09-01 → 2021-09-06 (+5d) | 2021-09-14 → 2021-09-20 (+6d) |  |  |  |  |
| 34 | Develop testing protocol for prototype | 2021-09-27 → 2021-09-30 (+3d) | 2021-10-06 → 2021-10-12 (+6d) |  |  |  |  |
| 35 | Test prototype | 2021-10-22 → 2021-10-27 (+5d) | 2021-11-04 → 2021-11-10 (+6d) |  |  |  |  |
| 36 | Evaluate results of tests and identify weaknesses | 2021-11-12 → 2021-11-17 (+5d) | 2021-11-19 → 2021-11-25 (+6d) |  |  |  |  |
| 37 | Product release meetings | 2021-12-03 → 2021-12-08 (+5d) | 2021-12-07 → 2021-12-13 (+6d) |  |  |  |  |
| 38 | **Manufacturing** | 2021-10-22 → 2021-10-27 (+5d) | 2022-01-26 → 2022-01-31 (+5d) |  |  |  |  |
| 39 | Process engineering plan | 2021-10-22 → 2021-10-27 (+5d) | 2021-11-11 → 2021-11-17 (+6d) |  |  |  |  |
| 40 | Develop production plan | 2021-11-24 → 2021-11-29 (+5d) | 2021-12-01 → 2021-12-07 (+6d) |  |  |  |  |
| 41 | Develop production control plan | 2021-12-08 → 2021-12-13 (+5d) | 2021-12-20 → 2021-12-23 (+3d) |  |  |  |  |
| 42 | Approve production parts | 2021-12-20 → 2021-12-23 (+3d) | 2021-12-27 → 2021-12-30 (+3d) |  |  |  |  |
| 43 | Contracting for deliveries | 2021-12-27 → 2021-12-30 (+3d) | 2022-01-06 → 2022-01-11 (+5d) |  |  |  |  |
| 44 | Submit production purchase order | 2022-01-06 → 2022-01-11 (+5d) | 2022-01-10 → 2022-01-13 (+3d) |  |  |  |  |
| 45 | Production pilot test | 2022-01-10 → 2022-01-13 (+3d) | 2022-01-17 → 2022-01-20 (+3d) |  |  |  |  |
| 46 | Debugging production system | 2022-01-17 → 2022-01-20 (+3d) | 2022-01-21 → 2022-01-26 (+5d) |  |  |  |  |
| 47 | Production release | 2022-01-21 → 2022-01-26 (+5d) | 2022-01-26 → 2022-01-31 (+5d) |  |  |  |  |
| 48 | **Commercialization** |  | 2022-01-31 → 2022-02-03 (+3d) | 189.12d? → 192.5d? | 17% → 92% |  |  |
| 51 | Train sales team | 2021-06-04 A | 2021-07-05 → 2021-07-08 A (+3d) | 22d? → 24.88d | 0% → 100% | 6d → none | resources none → Kurt Zollinger |
| 52 | Advertising campaign | 2021-06-04 A | 2021-07-13 → 2021-07-19 A (+6d) | 28d? → 31.38d | 0% → 100% | 0d → none | resources none → Yukio Ashida |
| 53 | Show functional model at trade show | 2021-10-22 → 2021-10-27 (+5d) | 2021-10-26 → 2021-11-01 (+6d) |  |  |  |  |
| 54 | Product launch | 2022-01-26 → 2022-01-31 (+5d) | 2022-01-31 → 2022-02-03 (+3d) |  |  |  |  |
| 55 | **Project Management** |  | 2022-01-20 → 2022-01-25 (+5d) | 211.38d? → 214.75d? | 22% → 32% |  |  |
| 58 | Project Management Period 3 | 2021-06-04 A | 2021-06-23 → 2021-06-18 A (-5d) | 14d? → 10.12d | 0% → 100% | 14d → none | resources none → Tom Becher; Darryl Sandefur |
| 59 | Project Management Period 4 | 2021-07-14 → 2021-07-19 (+5d) | 2021-07-30 → 2021-08-05 (+6d) |  |  |  |  |
| 60 | Project Management Period 5 | 2021-08-03 → 2021-08-06 (+3d) | 2021-08-23 → 2021-08-27 (+4d) |  |  |  |  |
| 61 | Project Management Period 6 | 2021-09-01 → 2021-09-06 (+5d) | 2021-09-13 → 2021-09-17 (+4d) |  |  |  |  |
| 62 | Project Management Period 7 | 2021-09-27 → 2021-09-30 (+3d) | 2021-10-11 → 2021-10-15 (+4d) |  |  |  |  |
| 63 | Project Management Period 8 | 2021-10-22 → 2021-10-27 (+5d) | 2021-10-26 → 2021-11-01 (+6d) |  |  |  |  |
| 64 | Project Management Period 9 | 2021-11-12 → 2021-11-17 (+5d) | 2021-11-17 → 2021-11-23 (+6d) |  |  |  |  |
| 65 | Project Management Period 10 | 2021-11-24 → 2021-11-29 (+5d) | 2021-11-30 → 2021-12-06 (+6d) |  |  |  |  |
| 66 | Project Management Period 11 | 2021-12-08 → 2021-12-13 (+5d) | 2021-12-24 → 2021-12-30 (+6d) |  |  |  |  |
| 67 | Project Management Period 12 | 2022-01-06 → 2022-01-11 (+5d) | 2022-01-20 → 2022-01-25 (+5d) |  |  |  |  |
| 68 | **Milestones** |  | 2022-01-31 → 2022-02-03 (+3d) | 189.12d? → 192.5d? |  |  |  |
| 71 | Milestone 3 | 2021-07-13 → 2021-07-19 A (+6d) | 2021-07-13 → 2021-07-19 A (+6d) | 0d? → 0d | 0% → 100% | 0d → none | resources none → Period 3 Training Costs; Period 3 Managerial Action Costs; Period 3 Unallocated Resource Costs |
| 72 | Milestone 4 | 2021-08-02 → 2021-08-06 (+4d) | 2021-08-02 → 2021-08-06 (+4d) |  |  |  |  |
| 73 | Milestone 5 | 2021-08-31 → 2021-09-06 (+6d) | 2021-08-31 → 2021-09-06 (+6d) |  |  |  |  |
| 74 | Milestone 6 | 2021-09-24 → 2021-09-30 (+6d) | 2021-09-24 → 2021-09-30 (+6d) |  |  |  |  |
| 75 | Milestone 7 | 2021-10-21 → 2021-10-27 (+6d) | 2021-10-21 → 2021-10-27 (+6d) |  |  |  |  |
| 76 | Milestone 8 | 2021-11-11 → 2021-11-17 (+6d) | 2021-11-11 → 2021-11-17 (+6d) |  |  |  |  |
| 77 | Milestone 9 | 2021-11-23 → 2021-11-29 (+6d) | 2021-11-23 → 2021-11-29 (+6d) |  |  |  |  |
| 78 | Milestone 10 | 2021-12-07 → 2021-12-13 (+6d) | 2021-12-07 → 2021-12-13 (+6d) |  |  |  |  |
| 79 | Milestone 11 | 2022-01-06 → 2022-01-11 (+5d) | 2022-01-06 → 2022-01-11 (+5d) |  |  |  |  |
| 80 | Milestone 12 | 2022-01-31 → 2022-02-03 (+3d) | 2022-01-31 → 2022-02-03 (+3d) |  |  |  |  |

## Version 4 (data date 2021-08-06, saved 2021-04-21, file phase4Result.mpp)

Note of the change: semi-final-final ver

Last finish 2022-02-03 → 2022-02-04 (+1d). Complete tasks 18 → 23.

Changed:

| ID | Task | Start | Finish | Duration | Complete | Total float | Other |
| --- | --- | --- | --- | --- | --- | --- | --- |
| 6 | **Procurement** | 2021-09-06 → 2021-09-07 (+1d) |  |  |  |  |  |
| 7 | Identify vendors | 2021-09-06 → 2021-09-07 (+1d) |  |  |  |  |  |
| 8 | Develop and Issue RFQ | 2021-09-06 → 2021-09-07 (+1d) |  |  |  |  |  |
| 9 | Issue sample (production equivalent) | 2021-09-30 → 2021-10-01 (+1d) |  |  |  |  |  |
| 10 | Assess RFQ responses and select vendors | 2021-12-13 → 2021-12-14 (+1d) |  |  |  |  |  |
| 11 | **Supplier Quality** | 2021-10-07 → 2021-10-08 (+1d) |  |  |  |  |  |
| 12 | Perform supplier process capability | 2021-10-07 → 2021-10-08 (+1d) |  |  |  |  |  |
| 13 | Approve sample parts | 2021-10-27 → 2021-10-28 (+1d) |  |  |  |  |  |
| 14 | Qualify Supplier | 2021-11-29 → 2021-11-30 (+1d) |  |  |  |  |  |
| 15 | **Design** |  | 2021-07-30 → 2021-07-27 A (-3d) | 58d? → 54.88d | 77% → 100% | 0d → none |  |
| 20 | Design labeling | 2021-07-19 A | 2021-07-26 → 2021-07-22 A (-4d) | 5d? → 3.25d | 0% → 100% | 0d → none | resources none → Lance Portier; Kelly Sauseda |
| 21 | Approve design | 2021-07-26 → 2021-07-22 A (-4d) | 2021-07-30 → 2021-07-27 A (-3d) | 4d? → 2.62d | 0% → 100% | 0d → none | resources none → Lance Portier; Kelly Sauseda |
| 22 | **Engineering** | 2021-07-30 → 2021-07-27 A (-3d) |  | 93d? → 96.75d? | 0% → 5% |  |  |
| 23 | Initial engineering specs. | 2021-07-30 → 2021-07-27 A (-3d) | 2021-08-06 → 2021-07-30 A (-7d) | 5d? → 2.88d | 0% → 100% | 0d → none | resources none → Tom Becher; Darryl Sandefur |
| 24 | Design verification activities | 2021-08-06 → 2021-08-09 (+3d) |  |  |  |  |  |
| 25 | Verification design review | 2021-08-17 → 2021-08-18 (+1d) |  |  |  |  |  |
| 26 | Release pre-production specifications | 2021-08-23 → 2021-08-24 (+1d) |  |  |  |  |  |
| 27 | Build functional model | 2021-09-06 → 2021-09-07 (+1d) |  |  |  |  |  |
| 28 | Design validation activities | 2021-10-27 → 2021-10-28 (+1d) |  |  |  |  |  |
| 29 | Validation design review | 2021-11-17 → 2021-11-18 (+1d) |  |  |  |  |  |
| 30 | Approve model design | 2021-11-23 → 2021-11-24 (+1d) |  |  |  |  |  |
| 31 | Design transfer activities | 2021-11-29 → 2021-11-30 (+1d) |  |  |  |  |  |
| 32 | **Engineering Quality** | 2021-09-06 → 2021-09-07 (+1d) |  |  |  |  |  |
| 33 | Evaluate design specifications | 2021-09-06 → 2021-09-07 (+1d) |  |  |  |  |  |
| 34 | Develop testing protocol for prototype | 2021-09-30 → 2021-10-01 (+1d) |  |  |  |  |  |
| 35 | Test prototype | 2021-10-27 → 2021-10-28 (+1d) |  |  |  |  |  |
| 36 | Evaluate results of tests and identify weaknesses | 2021-11-17 → 2021-11-18 (+1d) |  |  |  |  |  |
| 37 | Product release meetings | 2021-12-08 → 2021-12-09 (+1d) |  |  |  |  |  |
| 38 | **Manufacturing** | 2021-10-27 → 2021-10-28 (+1d) | 2022-01-31 → 2022-02-01 (+1d) |  |  |  |  |
| 39 | Process engineering plan | 2021-10-27 → 2021-10-28 (+1d) |  |  |  |  |  |
| 40 | Develop production plan | 2021-11-29 → 2021-11-30 (+1d) |  |  |  |  |  |
| 41 | Develop production control plan | 2021-12-13 → 2021-12-14 (+1d) | 2021-12-23 → 2021-12-24 (+1d) |  |  |  |  |
| 42 | Approve production parts | 2021-12-23 → 2021-12-24 (+1d) | 2021-12-30 → 2021-12-31 (+1d) |  |  |  |  |
| 43 | Contracting for deliveries | 2021-12-30 → 2021-12-31 (+1d) | 2022-01-11 → 2022-01-12 (+1d) |  |  |  |  |
| 44 | Submit production purchase order | 2022-01-11 → 2022-01-12 (+1d) | 2022-01-13 → 2022-01-14 (+1d) |  |  |  |  |
| 45 | Production pilot test | 2022-01-13 → 2022-01-14 (+1d) | 2022-01-20 → 2022-01-21 (+1d) |  |  |  |  |
| 46 | Debugging production system | 2022-01-20 → 2022-01-21 (+1d) | 2022-01-26 → 2022-01-27 (+1d) |  |  |  |  |
| 47 | Production release | 2022-01-26 → 2022-01-27 (+1d) | 2022-01-31 → 2022-02-01 (+1d) |  |  |  |  |
| 48 | **Commercialization** |  | 2022-02-03 → 2022-02-04 (+1d) | 192.5d? → 193.12d? |  |  |  |
| 53 | Show functional model at trade show | 2021-10-27 → 2021-10-28 (+1d) |  |  |  |  |  |
| 54 | Product launch | 2022-01-31 → 2022-02-01 (+1d) | 2022-02-03 → 2022-02-04 (+1d) |  |  |  |  |
| 55 | **Project Management** |  | 2022-01-25 → 2022-01-26 (+1d) | 214.75d? → 215.38d? | 32% → 43% |  |  |
| 59 | Project Management Period 4 | 2021-07-19 A | 2021-08-05 → 2021-08-06 A (+1d) | 13d? → 14.62d | 0% → 100% | 1d → none | resources none → Yukio Ashida |
| 60 | Project Management Period 5 | 2021-08-06 → 2021-08-09 (+3d) |  |  |  |  |  |
| 61 | Project Management Period 6 | 2021-09-06 → 2021-09-07 (+1d) |  |  |  |  |  |
| 62 | Project Management Period 7 | 2021-09-30 → 2021-10-01 (+1d) |  |  |  |  |  |
| 63 | Project Management Period 8 | 2021-10-27 → 2021-10-28 (+1d) |  |  |  |  |  |
| 64 | Project Management Period 9 | 2021-11-17 → 2021-11-18 (+1d) |  |  |  |  |  |
| 65 | Project Management Period 10 | 2021-11-29 → 2021-11-30 (+1d) |  |  |  |  |  |
| 66 | Project Management Period 11 | 2021-12-13 → 2021-12-14 (+1d) |  |  |  |  |  |
| 67 | Project Management Period 12 | 2022-01-11 → 2022-01-12 (+1d) | 2022-01-25 → 2022-01-26 (+1d) |  |  |  |  |
| 68 | **Milestones** |  | 2022-02-03 → 2022-02-04 (+1d) | 192.5d? → 193.12d? |  |  |  |
| 72 | Milestone 4 | 2021-08-06 A | 2021-08-06 A | 0d? → 0d | 0% → 100% | 0d → none | resources none → Period 4 Training Costs; Period 4 Managerial Action Costs; Period 4 Unallocated Resource Costs |
| 79 | Milestone 11 | 2022-01-11 → 2022-01-12 (+1d) | 2022-01-11 → 2022-01-12 (+1d) |  |  |  |  |
| 80 | Milestone 12 | 2022-02-03 → 2022-02-04 (+1d) | 2022-02-03 → 2022-02-04 (+1d) |  |  |  |  |

## Version 5 (data date 2021-08-31, saved 2021-05-10, file phase5Result.mpp)

Note of the change: semi-final-final ver

Last finish 2022-02-04 → 2022-01-31 (-4d). Complete tasks 23 → 28.

Changed:

| ID | Task | Start | Finish | Duration | Complete | Total float | Other |
| --- | --- | --- | --- | --- | --- | --- | --- |
| 6 | **Procurement** | 2021-09-07 → 2021-09-01 (-6d) | 2021-12-27 → 2021-12-21 (-6d) |  |  |  |  |
| 7 | Identify vendors | 2021-09-07 → 2021-09-01 (-6d) | 2021-09-15 → 2021-09-09 (-6d) |  |  |  |  |
| 8 | Develop and Issue RFQ | 2021-09-07 → 2021-09-01 (-6d) | 2021-09-14 → 2021-09-08 (-6d) |  |  |  |  |
| 9 | Issue sample (production equivalent) | 2021-10-01 → 2021-09-27 (-4d) | 2021-10-07 → 2021-10-01 (-6d) |  |  |  |  |
| 10 | Assess RFQ responses and select vendors | 2021-12-14 → 2021-12-08 (-6d) | 2021-12-27 → 2021-12-21 (-6d) |  |  |  |  |
| 11 | **Supplier Quality** | 2021-10-08 → 2021-10-04 (-4d) | 2021-12-13 → 2021-12-07 (-6d) |  |  |  |  |
| 12 | Perform supplier process capability | 2021-10-08 → 2021-10-04 (-4d) | 2021-10-27 → 2021-10-21 (-6d) |  |  |  |  |
| 13 | Approve sample parts | 2021-10-28 → 2021-10-22 (-6d) | 2021-11-08 → 2021-11-02 (-6d) |  |  |  |  |
| 14 | Qualify Supplier | 2021-11-30 → 2021-11-24 (-6d) | 2021-12-13 → 2021-12-07 (-6d) |  |  |  |  |
| 22 | **Engineering** |  | 2021-12-08 → 2021-12-02 (-6d) | 96.75d? → 92.75d? | 5% → 29% |  |  |
| 24 | Design verification activities | 2021-08-09 A | 2021-08-17 → 2021-08-13 A (-4d) | 7d? → 4.19d | 0% → 100% | 0d → none | resources none → Tom Becher; Darryl Sandefur |
| 25 | Verification design review | 2021-08-18 → 2021-08-13 A (-5d) | 2021-08-23 → 2021-08-17 A (-6d) | 4d? → 2.31d | 0% → 100% | 0d → none | resources none → Tom Becher; Darryl Sandefur |
| 26 | Release pre-production specifications | 2021-08-24 → 2021-08-17 A (-7d) | 2021-09-06 → 2021-08-25 A (-12d) | 10d? → 6d | 0% → 100% | 0d → none | resources none → Tom Becher; Darryl Sandefur |
| 27 | Build functional model | 2021-09-07 → 2021-09-01 (-6d) | 2021-09-30 → 2021-09-24 (-6d) |  |  |  |  |
| 28 | Design validation activities | 2021-10-28 → 2021-10-22 (-6d) | 2021-11-03 → 2021-10-28 (-6d) |  |  |  |  |
| 29 | Validation design review | 2021-11-18 → 2021-11-12 (-6d) | 2021-11-23 → 2021-11-17 (-6d) |  |  |  |  |
| 30 | Approve model design | 2021-11-24 → 2021-11-18 (-6d) | 2021-11-29 → 2021-11-23 (-6d) |  |  |  |  |
| 31 | Design transfer activities | 2021-11-30 → 2021-11-24 (-6d) | 2021-12-08 → 2021-12-02 (-6d) |  |  |  |  |
| 32 | **Engineering Quality** | 2021-09-07 → 2021-09-01 (-6d) | 2021-12-13 → 2021-12-07 (-6d) |  |  |  |  |
| 33 | Evaluate design specifications | 2021-09-07 → 2021-09-01 (-6d) | 2021-09-20 → 2021-09-14 (-6d) |  |  |  |  |
| 34 | Develop testing protocol for prototype | 2021-10-01 → 2021-09-27 (-4d) | 2021-10-12 → 2021-10-06 (-6d) |  |  |  |  |
| 35 | Test prototype | 2021-10-28 → 2021-10-22 (-6d) | 2021-11-10 → 2021-11-04 (-6d) |  |  |  |  |
| 36 | Evaluate results of tests and identify weaknesses | 2021-11-18 → 2021-11-12 (-6d) | 2021-11-25 → 2021-11-19 (-6d) |  |  |  |  |
| 37 | Product release meetings | 2021-12-09 → 2021-12-03 (-6d) | 2021-12-13 → 2021-12-07 (-6d) |  |  |  |  |
| 38 | **Manufacturing** | 2021-10-28 → 2021-10-22 (-6d) | 2022-02-01 → 2022-01-26 (-6d) |  |  |  |  |
| 39 | Process engineering plan | 2021-10-28 → 2021-10-22 (-6d) | 2021-11-17 → 2021-11-11 (-6d) |  |  |  |  |
| 40 | Develop production plan | 2021-11-30 → 2021-11-24 (-6d) | 2021-12-07 → 2021-12-01 (-6d) |  |  |  |  |
| 41 | Develop production control plan | 2021-12-14 → 2021-12-08 (-6d) | 2021-12-24 → 2021-12-20 (-4d) |  |  |  |  |
| 42 | Approve production parts | 2021-12-24 → 2021-12-20 (-4d) | 2021-12-31 → 2021-12-27 (-4d) |  |  |  |  |
| 43 | Contracting for deliveries | 2021-12-31 → 2021-12-27 (-4d) | 2022-01-12 → 2022-01-06 (-6d) |  |  |  |  |
| 44 | Submit production purchase order | 2022-01-12 → 2022-01-06 (-6d) | 2022-01-14 → 2022-01-10 (-4d) |  |  |  |  |
| 45 | Production pilot test | 2022-01-14 → 2022-01-10 (-4d) | 2022-01-21 → 2022-01-17 (-4d) |  |  |  |  |
| 46 | Debugging production system | 2022-01-21 → 2022-01-17 (-4d) | 2022-01-27 → 2022-01-21 (-6d) |  |  |  |  |
| 47 | Production release | 2022-01-27 → 2022-01-21 (-6d) | 2022-02-01 → 2022-01-26 (-6d) |  |  |  |  |
| 48 | **Commercialization** |  | 2022-02-04 → 2022-01-31 (-4d) | 193.12d? → 189.12d? |  |  |  |
| 53 | Show functional model at trade show | 2021-10-28 → 2021-10-22 (-6d) | 2021-11-01 → 2021-10-26 (-6d) |  |  |  |  |
| 54 | Product launch | 2022-02-01 → 2022-01-26 (-6d) | 2022-02-04 → 2022-01-31 (-4d) |  |  |  |  |
| 55 | **Project Management** |  | 2022-01-26 → 2022-01-20 (-6d) | 215.38d? → 211.38d? | 43% → 56% |  |  |
| 60 | Project Management Period 5 | 2021-08-09 A | 2021-08-27 → 2021-08-31 A (+4d) | 15d? → 17d | 0% → 100% | 6d → none | resources none → Yukio Ashida |
| 61 | Project Management Period 6 | 2021-09-07 → 2021-09-01 (-6d) | 2021-09-17 → 2021-09-13 (-4d) |  |  |  |  |
| 62 | Project Management Period 7 | 2021-10-01 → 2021-09-27 (-4d) | 2021-10-15 → 2021-10-11 (-4d) |  |  |  |  |
| 63 | Project Management Period 8 | 2021-10-28 → 2021-10-22 (-6d) | 2021-11-01 → 2021-10-26 (-6d) |  |  |  |  |
| 64 | Project Management Period 9 | 2021-11-18 → 2021-11-12 (-6d) | 2021-11-23 → 2021-11-17 (-6d) |  |  |  |  |
| 65 | Project Management Period 10 | 2021-11-30 → 2021-11-24 (-6d) | 2021-12-06 → 2021-11-30 (-6d) |  |  |  |  |
| 66 | Project Management Period 11 | 2021-12-14 → 2021-12-08 (-6d) | 2021-12-30 → 2021-12-24 (-6d) |  |  |  |  |
| 67 | Project Management Period 12 | 2022-01-12 → 2022-01-06 (-6d) | 2022-01-26 → 2022-01-20 (-6d) |  |  |  |  |
| 68 | **Milestones** |  | 2022-02-04 → 2022-01-31 (-4d) | 193.12d? → 189.12d? |  |  |  |
| 73 | Milestone 5 | 2021-09-06 → 2021-08-31 A (-6d) | 2021-09-06 → 2021-08-31 A (-6d) | 0d? → 0d | 0% → 100% | 0d → none | resources none → Period 5 Training Costs; Period 5 Managerial Action Costs; Period 5 Unallocated Resource Costs |
| 74 | Milestone 6 | 2021-09-30 → 2021-09-24 (-6d) | 2021-09-30 → 2021-09-24 (-6d) |  |  |  |  |
| 75 | Milestone 7 | 2021-10-27 → 2021-10-21 (-6d) | 2021-10-27 → 2021-10-21 (-6d) |  |  |  |  |
| 76 | Milestone 8 | 2021-11-17 → 2021-11-11 (-6d) | 2021-11-17 → 2021-11-11 (-6d) |  |  |  |  |
| 77 | Milestone 9 | 2021-11-29 → 2021-11-23 (-6d) | 2021-11-29 → 2021-11-23 (-6d) |  |  |  |  |
| 78 | Milestone 10 | 2021-12-13 → 2021-12-07 (-6d) | 2021-12-13 → 2021-12-07 (-6d) |  |  |  |  |
| 79 | Milestone 11 | 2022-01-12 → 2022-01-06 (-6d) | 2022-01-12 → 2022-01-06 (-6d) |  |  |  |  |
| 80 | Milestone 12 | 2022-02-04 → 2022-01-31 (-4d) | 2022-02-04 → 2022-01-31 (-4d) |  |  |  |  |

## Version 6 (data date 2021-09-21, saved 2021-05-11, file phase6Result.mpp)

Note of the change: semi-final-final ver

Last finish 2022-01-31 → 2022-01-26 (-5d). Complete tasks 28 → 34.

Changed:

| ID | Task | Start | Finish | Duration | Complete | Total float | Other |
| --- | --- | --- | --- | --- | --- | --- | --- |
| 6 | **Procurement** | 2021-09-01 A | 2021-12-21 → 2021-12-16 (-5d) | 80d? → 76.88d? | 0% → 36% |  |  |
| 7 | Identify vendors | 2021-09-01 A | 2021-09-09 → 2021-09-07 A (-2d) | 7d? → 4.5d | 0% → 100% | 11d → none | resources none → George Olmos; Norman Micheals |
| 8 | Develop and Issue RFQ | 2021-09-01 → 2021-09-07 A (+6d) | 2021-09-08 → 2021-09-13 A (+5d) | 6d? → 3.88d | 0% → 100% | 12d → none | resources none → George Olmos; Norman Micheals |
| 9 | Issue sample (production equivalent) | 2021-09-27 → 2021-09-21 (-6d) | 2021-10-01 → 2021-09-28 (-3d) |  |  |  |  |
| 10 | Assess RFQ responses and select vendors | 2021-12-08 → 2021-12-02 (-6d) | 2021-12-21 → 2021-12-16 (-5d) |  |  |  |  |
| 11 | **Supplier Quality** | 2021-10-04 → 2021-09-28 (-6d) | 2021-12-07 → 2021-12-02 (-5d) |  |  |  |  |
| 12 | Perform supplier process capability | 2021-10-04 → 2021-09-28 (-6d) | 2021-10-21 → 2021-10-18 (-3d) |  |  |  |  |
| 13 | Approve sample parts | 2021-10-22 → 2021-10-18 (-4d) | 2021-11-02 → 2021-10-28 (-5d) |  |  |  |  |
| 14 | Qualify Supplier | 2021-11-24 → 2021-11-18 (-6d) | 2021-12-07 → 2021-12-02 (-5d) |  |  |  |  |
| 22 | **Engineering** |  | 2021-12-02 → 2021-11-29 (-3d) | 92.75d? → 89.62d? | 29% → 57% |  |  |
| 27 | Build functional model | 2021-09-01 A | 2021-09-24 → 2021-09-16 A (-8d) | 18d? → 11.25d | 0% → 100% | 0d → none | resources none → Tom Becher; Darryl Sandefur |
| 28 | Design validation activities | 2021-10-22 → 2021-10-18 (-4d) | 2021-10-28 → 2021-10-25 (-3d) |  |  |  |  |
| 29 | Validation design review | 2021-11-12 → 2021-11-08 (-4d) | 2021-11-17 → 2021-11-12 (-5d) |  |  |  |  |
| 30 | Approve model design | 2021-11-18 → 2021-11-12 (-6d) | 2021-11-23 → 2021-11-18 (-5d) |  |  |  |  |
| 31 | Design transfer activities | 2021-11-24 → 2021-11-18 (-6d) | 2021-12-02 → 2021-11-29 (-3d) |  |  |  |  |
| 32 | **Engineering Quality** | 2021-09-01 A | 2021-12-07 → 2021-12-02 (-5d) | 70d? → 66.88d? | 0% → 36% |  |  |
| 33 | Evaluate design specifications | 2021-09-01 A | 2021-09-14 → 2021-09-21 A (+7d) | 10d? → 14.88d | 0% → 100% | 8d → none | resources none → Jovanna Soto |
| 34 | Develop testing protocol for prototype | 2021-09-27 → 2021-09-21 (-6d) | 2021-10-06 → 2021-10-01 (-5d) |  |  |  |  |
| 35 | Test prototype | 2021-10-22 → 2021-10-18 (-4d) | 2021-11-04 → 2021-11-01 (-3d) |  |  |  |  |
| 36 | Evaluate results of tests and identify weaknesses | 2021-11-12 → 2021-11-08 (-4d) | 2021-11-19 → 2021-11-16 (-3d) |  |  |  |  |
| 37 | Product release meetings | 2021-12-03 → 2021-11-29 (-4d) | 2021-12-07 → 2021-12-02 (-5d) |  |  |  |  |
| 38 | **Manufacturing** | 2021-10-22 → 2021-10-18 (-4d) | 2022-01-26 → 2022-01-21 (-5d) |  |  |  |  |
| 39 | Process engineering plan | 2021-10-22 → 2021-10-18 (-4d) | 2021-11-11 → 2021-11-08 (-3d) |  |  |  |  |
| 40 | Develop production plan | 2021-11-24 → 2021-11-18 (-6d) | 2021-12-01 → 2021-11-26 (-5d) |  |  |  |  |
| 41 | Develop production control plan | 2021-12-08 → 2021-12-02 (-6d) | 2021-12-20 → 2021-12-15 (-5d) |  |  |  |  |
| 42 | Approve production parts | 2021-12-20 → 2021-12-15 (-5d) | 2021-12-27 → 2021-12-22 (-5d) |  |  |  |  |
| 43 | Contracting for deliveries | 2021-12-27 → 2021-12-22 (-5d) | 2022-01-06 → 2022-01-03 (-3d) |  |  |  |  |
| 44 | Submit production purchase order | 2022-01-06 → 2022-01-03 (-3d) | 2022-01-10 → 2022-01-05 (-5d) |  |  |  |  |
| 45 | Production pilot test | 2022-01-10 → 2022-01-05 (-5d) | 2022-01-17 → 2022-01-12 (-5d) |  |  |  |  |
| 46 | Debugging production system | 2022-01-17 → 2022-01-12 (-5d) | 2022-01-21 → 2022-01-18 (-3d) |  |  |  |  |
| 47 | Production release | 2022-01-21 → 2022-01-18 (-3d) | 2022-01-26 → 2022-01-21 (-5d) |  |  |  |  |
| 48 | **Commercialization** |  | 2022-01-31 → 2022-01-26 (-5d) | 189.12d? → 186d? |  |  |  |
| 53 | Show functional model at trade show | 2021-10-22 → 2021-10-18 (-4d) | 2021-10-26 → 2021-10-21 (-5d) |  |  |  |  |
| 54 | Product launch | 2022-01-26 → 2022-01-21 (-5d) | 2022-01-31 → 2022-01-26 (-5d) |  |  |  |  |
| 55 | **Project Management** |  | 2022-01-20 → 2022-01-17 (-3d) | 211.38d? → 208.25d? | 56% → 64% |  |  |
| 61 | Project Management Period 6 | 2021-09-01 A | 2021-09-13 → 2021-09-15 A (+2d) | 9d? → 10.25d | 0% → 100% | 9d → none | resources none → Yukio Ashida |
| 62 | Project Management Period 7 | 2021-09-27 → 2021-09-21 (-6d) | 2021-10-11 → 2021-10-06 (-5d) |  |  |  |  |
| 63 | Project Management Period 8 | 2021-10-22 → 2021-10-18 (-4d) | 2021-10-26 → 2021-10-21 (-5d) |  |  |  |  |
| 64 | Project Management Period 9 | 2021-11-12 → 2021-11-08 (-4d) | 2021-11-17 → 2021-11-12 (-5d) |  |  |  |  |
| 65 | Project Management Period 10 | 2021-11-24 → 2021-11-18 (-6d) | 2021-11-30 → 2021-11-25 (-5d) |  |  |  |  |
| 66 | Project Management Period 11 | 2021-12-08 → 2021-12-02 (-6d) | 2021-12-24 → 2021-12-21 (-3d) |  |  |  |  |
| 67 | Project Management Period 12 | 2022-01-06 → 2022-01-03 (-3d) | 2022-01-20 → 2022-01-17 (-3d) |  |  |  |  |
| 68 | **Milestones** |  | 2022-01-31 → 2022-01-26 (-5d) | 189.12d? → 186d? |  |  |  |
| 74 | Milestone 6 | 2021-09-24 → 2021-09-21 A (-3d) | 2021-09-24 → 2021-09-21 A (-3d) | 0d? → 0d | 0% → 100% | 0d → none | resources none → Period 6 Training Costs; Period 6 Managerial Action Costs; Period 6 Unallocated Resource Costs |
| 75 | Milestone 7 | 2021-10-21 → 2021-10-18 (-3d) | 2021-10-21 → 2021-10-18 (-3d) |  |  |  |  |
| 76 | Milestone 8 | 2021-11-11 → 2021-11-08 (-3d) | 2021-11-11 → 2021-11-08 (-3d) |  |  |  |  |
| 77 | Milestone 9 | 2021-11-23 → 2021-11-18 (-5d) | 2021-11-23 → 2021-11-18 (-5d) |  |  |  |  |
| 78 | Milestone 10 | 2021-12-07 → 2021-12-02 (-5d) | 2021-12-07 → 2021-12-02 (-5d) |  |  |  |  |
| 79 | Milestone 11 | 2022-01-06 → 2022-01-03 (-3d) | 2022-01-06 → 2022-01-03 (-3d) |  |  |  |  |
| 80 | Milestone 12 | 2022-01-31 → 2022-01-26 (-5d) | 2022-01-31 → 2022-01-26 (-5d) |  |  |  |  |

## Version 7 (data date 2021-12-21, saved 2021-05-19, file phase10Result.mpp)

Note of the change: semi-final-final ver

Last finish 2022-01-26 → 2022-02-11 (+16d). Complete tasks 34 → 57.

Changed:

| ID | Task | Start | Finish | Duration | Complete | Total float | Other |
| --- | --- | --- | --- | --- | --- | --- | --- |
| 6 | **Procurement** |  | 2021-12-16 → 2022-01-04 (+19d) | 76.88d? → 89.5d? | 36% → 61% |  |  |
| 9 | Issue sample (production equivalent) | 2021-09-21 A | 2021-09-28 → 2021-10-01 A (+3d) | 5d? → 7.5d | 0% → 100% | 0d → none | resources none → Jovanna Soto |
| 10 | Assess RFQ responses and select vendors | 2021-12-02 → 2021-12-21 (+19d) | 2021-12-16 → 2022-01-04 (+19d) |  |  |  |  |
| 11 | **Supplier Quality** | 2021-09-28 → 2021-10-01 A (+3d) | 2021-12-02 → 2021-12-21 A (+19d) | 47d? → 57.12d | 0% → 100% | 0d → none |  |
| 12 | Perform supplier process capability | 2021-09-28 → 2021-10-01 A (+3d) | 2021-10-18 → 2021-10-26 A (+8d) | 14d? → 17.12d | 0% → 100% | 0d → none | resources none → Tom Becher |
| 13 | Approve sample parts | 2021-10-18 → 2021-10-26 A (+8d) | 2021-10-28 → 2021-11-09 A (+12d) | 8d? → 10.12d | 0% → 100% | 7d → none | resources none → Jovanna Soto |
| 14 | Qualify Supplier | 2021-11-18 → 2021-12-03 A (+15d) | 2021-12-02 → 2021-12-21 A (+19d) | 10d? → 12.5d | 0% → 100% | 0d → none | resources none → Jovanna Soto |
| 22 | **Engineering** |  | 2021-11-29 → 2021-12-15 A (+16d) | 89.62d? → 101d | 57% → 100% | 0d → none |  |
| 28 | Design validation activities | 2021-10-18 → 2021-11-12 A (+25d) | 2021-10-25 → 2021-11-17 A (+23d) | 5d? → 3.06d | 0% → 100% | 10d → none | resources none → Darryl Sandefur; Jovanna Soto |
| 29 | Validation design review | 2021-11-08 → 2021-11-19 A (+11d) | 2021-11-12 → 2021-11-25 A (+13d) | 4d? → 4.75d | 0% → 100% | 0d → none | resources none → Tom Becher |
| 30 | Approve model design | 2021-11-12 → 2021-11-25 A (+13d) | 2021-11-18 → 2021-12-02 A (+14d) | 4d? → 5.12d | 0% → 100% | 0d → none | resources none → Darryl Sandefur |
| 31 | Design transfer activities | 2021-11-18 → 2021-12-03 A (+15d) | 2021-11-29 → 2021-12-15 A (+16d) | 7d? → 8.25d | 0% → 100% | 0d → none | resources none → Tom Becher |
| 32 | **Engineering Quality** |  | 2021-12-02 → 2021-12-20 A (+18d) | 66.88d? → 78.62d | 36% → 100% | 0d → none |  |
| 34 | Develop testing protocol for prototype | 2021-09-21 A | 2021-10-01 → 2021-10-06 A (+5d) | 8d? → 10.25d | 0% → 100% | 11d → none | resources none → Darryl Sandefur |
| 35 | Test prototype | 2021-10-18 → 2021-10-26 A (+8d) | 2021-11-01 → 2021-11-12 A (+11d) | 10d? → 12.75d | 0% → 100% | 5d → none | resources none → Darryl Sandefur |
| 36 | Evaluate results of tests and identify weaknesses | 2021-11-08 → 2021-11-19 A (+11d) | 2021-11-16 → 2021-11-30 A (+14d) | 6d? → 7.38d | 0% → 100% | 2d → none | resources none → Jovanna Soto |
| 37 | Product release meetings | 2021-11-29 → 2021-12-15 A (+16d) | 2021-12-02 → 2021-12-20 A (+18d) | 3d? → 3.38d | 0% → 100% | 0d → none | resources none → Yukio Ashida |
| 38 | **Manufacturing** | 2021-10-18 → 2021-10-26 A (+8d) | 2022-01-21 → 2022-02-08 (+18d) | 68.5d? → 75.5d? | 0% → 42% |  |  |
| 39 | Process engineering plan | 2021-10-18 → 2021-10-26 A (+8d) | 2021-11-08 → 2021-11-19 A (+11d) | 15d? → 17.62d | 0% → 100% | 0d → none | resources none → Tom Becher |
| 40 | Develop production plan | 2021-11-18 → 2021-12-03 A (+15d) | 2021-11-26 → 2021-12-15 A (+19d) | 6d? → 8.25d | 0% → 100% | 4d → none | resources none → Darryl Sandefur |
| 41 | Develop production control plan | 2021-12-02 → 2021-12-21 (+19d) | 2021-12-15 → 2021-12-31 (+16d) |  |  |  |  |
| 42 | Approve production parts | 2021-12-15 → 2022-01-03 (+19d) | 2021-12-22 → 2022-01-07 (+16d) |  |  |  |  |
| 43 | Contracting for deliveries | 2021-12-22 → 2022-01-10 (+19d) | 2022-01-03 → 2022-01-19 (+16d) |  |  |  |  |
| 44 | Submit production purchase order | 2022-01-03 → 2022-01-20 (+17d) | 2022-01-05 → 2022-01-21 (+16d) |  |  |  |  |
| 45 | Production pilot test | 2022-01-05 → 2022-01-24 (+19d) | 2022-01-12 → 2022-01-28 (+16d) |  |  |  |  |
| 46 | Debugging production system | 2022-01-12 → 2022-01-31 (+19d) | 2022-01-18 → 2022-02-03 (+16d) |  |  |  |  |
| 47 | Production release | 2022-01-18 → 2022-02-04 (+17d) | 2022-01-21 → 2022-02-08 (+18d) |  |  |  |  |
| 48 | **Commercialization** |  | 2022-01-26 → 2022-02-11 (+16d) | 186d? → 198.62d? | 92% → 96% |  |  |
| 53 | Show functional model at trade show | 2021-10-18 → 2021-10-29 A (+11d) | 2021-10-21 → 2021-11-04 A (+14d) | 3d? → 3.25d | 0% → 100% | 12d → none | resources none → Yukio Ashida |
| 54 | Product launch | 2022-01-21 → 2022-02-09 (+19d) | 2022-01-26 → 2022-02-11 (+16d) |  |  |  |  |
| 55 | **Project Management** |  | 2022-01-17 → 2022-02-02 (+16d) | 208.25d? → 220.88d? | 64% → 82% |  |  |
| 62 | Project Management Period 7 | 2021-09-21 A | 2021-10-06 → 2021-10-08 A (+2d) | 11d? → 12.5d | 0% → 100% | 8d → none | resources none → Yukio Ashida |
| 63 | Project Management Period 8 | 2021-10-18 → 2021-10-26 A (+8d) | 2021-10-21 → 2021-10-29 A (+8d) | 3d? → 3.38d | 0% → 100% | 12d → none | resources none → Yukio Ashida |
| 64 | Project Management Period 9 | 2021-11-08 → 2021-11-19 A (+11d) | 2021-11-12 → 2021-11-25 A (+13d) | 4d? → 4.62d | 0% → 100% | 4d → none | resources none → Yukio Ashida |
| 65 | Project Management Period 10 | 2021-11-18 → 2021-12-03 A (+15d) | 2021-11-25 → 2021-12-10 A (+15d) | 5d? → 5.62d | 0% → 100% | 5d → none | resources none → Yukio Ashida |
| 66 | Project Management Period 11 | 2021-12-02 → 2021-12-21 (+19d) | 2021-12-21 → 2022-01-07 (+17d) |  |  |  |  |
| 67 | Project Management Period 12 | 2022-01-03 → 2022-01-20 (+17d) | 2022-01-17 → 2022-02-02 (+16d) |  |  |  |  |
| 68 | **Milestones** |  | 2022-01-26 → 2022-02-11 (+16d) | 186d? → 198.62d? |  |  |  |
| 75 | Milestone 7 | 2021-10-18 → 2021-10-26 A (+8d) | 2021-10-18 → 2021-10-26 A (+8d) | 0d? → 0d | 0% → 100% | 0d → none | resources none → Period 7 Training Costs; Period 7 Managerial Action Costs; Period 7 Unallocated Resource Costs |
| 76 | Milestone 8 | 2021-11-08 → 2021-11-19 A (+11d) | 2021-11-08 → 2021-11-19 A (+11d) | 0d? → 0d | 0% → 100% | 0d → none | resources none → Period 8 Training Costs; Period 8 Managerial Action Costs; Period 8 Unallocated Resource Costs |
| 77 | Milestone 9 | 2021-11-18 → 2021-12-02 A (+14d) | 2021-11-18 → 2021-12-02 A (+14d) | 0d? → 0d | 0% → 100% | 0d → none | resources none → Period 9 Training Costs; Period 9 Managerial Action Costs; Period 9 Unallocated Resource Costs |
| 78 | Milestone 10 | 2021-12-02 → 2021-12-21 A (+19d) | 2021-12-02 → 2021-12-21 A (+19d) | 0d? → 0d | 0% → 100% | 0d → none | resources none → Period 10 Training Costs; Period 10 Managerial Action Costs; Period 10 Unallocated Resource Costs |
| 79 | Milestone 11 | 2022-01-03 → 2022-01-19 (+16d) | 2022-01-03 → 2022-01-19 (+16d) |  |  |  |  |
| 80 | Milestone 12 | 2022-01-26 → 2022-02-11 (+16d) | 2022-01-26 → 2022-02-11 (+16d) |  |  |  |  |

## Version 8 (data date 2022-02-07, saved 2021-05-25, file phase12Result.mpp)

Note of the change: semi-final-final ver

Last finish 2022-02-11 → 2022-02-07 (-4d). Complete tasks 57 → 70.

Changed:

| ID | Task | Start | Finish | Duration | Complete | Total float | Other |
| --- | --- | --- | --- | --- | --- | --- | --- |
| 6 | **Procurement** |  | 2022-01-04 → 2021-12-29 A (-6d) | 89.5d? → 85.56d | 61% → 100% | 3.5d → none |  |
| 10 | Assess RFQ responses and select vendors | 2021-12-21 A | 2022-01-04 → 2021-12-29 A (-6d) | 10d? → 6.06d | 0% → 100% | 3.5d → none | resources none → Jovanna Soto; Tom Becher |
| 38 | **Manufacturing** |  | 2022-02-08 → 2022-01-28 A (-11d) | 75.5d? → 68.5d | 42% → 100% | 0d → none |  |
| 41 | Develop production control plan | 2021-12-21 A | 2021-12-31 → 2022-01-05 A (+5d) | 8.5d? → 11.12d | 0% → 100% | 0d → none | resources none → Darryl Sandefur |
| 42 | Approve production parts | 2022-01-03 → 2022-01-05 A (+2d) | 2022-01-07 → 2022-01-10 A (+3d) | 5d? → 3.31d | 0% → 100% | 0d → none | resources none → Tom Becher; Darryl Sandefur |
| 43 | Contracting for deliveries | 2022-01-10 A | 2022-01-19 → 2022-01-18 A (-1d) | 8d? → 5.12d | 0% → 100% | 0d → none | resources none → Tom Becher; Darryl Sandefur |
| 44 | Submit production purchase order | 2022-01-20 → 2022-01-18 A (-2d) | 2022-01-21 → 2022-01-19 A (-2d) | 2d? → 1.31d | 0% → 100% | 0d → none | resources none → Tom Becher; Darryl Sandefur |
| 45 | Production pilot test | 2022-01-24 → 2022-01-19 A (-5d) | 2022-01-28 → 2022-01-24 A (-4d) | 5d? → 3.19d | 0% → 100% | 0d → none | resources none → Tom Becher; Darryl Sandefur |
| 46 | Debugging production system | 2022-01-31 → 2022-01-24 A (-7d) | 2022-02-03 → 2022-01-26 A (-8d) | 4d? → 2.44d | 0% → 100% | 0d → none | resources none → Tom Becher; Darryl Sandefur |
| 47 | Production release | 2022-02-04 → 2022-01-27 A (-8d) | 2022-02-08 → 2022-01-28 A (-11d) | 3d? → 2d | 0% → 100% | 0d → none | resources none → Tom Becher; Darryl Sandefur |
| 48 | **Commercialization** |  | 2022-02-11 → 2022-02-07 A (-4d) | 198.62d? → 194.44d | 96% → 100% | 0d → none |  |
| 54 | Product launch | 2022-02-09 → 2022-02-02 A (-7d) | 2022-02-11 → 2022-02-07 A (-4d) | 3d? → 3.38d | 0% → 100% | 0d → none | resources none → Yukio Ashida |
| 55 | **Project Management** |  | 2022-02-02 A | 220.88d? → 220.31d | 82% → 100% | 7d → none |  |
| 66 | Project Management Period 11 | 2021-12-21 A | 2022-01-07 → 2022-01-11 A (+4d) | 13d? → 14.75d | 0% → 100% | 8.5d → none | resources none → Yukio Ashida |
| 67 | Project Management Period 12 | 2022-01-20 → 2022-01-18 A (-2d) | 2022-02-02 A | 10d? → 11.38d | 0% → 100% | 7d → none | resources none → Yukio Ashida |
| 68 | **Milestones** |  | 2022-02-11 → 2022-02-07 A (-4d) | 198.62d? → 194.44d | 0% → 100% | 0d → none |  |
| 79 | Milestone 11 | 2022-01-19 → 2022-01-18 A (-1d) | 2022-01-19 → 2022-01-18 A (-1d) | 0d? → 0d | 0% → 100% | 0d → none | resources none → Period 11 Training Costs; Period 11 Managerial Action Costs; Period 11 Unallocated Resource Costs |
| 80 | Milestone 12 | 2022-02-11 → 2022-02-07 A (-4d) | 2022-02-11 → 2022-02-07 A (-4d) | 0d? → 0d | 0% → 100% | 0d → none | resources none → Period 12 Training Costs; Period 12 Managerial Action Costs; Period 12 Unallocated Resource Costs |
